# [PHOENIX] MMC4.6 Project Schedule_DRAFT_20090901

Schedule from MS Project, 2009-02-20 to 2010-09-21, costs in $, A marks actual dates.
HP

## Calendars

- Standard: Mon-Fri 08:00-12:00, 13:00-17:00; Sat-Sun off. Exceptions (off unless hours are given): 2009-09-27 08:00-12:00, 13:00-17:00 (Working Day), 2009-10-01 to 2009-10-08 (National Day), 2009-10-10 08:00-12:00, 13:00-17:00 (Working Day), 2009-12-12 to 2009-12-13 08:00-12:00, 13:00-17:00 (Ot dev team), 2010-01-01 to 2010-01-06 (New Year), 2010-02-12 to 2010-02-23 (Spring Festival), 2010-04-03 to 2010-04-05 (Tomb-sweeping Day), 2010-05-01 to 2010-05-05 (Labor Day), 2010-06-12 to 2010-06-13 08:00-12:00, 13:00-17:00 (Working Day), 2010-06-14 to 2010-06-16 (Dragon Boat Festival), 2010-09-19 08:00-12:00, 13:00-17:00 (Working Day).

## Resources

| Resource | Group | Rate |
| --- | --- | --- |
| Manager |  | 40 |
| HGBU |  | 40 |
| DONE |  | 40 |
| GDCC |  | 40 |
| Wilkiewicz Jarek | SA | 40 |
| Singh Anand | SA | 40 |
| Wang Xiu-Feng | SA | 40 |
| Peng Sheng-Kui | SCM | 40 |
| Gao Hang | QA | 40 |
| Chen Xiu-Qiong | QA | 40 |
| Li Ming | QA | 40 |
| Xu Yan | QA | 40 |
| Liu Qing-Bo | QA | 40 |
| Li Shuang | QA | 40 |
| Sun Lei | QA | 40 |
| Chen Guo-Na | QA | 40 |
| Wang Ji-Zhong | QA | 40 |
| Geng Cheng | QA | 40 |
| Wang Lei | QA | 40 |
| Chen Guo-Na | QA | 40 |
| Bai Xiu-Fen | QA | 40 |
| Han Yun | QA | 40 |
| Dong Ying-Ying | QA | 40 |
| DEV |  | 40 |
| Yan Bing-xia |  | 40 |
| He Jian-Liang | QA | 40 |
| Wang Rui | QA | 40 |
| Wu Li-Rong | QA | 40 |
| Liu Zheng-Hua | QA | 40 |
| Yang Jing | Automation QA | 40 |
| Device Certification Team |  | 40 |
| Zhang Peng-Fei |  | 40 |
| Li Bo | IOP | 40 |
| Lu Yue | IOP | 40 |
| Zhou Wen-Ping | IOP | 40 |
| Liu Yu | IOP | 40 |
| Zhao Wen-Xiu | IOP | 40 |
| Yu Qiu-Lian |  | 40 |
| Fu Xing-Qiong |  | 40 |
| Wan Li-Li |  | 40 |
| Xie ZhongSheng |  | 40 |
| Gong Zhi | IOP | 40 |
| Wang Jia | Server DEV | 40 |
| Zhu Zhen-Xing | Server DEV | 40 |
| Lei Juan | Server DEV | 40 |
| Liao Xue-Feng | Server DEV | 40 |
| Su Chun-Bo | Server DEV | 40 |
| Ma Zhi-Hui |  | 40 |
| Li Jia |  | 40 |
| Zhong Zi-Long | Server DEV | 40 |
| Meng De-Jun | Server DEV | 40 |
| Li Da-Peng |  | 40 |
| Chen Luo-Jie |  | 40 |
| Tang Wen-Hua |  | 40 |
| Chen Yong-Lin |  | 40 |
| Xue Jun |  | 40 |
| Liao Qin-Qin | Server DEV | 40 |
| Fan Bin | Server DEV | 40 |
| Zhang Zhi-Yu | Server DEV | 40 |
| Liu Zhi-Qiang | Server DEV | 40 |
| Hu Guang-Zhi | Server DEV | 40 |
| Zhong Zi-Long | Server DEV | 40 |
| DEV1 |  | 40 |
| DEV2 |  | 40 |
| Caslavka Jason | SA | 40 |
| Kapadekar Vivek | SA | 40 |
| PS |  | 40 |
| PM |  | 40 |
| Li Yi-Gang |  | 40 |
| Singh Anand |  | 40 |
| Dong Jin-Peng | Server DEV | 40 |
| Liao Qin-Qin | Server DEV | 40 |
| Fan Bin | Server DEV | 40 |
| Li Bin | Sever DEV | 40 |
| IOP Team |  | 40 |
| Yin Yu-Mei |  | 40 |
| Liu Ying | Automation | 40 |
| Bao Ning | Automation | 40 |
| Li He-Xiong | Automation | 40 |
| Lv Ping | Automation | 40 |
| TBD |  | 40 |
| McNeil Edward |  | 40 |
| Gong Zhi |  | 40 |
| Sun Lei |  | 40 |
| Wang Ji-Zhong |  | 40 |
| Chen Guo-Na |  | 40 |
| Monty |  | 40 |
| QA |  | 40 |
| UAT Team |  | 40 |
| Jennifer |  | 40 |
| Ming-Jiang Xu |  | 40 |
| Pubs TBD1 |  | 40 |
| Technical Publications |  | 40 |
| Mkting |  | 40 |
| Billie |  | 40 |
| Sunil |  | 40 |
| SE |  | 40 |
| Jones Jennifer |  | 40 |
| Xu Ming-Jiang |  | 40 |
| Li Rick |  | 40 |
| Saydag Aylin |  | 40 |
| Maha |  | 40 |
| Ming |  | 40 |
| Suresh |  | 40 |
| V Suresh |  | 40 |
| Iyer Mahalakshmi |  | 40 |
| Sean |  | 40 |
| Anand |  | 40 |
| IT |  | 40 |
| Ivy |  | 40 |
| Robern David |  | 40 |
| Rick |  | 40 |
| Zhihui |  | 40 |
| TBH |  | 40 |
| Li |  | 40 |
| He-Xiong |  | 40 |
| Liu |  | 40 |
| Ying |  | 40 |
| Bao |  | 40 |
| Ning |  | 40 |
| Yang |  | 40 |
| Jing |  | 40 |
| Julia |  | 40 |
| Combs Sean |  | 40 |
| Du Zeng-Qiang |  | 40 |
| Zhang PengFei |  | 40 |
| Yu Jian-Lan |  | 40 |
| Li Yue-Hong |  | 40 |
| DEV team |  | 40 |
| Tan Xin |  | 40 |
| Zhao WenXiu |  | 40 |
| DBA |  | 40 |
| Tech Pubs all |  | 40 |
| PS/SE |  | 40 |
| zhang |  | 40 |
| pengfei |  | 40 |
| Gongzhi |  | 40 |
| Zhao |  | 40 |
| Wenxiu |  | 40 |
| Fan |  | 40 |
| bing |  | 40 |
| bin |  | 40 |
| Zhang ZhiYu |  | 40 |
| Chunbo |  | 40 |
| Caocao |  | 40 |
| Xuefeng |  | 40 |
| Sophie |  | 40 |
| Zhiyu |  | 40 |
| Priscilla |  | 40 |
| Kino |  | 40 |
| Zhiqiang |  | 40 |
| Shanker |  | 40 |
| Guohua |  | 40 |
| Houli |  | 40 |
| Jianhui |  | 40 |
| All |  | 40 |
| Zhou WenPing |  | 40 |
| Sandy |  | 40 |
| Fu XingQiong |  | 40 |
| Shirley |  | 40 |
| Yu QiuLian |  | 40 |
| Zhao Wen-XiuZhao Wen-Xiu |  | 40 |
| Liu Qiong-Bo |  | 40 |
| Marketing |  | 40 |
| Shanker Oruganti Uma |  | 40 |

## Schedule

| ID | WBS | Task | Type | Duration | Start | Finish | Predecessors | Complete | Remaining | Total slack | Free slack | Constraint | Work | Actual work | Cost | Actual cost |
| --- | --- | --- | --- | --- | --- | --- | --- | --- | --- | --- | --- | --- | --- | --- | --- | --- |
| 1 | 1 | **Key Dedendencies** |  | 395d? | 2009-02-20 A | 2010-09-21 |  | 69% | 121.68d? | 0d |  |  | 64462.8h | 43237.5h | 2,486,349.93 | 1,666,780.33 |
| 2 | 1.1 | **HISTORY OF PHOENIX SCHEDULE CHANGE** |  | 234d | 2009-02-20 A | 2010-01-22 A |  | 100% |  |  |  |  |  |  |  |  |
| 3 | 1.1.1 | Project Start - Kick Off - Feb 25th, 2009 | milestone | 0d | 2009-02-20 A | 2009-02-20 A |  | 100% |  |  |  | start no earlier than 2009-02-20 |  |  |  |  |
| 4 | 1.1.2 | Initial POR - MMC4.6 Schedule - Mar 23rd, 2009 | milestone | 0d | 2009-03-23 A | 2009-03-23 A |  | 100% |  |  |  | start no earlier than 2009-03-23 |  |  |  |  |
| 5 | 1.1.3 | 1st Update - Distraction caused by MOTO Support - May 19th, 2009 | milestone | 0d | 2009-05-19 A | 2009-05-19 A |  | 100% |  |  |  | start no earlier than 2009-05-19 |  |  |  |  |
| 6 | 1.1.4 | 2nd Update - Iteration I Failure & Scope Change of adding newUI and Engineering Refactoring - Sep 22nd, 2009 | milestone | 0d | 2009-09-22 A | 2009-09-22 A |  | 100% |  |  |  | start no earlier than 2009-10-09 |  |  |  |  |
| 7 | 1.1.5 | 3rd Update - 3 Weeks' Delay of Iteration I - Dec 4th, 2009 | milestone | 0d | 2009-12-04 A | 2009-12-04 A |  | 100% |  |  |  | start no earlier than 2009-12-04 |  |  |  |  |
| 8 | 1.1.6 | 4th Update - Resources (5 Developers) Pulled Out By SmartDM Production DEV - Jan 22nd, 2010 | milestone | 0d | 2010-01-22 A | 2010-01-22 A |  | 100% |  |  |  | start no earlier than 2010-01-22 |  |  |  |  |
| 9 | 1.2 | **TODO** |  | 60d | 2010-07-01 | 2010-09-21 |  |  |  | 0d |  |  |  |  |  |  |
| 10 | 1.2.1 | **POST-GA Plan** |  | 60d | 2010-07-01 | 2010-09-21 |  |  |  | 0d |  |  |  |  |  |  |
| 11 | 1.2.1.1 | Oracle Migration Plan (10.X -> 11) |  | 60d | 2010-07-01 | 2010-09-21 | 24 |  |  | 0d |  |  |  |  |  |  |
| 12 | 1.2.1.2 | UAT Plan Details |  | 60d | 2010-07-01 | 2010-09-21 | 24 |  |  | 0d |  |  |  |  |  |  |
| 13 | 1.3 | Outstanding Tasks - A pool to hold tasks identified but is still under planning | milestone | 0d | 2009-07-01 | 2009-07-01 |  |  |  | 302d |  |  |  |  |  |  |
| 14 | 1.4 | **Key Milestones** |  | 138d | 2009-11-27 A | 2010-06-30 |  |  | 138d | 60d |  |  |  |  |  |  |
| 15 | 1.4.1 | Iteration I Release | milestone | 0d | 2009-11-27 | 2009-11-27 | 534 |  |  | 198d |  |  |  |  |  |  |
| 16 | 1.4.2 | **Iteration II Release** |  | 18d | 2009-12-11 A | 2010-01-08 A |  | 100% |  |  |  |  |  |  |  |  |
| 17 | 1.4.2.1 | Sprint I | milestone | 0d | 2009-12-11 A | 2009-12-11 A | 787 | 100% |  |  |  |  |  |  |  |  |
| 18 | 1.4.2.2 | Sprint II | milestone | 0d | 2009-12-21 A | 2009-12-21 A | 843 | 100% |  |  |  |  |  |  |  |  |
| 19 | 1.4.2.3 | Sprint III | milestone | 0d | 2010-01-08 A | 2010-01-08 A | 921 | 100% |  |  |  |  |  |  |  |  |
| 20 | 1.4.2.4 | Iteration II | milestone | 0d | 2010-01-08 A | 2010-01-08 A | 785 | 100% |  |  |  |  |  |  |  |  |
| 21 | 1.4.3 | Feature Complete (S1:0???, S2:40???, S3:140??? - Proposed by DEV, not reviewed) | milestone | 0d | 2010-01-08 | 2010-01-08 | 1032 |  |  | 157d | 0d |  |  |  |  |  |
| 22 | 1.4.4 | Alpha (S1:0, S2:10, S3:100) | milestone | 0d | 2010-03-31 | 2010-03-31 | 1370 |  |  | 120d |  |  |  |  |  |  |
| 23 | 1.4.5 | Beta (S1:0, S2:0, S3:50)(Usability issues should be less than 15% of the S3 bugs) | milestone | 0d | 2010-05-14 | 2010-05-14 | 1478 |  |  | 92d |  |  |  |  |  |  |
| 24 | 1.4.6 | GA (S1:0, S2:0, S3:30)(Usability issues should be less than 15% of the S3 bugs) | milestone | 0d | 2010-06-30 | 2010-06-30 | 1562 |  |  | 0d |  |  |  |  |  |  |

| ID | WBS | Task | Type | Duration | Start | Finish | Predecessors | Complete | Remaining | Total slack | Free slack | Constraint | Resources | Work | Actual work | Cost | Actual cost |
| --- | --- | --- | --- | --- | --- | --- | --- | --- | --- | --- | --- | --- | --- | --- | --- | --- | --- |
| 25 | 1.5 | **Dependencies** |  | 201d? | 2009-08-27 A | 2010-06-30 |  | 14% | 172.29d? | 60d |  |  |  | 80h | 80h | 3,200 | 3,200 |
| 26 | 1.5.1 | **IOP Device List** |  | 67d | 2009-12-16 | 2010-04-07 |  |  |  | 117d |  |  |  |  |  |  |  |
| 27 | 1.5.1.1 | Initial Device List | milestone | 0d | 2009-12-16 | 2009-12-16 |  |  |  | 184d |  | start no earlier than 2009-12-16 | McNeil Edward |  |  |  |  |
| 28 | 1.5.1.2 | First Update of the IOP Device List | milestone | 0d | 2010-02-01 | 2010-02-01 |  |  |  | 155d |  | start no earlier than 2010-02-01 | McNeil Edward |  |  |  |  |
| 29 | 1.5.1.3 | Second Update of the IOP Device List | milestone | 0d | 2010-03-04 | 2010-03-04 |  |  |  | 140d |  | start no earlier than 2010-03-04 | McNeil Edward |  |  |  |  |
| 30 | 1.5.1.4 | Third Update of the IOP Device List | milestone | 0d | 2010-04-07 | 2010-04-07 |  |  |  | 117d |  | start no earlier than 2010-04-07 | McNeil Edward |  |  |  |  |
| 31 | 1.5.2 | **20% Confidence Up(From 70% to 90%) if the two actions done on time** |  | 20d | 2009-09-01 A | 2009-09-28 A |  | 100% |  |  |  |  |  | 80h | 80h | 3,200 | 3,200 |
| 32 | 1.5.2.1 | Business Agreement with GDCC |  | 10d | 2009-09-01 A | 2009-09-14 A |  | 100% |  |  |  | start no earlier than 2009-09-01 | Wilkiewicz Jarek | 80h | 80h | 3,200 | 3,200 |
| 33 | 1.5.2.2 | Lock down Mockup UIs | milestone | 0d | 2009-09-28 A | 2009-09-28 A |  | 100% |  |  |  | start no earlier than 2009-09-30 | Caslavka Jason |  |  |  |  |
| 34 | 1.5.3 | **FRD Sign Off** |  | 13d | 2009-09-14 A | 2009-09-30 A |  | 100% |  |  |  |  |  |  |  |  |  |
| 35 | 1.5.3.1 | **FRD** |  | 13d | 2009-09-14 A | 2009-09-30 A |  | 100% |  |  |  |  |  |  |  |  |  |
| 36 | 1.5.3.1.1 | FRD Sign Off for Iteration I | milestone | 0d | 2009-09-14 A | 2009-09-14 A |  | 100% |  |  |  | start no earlier than 2009-09-14 | Kapadekar Vivek |  |  |  |  |
| 37 | 1.5.3.1.2 | FRD Sign Off for Iteration II | milestone | 0d | 2009-09-30 A | 2009-09-30 A |  | 100% |  |  |  | start no earlier than 2009-09-30 | Kapadekar Vivek |  |  |  |  |
| 38 | 1.5.3.2 | **Mockup UI** |  | 1d | 2009-09-24 A | 2009-09-25 A |  | 100% |  |  |  |  |  |  |  |  |  |
| 39 | 1.5.3.2.1 | Lock down Iteration I Mockup UIs | milestone | 0d | 2009-09-24 A | 2009-09-24 A |  | 100% |  |  |  | start no earlier than 2009-09-24 | Caslavka Jason |  |  |  |  |
| 40 | 1.5.3.2.2 | Lock down Iteration II Mockup UIs | milestone | 0d | 2009-09-25 A | 2009-09-25 A | 39 | 100% |  |  |  | start no earlier than 2009-09-25 | Caslavka Jason |  |  |  |  |
| 41 | 1.5.4 | **Check Points** |  | 13d | 2009-08-27 | 2009-09-14 |  |  |  | 248d |  |  |  |  |  |  |  |
| 42 | 1.5.4.1 | IOP Check Point | milestone | 0d | 2009-08-31 | 2009-08-31 |  |  |  | 259d |  | start no earlier than 2009-08-31 |  |  |  |  |  |
| 43 | 1.5.4.2 | MMC4.5 Bug Fixing Check Point | milestone | 0d | 2009-08-27 | 2009-08-27 |  |  |  | 261d |  | start no earlier than 2009-08-27 |  |  |  |  |  |
| 44 | 1.5.4.3 | IOP Training | milestone | 0d | 2009-09-14 | 2009-09-14 | 32 |  |  | 245.84d | 1d |  |  |  |  |  |  |
| 45 | 1.5.5 | **Assumptions** |  | 188d? | 2009-09-14 A | 2010-06-30 | 32 |  | 188d? | 60d |  |  |  |  |  |  |  |
| 46 | 1.5.5.1 | Resource Assumption: 5.5 Dev 2 QA | milestone | 0d | 2009-09-14 | 2009-09-14 | 32 |  |  | 248d |  |  |  |  |  |  |  |
| 47 | 1.5.5.2 | **DEV Resources** |  | 54d | 2009-09-14 A | 2009-12-04 A | 32 | 100% |  |  |  |  |  |  |  |  |  |
| 48 | 1.5.5.2.1 | 5 GDCC New UI dev engineers are extended till GA | milestone | 0d | 2009-09-14 A | 2009-09-14 A | 32 | 100% |  |  |  |  |  |  |  |  |  |
| 49 | 1.5.5.2.2 | 5 GDCC New UI dev engineers travel to BDC till GA | milestone | 0d | 2009-09-14 A | 2009-09-14 A | 32 | 100% |  |  |  |  |  |  |  |  |  |
| 50 | 1.5.5.2.3 | 2 approved GDCC resources onboard by Oct 9th | milestone | 0d | 2009-09-30 A | 2009-09-30 A |  | 100% |  |  |  | start no earlier than 2009-09-30 |  |  |  |  |  |
| 51 | 1.5.5.2.4 | Monty is fully assigned to Phoenix until project end | milestone | 0d | 2009-09-14 A | 2009-09-14 A | 32 | 100% |  |  |  |  |  |  |  |  |  |
| 52 | 1.5.5.2.5 | 2 Flex developers on board by Oct 9th | milestone | 0d | 2009-11-27 A | 2009-11-27 A |  | 100% |  |  |  | start no earlier than 2009-11-27 |  |  |  |  |  |
| 53 | 1.5.5.2.6 | Resource assigned to 4.5.3 only assigned to Ericsson ER related tasks | milestone | 0d | 2009-12-04 A | 2009-12-04 A |  | 100% |  |  |  | start no earlier than 2009-12-04 |  |  |  |  |  |

Notes:
- 26: Eddie's Christmas Holiday: / Dec 18th through Jan 4th.

| ID | WBS | Task | Type | Duration | Start | Finish | Predecessors | Complete | Remaining | Baseline start | Baseline finish | Baseline duration | Total slack | Free slack | Constraint | Resources | Work | Actual work | Cost | Actual cost |
| --- | --- | --- | --- | --- | --- | --- | --- | --- | --- | --- | --- | --- | --- | --- | --- | --- | --- | --- | --- | --- |
| 54 | 1.5.5.3 | **QA Resources** |  | 173d? | 2009-10-12 | 2010-06-30 |  |  |  |  |  |  | 60d |  |  |  |  |  |  |  |
| 55 | 1.5.5.3.1 | One CU QA shift to Phoenix after 12/14/2009 (Dong Yingying) | milestone | 0d | 2009-12-14 | 2009-12-14 |  |  |  |  |  |  | 186d |  | start no earlier than 2009-12-14 |  |  |  |  |  |
| 56 | 1.5.5.3.2 | Kate & Erica will be re-assigned to MMC by Oct 12th after supporting MMC4.5.3 | milestone | 0d | 2009-10-12 | 2009-10-12 |  |  |  |  |  |  | 233d |  | start no earlier than 2009-10-12 |  |  |  |  |  |
| 57 | 1.5.5.3.3 | 11 QA Engineers need extend till GA (Li Yue-Hong,Chen Xiu-Qiong,Li Shuang,Sun Lei,Liu Qing-Bo,Chen Guo-Na,Geng Cheng,Yu Jian-Lan,Dong Ying-Ying,Wu Li-Rong,Gao Hang) |  | 60d? | 2010-04-01 | 2010-06-30 |  |  |  |  |  |  | 60d |  | start no earlier than 2010-04-01 |  |  |  |  |  |
| 58 | 1.5.5.4 | **IOP Resources** |  | 0d | 2009-09-14 A | 2009-09-14 A |  | 100% |  |  |  |  |  |  |  |  |  |  |  |  |
| 59 | 1.5.5.4.1 | 4 IOP Dev Engineers [50%] are extended till GA | milestone | 0d | 2009-09-14 A | 2009-09-14 A |  | 100% |  |  |  |  |  |  |  |  |  |  |  |  |
| 60 | 1.5.5.4.2 | 4 IOP QA Engineers [50%] are extended till GA | milestone | 0d | 2009-09-14 A | 2009-09-14 A |  | 100% |  |  |  |  |  |  |  |  |  |  |  |  |
| 61 | 1.6 | **DOCUMENTATION & TRAINING & PROJECT MANAGEMENT** |  | 182d? | 2009-07-13 A | 2010-04-13 |  | 71% | 53.17d? |  |  |  | 112d |  |  |  | 3949.04h | 2387.09h | 157,961.6 | 95,483.6 |
| 62 | 1.6.1 | **Documentation Tasks** |  | 182d | 2009-07-13 A | 2010-04-13 |  | 68% | 57.36d |  |  |  | 112d |  |  |  | 2989.04h | 1707.09h | 119,561.6 | 68,283.6 |
| 63 | 1.6.1.1 | **Documentation Planning** |  | 34.73d | 2009-11-03 A | 2009-12-17 A |  | 100% |  |  |  |  |  |  |  |  | 148.8h | 148.8h | 5,952 | 5,952 |
| 64 | 1.6.1.1.1 | Develop Information Plan |  | 3d | 2009-11-03 A | 2009-11-05 A |  | 100% |  |  |  |  |  |  | start no earlier than 2009-03-26 | Jones Jennifer | 24h | 24h | 960 | 960 |
| 65 | 1.6.1.1.2 | Develop document outlines |  | 14.6d | 2009-12-01 A | 2009-12-17 A |  | 100% |  |  |  |  |  |  | start no earlier than 2009-03-18 | Jones Jennifer [86.3%] | 100.8h | 100.8h | 4,032 | 4,032 |
| 66 | 1.6.1.1.3 | Finalize Information Plans and Materials |  | 2d | 2009-12-01 A | 2009-12-02 A |  | 100% |  |  |  |  |  |  |  | Jones Jennifer | 16h | 16h | 640 | 640 |
| 67 | 1.6.1.1.4 | Finalize list of developer/qa co-owners for each document |  | 1d | 2009-12-01 A | 2009-12-01 A |  | 100% |  |  |  |  |  |  |  | Jones Jennifer | 8h | 8h | 320 | 320 |
| 68 | 1.6.1.2 | **Preparation Tasks** |  | 30d | 2009-07-13 A | 2009-08-21 A |  | 100% |  |  |  |  |  |  |  |  | 120h | 120h | 4,800 | 4,800 |
| 69 | 1.6.1.2.1 | Get HW/SW to setup MMC environment |  | 5d | 2009-07-13 A | 2009-07-24 A |  | 100% |  |  |  |  |  |  | start no earlier than 2009-04-20 | Xu Ming-Jiang [50%] | 20h | 20h | 800 | 800 |
| 70 | 1.6.1.2.2 | Setup/Install MMC environment |  | 5d | 2009-07-27 A | 2009-07-31 A | 69 | 100% |  |  |  |  |  |  | start no later than 2009-12-01 | Xu Ming-Jiang [50%] | 20h | 20h | 800 | 800 |
| 71 | 1.6.1.2.3 | Train new writers |  | 20d | 2009-07-13 A | 2009-08-21 A | 70 | 100% |  |  |  |  |  |  | start no later than 2009-12-01 | Jones Jennifer [50%] | 80h | 80h | 3,200 | 3,200 |
| 72 | 1.6.1.3 | **Documentation Development** |  | 116d | 2009-10-19 A | 2010-04-13 |  | 58% | 48.44d |  |  |  | 112d |  |  |  | 1728h | 974.05h | 69,120 | 38,962 |
| 73 | 1.3.1.1 | **User Console documents** |  | 62d | 2009-10-19 A | 2010-01-14 |  | 76% | 15.06d | 2009-03-31 | 2009-03-31 | 0d | 166d |  |  |  | 568h | 459.2h | 22,720 | 18,368 |
| 74 | 1.6.1.3.1.1 | MMC Console common topics-Iteration I |  | 15d | 2009-10-19 A | 2009-11-06 A |  | 100% |  |  |  |  |  |  | start no earlier than 2009-10-19 | Jones Jennifer; Iyer Mahalakshmi | 240h | 240h | 9,600 | 9,600 |
| 75 | 1.6.1.3.1.2 | MMC Console common topics - Iteration II a-b |  | 13d | 2009-11-11 A | 2009-11-27 A |  | 100% |  |  |  |  |  |  | start no earlier than 2009-11-11 | Iyer Mahalakshmi | 104h | 104h | 4,160 | 4,160 |
| 76 | 1.6.1.3.1.3 | MMC Console topics - Iteration II replanned |  | 16d | 2009-12-01 A | 2009-12-18 |  | 90% | 1.6d |  |  |  | 173d | 0d | start no earlier than 2009-12-01 | Iyer Mahalakshmi | 128h | 115.2h | 5,120 | 4,608 |
| 77 | 1.6.1.3.1.4 | MMC Console - finalize after Feature Complete |  | 4d | 2010-01-11 | 2010-01-14 |  |  |  |  |  |  | 166d |  | start no earlier than 2010-01-11 | Iyer Mahalakshmi | 32h |  | 1,280 |  |
| 78 | 1.6.1.3.1.5 | Help Files |  | 8d | 2009-12-21 | 2009-12-30 | 76 |  |  |  |  |  | 173d |  |  | Iyer Mahalakshmi | 64h |  | 2,560 |  |

| ID | WBS | Task | Duration | Start | Finish | Predecessors | Complete | Remaining | Baseline start | Baseline finish | Baseline duration | Total slack | Free slack | Constraint | Resources | Work | Actual work | Cost | Actual cost |
| --- | --- | --- | --- | --- | --- | --- | --- | --- | --- | --- | --- | --- | --- | --- | --- | --- | --- | --- | --- |
| 79 | 1.6.1.3.2 | **Agent documents** | 39d | 2009-11-18 A | 2010-01-13 |  | 67% | 13d | 2009-03-31 | 2009-03-31 | 0d | 158d |  |  |  | 72h | 48h | 2,880 | 1,920 |
| 80 | 1.6.1.3.2.1 | Management Agent Device Guide | 3d | 2009-11-18 A | 2009-11-20 A |  | 100% |  |  |  |  |  |  | finish no earlier than 2009-11-20 | Xu Ming-Jiang | 24h | 24h | 960 | 960 |
| 81 | 1.6.1.3.2.2 | Management Agent Tool Guide | 3d | 2009-11-18 A | 2009-11-20 A |  | 100% |  |  |  |  |  |  | finish no earlier than 2009-11-20 | Xu Ming-Jiang | 24h | 24h | 960 | 960 |
| 82 | 1.6.1.3.2.3 | Finalize after Iteration II feature complete | 3d | 2010-01-11 | 2010-01-13 | 21 |  |  |  |  |  | 158d | 1d | start no earlier than 2010-01-11 | Tech Pubs all | 24h |  | 960 |  |
| 83 | 1.3.1.2 | **Installation and Configuration documents** | 37d | 2009-11-23 A | 2010-01-14 |  | 63% | 13.88d | 2009-03-31 | 2009-03-31 | 0d | 166d |  |  | Xu Ming-Jiang; V Suresh | 832h | 376.45h | 33,280 | 15,058 |
| 84 | 1.6.1.3.3.1 | Quick Start Guide (new) | 5d | 2009-11-23 A | 2009-11-27 |  | 75% | 1.25d |  |  |  | 198d |  | finish no earlier than 2009-11-27 | Xu Ming-Jiang | 40h | 30h | 1,600 | 1,200 |
| 85 | 1.6.1.3.3.2 | Upgrade Guide (new) | 5d | 2009-11-23 A | 2009-11-27 A |  | 100% |  |  |  |  |  |  | finish no earlier than 2009-11-27 | V Suresh | 40h | 40h | 1,600 | 1,600 |
| 86 | 1.6.1.1 | Installation Guide | 5d | 2009-11-23 A | 2009-11-27 A |  | 100% |  | 2009-03-31 | 2009-03-31 | 0d |  |  | finish no earlier than 2009-11-27 | V Suresh | 40h | 40h | 1,600 | 1,600 |
| 87 | 1.6.1.3.3.4 | Configuration Guide | 5d | 2009-12-14 A | 2009-12-18 |  | 50% | 2.5d |  |  |  | 181d |  | finish no earlier than 2009-12-18 | Xu Ming-Jiang | 40h | 20h | 1,600 | 800 |
| 88 | 1.6.1.3.3.5 | Sizing Reference | 5d | 2009-12-14 | 2009-12-18 |  |  |  |  |  |  | 181d |  | finish no earlier than 2009-12-18 | Xu Ming-Jiang | 40h |  | 1,600 |  |
| 89 | 1.6.1.3.3.6 | SNMP Reference Guide | 5d | 2009-12-14 A | 2009-12-18 A |  | 100% |  |  |  |  |  |  | finish no earlier than 2009-12-18 | V Suresh | 40h | 40h | 1,600 | 1,600 |
| 90 | 1.6.1.3.3.7 | M:Finalize after Iteration II feature complete | 4d | 2010-01-11 | 2010-01-14 | 21 |  |  |  |  |  | 157d | 0d | finish no earlier than 2010-01-14 |  |  |  |  |  |
| 91 | 1.6.1.3.4 | **Web Services/Developer documents** | 36d | 2009-11-23 A | 2010-01-13 |  | 56% | 16d |  |  |  | 167d |  |  |  | 80h | 80h | 3,200 | 3,200 |
| 92 | 1.6.1.3.4.1 | WS API Developer Guide (new) | 5d | 2009-11-23 A | 2009-11-27 A |  | 100% |  |  |  |  |  |  | finish no earlier than 2009-11-27 | V Suresh | 40h | 40h | 1,600 | 1,600 |
| 93 | 1.6.1.3.4.2 | Workflow Scripting Reference | 5d | 2009-11-23 A | 2009-11-27 A |  | 100% |  |  |  |  |  |  | finish no earlier than 2009-11-27 | V Suresh | 40h | 40h | 1,600 | 1,600 |
| 94 | 1.6.1.3.4.3 | WS API -- Iteration II | 5d | 2009-12-09 | 2009-12-13 |  |  |  |  |  |  | 186d |  | start no earlier than 2009-12-09 |  |  |  |  |  |
| 95 | 1.6.1.3.4.4 | Finalize after Iteration II feature complete | 3d | 2010-01-11 | 2010-01-13 | 21 |  |  |  |  |  | 158d | 1d |  |  |  |  |  |  |
| 96 | 1.6.1.3.5 | **Release documents** | 73d | 2009-12-15 A | 2010-04-13 |  | 6% | 68.69d |  |  |  | 112d |  |  |  | 176h | 10.4h | 7,040 | 416 |
| 97 | 1.6.1.3.5.1 | Release Notes alpha | 3d | 2010-02-08 | 2010-02-10 |  |  |  |  |  |  | 147d |  | start no earlier than 2010-02-08 | V Suresh | 24h |  | 960 |  |
| 98 | 1.6.1.3.5.2 | Release Notes beta | 3d | 2010-03-11 | 2010-03-15 |  |  |  |  |  |  | 132d |  | start no earlier than 2010-03-11 | V Suresh | 24h |  | 960 |  |
| 99 | 1.6.1.3.5.3 | Release Notes GA | 3d | 2010-04-09 | 2010-04-13 |  |  |  |  |  |  | 112d |  | start no earlier than 2010-04-09 | V Suresh | 24h |  | 960 |  |
| 100 | 1.6.1.3.5.4 | Services Training Guide (new) | 13d | 2009-12-15 A | 2010-01-08 |  | 10% | 11.7d |  |  |  | 170.5d |  | start no earlier than 2009-12-15 | V Suresh | 104h | 10.4h | 4,160 | 416 |
| 101 | 1.6.1.4 | **Document Review Phases** | 82d | 2009-11-02 A | 2010-03-09 |  | 55% | 37.03d |  |  |  | 136d |  |  |  | 952h | 424h | 38,080 | 16,960 |
| 102 | 1.6.1.4.1 | **Iteration I - limited/internal** | 8d | 2009-11-02 A | 2009-11-11 A |  | 100% |  |  |  |  |  |  |  |  | 176h | 176h | 7,040 | 7,040 |
| 103 | 1.6.1.4.1.1 | Reviews | 5d | 2009-11-02 A | 2009-11-06 A |  | 100% |  |  |  |  |  |  | start no earlier than 2009-11-02 | DEV; QA | 80h | 80h | 3,200 | 3,200 |
| 104 | 1.6.1.4.1.2 | Revisions | 3d | 2009-11-09 A | 2009-11-11 A | 103 | 100% |  |  |  |  |  |  |  | Xu Ming-Jiang; V Suresh; Iyer Mahalakshmi; Jones Jennifer | 96h | 96h | 3,840 | 3,840 |

| ID | WBS | Task | Type | Duration | Start | Finish | Predecessors | Complete | Remaining | Baseline start | Baseline finish | Baseline duration | Total slack | Free slack | Constraint | Resources | Work | Actual work | Cost | Baseline cost | Actual cost |
| --- | --- | --- | --- | --- | --- | --- | --- | --- | --- | --- | --- | --- | --- | --- | --- | --- | --- | --- | --- | --- | --- |
| 105 | 1.6.1.4.2 | **Iteration II - limited/internal** |  | 9d | 2009-12-21 A | 2009-12-31 A |  | 100% |  |  |  |  |  |  |  |  | 248h | 248h | 9,920 |  | 9,920 |
| 106 | 1.6.1.4.2.1 | Reviews |  | 5d | 2009-12-21 A | 2009-12-25 A |  | 100% |  |  |  |  |  |  | start no earlier than 2009-12-21 | DEV; QA; PS/SE | 120h | 120h | 4,800 |  | 4,800 |
| 107 | 1.6.1.4.2.2 | Revisions |  | 4d | 2009-12-28 A | 2009-12-31 A | 106 | 100% |  |  |  |  |  |  |  | Xu Ming-Jiang; V Suresh; Iyer Mahalakshmi; Jones Jennifer | 128h | 128h | 5,120 |  | 5,120 |
| 108 | 1.6.1.4.3 | **Pre-Alpha - full** |  | 9d | 2010-01-15 | 2010-01-27 |  |  |  |  |  |  | 157d |  |  |  | 328h |  | 13,120 |  |  |
| 109 | 1.6.1.4.3.1 | Reviews |  | 5d | 2010-01-15 | 2010-01-21 | 90, 95, 82 |  |  |  |  |  | 157d | 0d | start no earlier than 2010-01-15 | McNeil Edward; DEV; QA; Robern David; SE | 200h |  | 8,000 |  |  |
| 110 | 1.6.1.4.3.2 | Revisions |  | 4d | 2010-01-22 | 2010-01-27 | 109 |  |  |  |  |  | 157d |  |  | Xu Ming-Jiang; V Suresh; Iyer Mahalakshmi; Jones Jennifer | 128h |  | 5,120 |  |  |
| 111 | 1.6.1.4.4 | **Pre-Beta - full** |  | 6d | 2010-03-02 | 2010-03-09 |  |  |  |  |  |  | 136d |  |  |  | 200h |  | 8,000 |  |  |
| 112 | 1.6.1.4.4.1 | Reviews and Revisions |  | 5d | 2010-03-02 | 2010-03-08 |  |  |  |  |  |  | 137d |  | finish no earlier than 2010-03-08 | McNeil Edward; DEV; QA; PS; SE | 200h |  | 8,000 |  |  |
| 113 | 1.6.1.4.4.2 | Signoff | milestone | 0d | 2010-03-09 | 2010-03-09 |  |  |  |  |  |  | 136d |  | finish no earlier than 2010-03-09 | McNeil Edward; DEV; QA; PS; SE |  |  |  |  |  |
| 114 | 1.6.1.5 | **Other Tasks** |  | 58d | 2009-10-13 A | 2009-12-29 A |  | 100% |  |  |  |  |  |  |  |  | 40.24h | 40.24h | 1,609.6 |  | 1,609.6 |
| 115 | 1.6.1.5.1 | Property Files Review Iteration I |  | 3d | 2009-10-13 A | 2009-10-15 A |  | 100% |  | 2009-03-31 | 2009-03-31 | 1d? |  |  | start no earlier than 2009-10-13 | Jones Jennifer [1%] | 0.24h | 0.24h | 9.6 |  | 9.6 |
| 116 | 1.6.1.5.2 | Properties Files Review Iteration II |  | 3d | 2009-11-09 A | 2009-11-11 A |  | 100% |  |  |  |  |  |  | finish no earlier than 2009-11-11 | Jones Jennifer | 24h | 24h | 960 |  | 960 |
| 117 | 1.6.1.5.3 | Properties Files Review Interation II Replanned |  | 2d | 2009-12-28 A | 2009-12-29 A |  | 100% |  |  |  |  |  |  | start no earlier than 2009-12-28 | Iyer Mahalakshmi | 16h | 16h | 640 |  | 640 |
| 118 | 1.6.2 | **SCM Planning** |  | 111d? | 2009-10-10 A | 2010-03-26 |  | 83% | 18.5d? |  |  |  | 123d |  |  |  | 960h | 680h | 38,400 |  | 27,200 |
| 119 | 1.6.2.1 | **FlexUI CI** |  | 13d | 2009-10-10 A | 2009-10-27 A |  | 100% |  | 2009-03-02 | 2009-05-27 | 61d? |  |  |  |  | 160h | 160h | 6,400 | 71,680 | 6,400 |
| 120 | 1.6.2.1.1 | SmartView integration process |  | 5d | 2009-10-10 A | 2009-10-15 A |  | 100% |  | 2009-03-16 | 2009-03-20 | 5d? |  |  | start no earlier than 2009-10-10 | Peng Sheng-Kui | 40h | 40h | 1,600 | 1,600 | 1,600 |
| 121 | 1.6.2.1.2 | integration process review |  | 3d | 2009-10-15 A | 2009-10-19 A |  | 100% |  |  |  |  |  |  | start no earlier than 2009-10-15 | Singh Anand; Wang Xiu-Feng; Li Bin | 72h | 72h | 2,880 |  | 2,880 |
| 122 | 1.6.2.1.3 | FlexUI daily-build |  | 2d | 2009-10-20 A | 2009-10-21 A | 121 | 100% |  | 2009-03-16 | 2009-03-18 | 3d |  |  |  | Peng Sheng-Kui | 16h | 16h | 640 | 960 | 640 |
| 123 | 1.6.2.1.4 | Framework integration |  | 4d | 2009-10-22 A | 2009-10-27 A | 122 | 100% |  | 2009-05-05 | 2009-05-27 | 17d |  |  |  | Peng Sheng-Kui | 32h | 32h | 1,280 | 21,760 | 1,280 |
| 124 | 1.6.2.2 | **BVT Framework** |  | 27d | 2009-10-28 A | 2009-12-03 A |  | 100% |  | 2009-03-02 | 2009-05-27 | 61d? |  |  |  |  | 208h | 208h | 8,320 | 71,680 | 8,320 |
| 125 | 1.6.2.2.1 | BVT-2'sec IT infra |  | 6d | 2009-10-28 A | 2009-11-04 A |  | 100% |  | 2009-03-16 | 2009-03-20 | 5d? |  |  | start no earlier than 2009-10-28 | Peng Sheng-Kui; IT | 96h | 96h | 3,840 | 1,600 | 3,840 |
| 126 | 1.6.2.2.2 | BVT-2'sec env setup |  | 5d | 2009-11-23 A | 2009-11-27 A |  | 100% |  | 2009-03-16 | 2009-03-18 | 3d |  |  | start no earlier than 2009-11-23 | Yang Jing; Peng Sheng-Kui | 80h | 80h | 3,200 | 960 | 3,200 |
| 127 | 1.6.2.2.3 | 2 BVT frameworks integration |  | 4d | 2009-11-30 A | 2009-12-03 A | 126 | 100% |  | 2009-05-05 | 2009-05-27 | 17d |  |  |  | Peng Sheng-Kui | 32h | 32h | 1,280 | 21,760 | 1,280 |
| 128 | 1.6.2.3 | **Build Delivery Implementation** |  | 98d? | 2009-10-28 A | 2010-03-26 |  | 46% | 52.77d? | 2009-03-02 | 2009-05-27 | 61d? | 123d |  |  |  | 592h | 312h | 23,680 | 71,680 | 12,480 |
| 129 | 1.6.2.3.1 | Iter-I |  | 6d | 2009-10-28 A | 2009-11-04 A |  | 100% |  | 2009-03-16 | 2009-03-20 | 5d? |  |  | start no earlier than 2009-10-28 | Peng Sheng-Kui; IT | 96h | 96h | 3,840 | 1,600 | 3,840 |

Notes:
- 115: Rick: We need a list of the property files and task start date from development. 3 days assumes 3 files for UI. Duration may change if file list is expanded.

| ID | WBS | Task | Type | Duration | Start | Finish | Predecessors | Complete | Remaining | Baseline start | Baseline finish | Baseline duration | Total slack | Constraint | Resources | Work | Actual work | Cost | Baseline cost | Actual cost |
| --- | --- | --- | --- | --- | --- | --- | --- | --- | --- | --- | --- | --- | --- | --- | --- | --- | --- | --- | --- | --- |
| 130 | 1.6.2.3.2 | **Iter-II** |  | 15d | 2009-12-02 A | 2009-12-21 A |  | 100% |  | 2009-03-16 | 2009-03-18 | 3d |  |  | Peng Sheng-Kui | 120h | 120h | 4,800 | 960 | 4,800 |
| 131 | 1.6.2.3.2.1 | Spring I | milestone | 0d | 2009-12-02 A | 2009-12-02 A |  | 100% |  |  |  |  |  | start no earlier than 2009-12-02 | Peng Sheng-Kui |  |  |  |  |  |
| 132 | 1.6.2.3.2.2 | Spring II | milestone | 0d | 2009-12-11 A | 2009-12-11 A |  | 100% |  |  |  |  |  | start no earlier than 2009-12-11 | Peng Sheng-Kui |  |  |  |  |  |
| 133 | 1.6.2.3.2.3 | Spring III | milestone | 0d | 2009-12-21 A | 2009-12-21 A |  | 100% |  |  |  |  |  | start no earlier than 2009-12-21 | Peng Sheng-Kui |  |  |  |  |  |
| 134 | 1.6.2.3.3 | **Full Regression Cycle I** |  | 18d? | 2010-01-11 A | 2010-02-03 | 131 |  | 18d? | 2009-05-05 | 2009-05-27 | 17d | 152d |  | Peng Sheng-Kui | 168h | 32h | 6,720 | 21,760 | 1,280 |
| 135 | 1.6.2.3.3.1 | Regression I |  | 1d? | 2010-01-11 | 2010-01-11 |  |  |  |  |  |  | 169d | start no earlier than 2010-01-11 | Peng Sheng-Kui | 8h |  | 320 |  |  |
| 136 | 1.6.2.3.3.2 | Regression II |  | 1d? | 2010-01-20 | 2010-01-20 |  |  |  |  |  |  | 162d | start no earlier than 2010-01-20 | Peng Sheng-Kui | 8h |  | 320 |  |  |
| 137 | 1.6.2.3.3.3 | Regression III |  | 1d? | 2010-02-03 | 2010-02-03 |  |  |  |  |  |  | 152d | start no earlier than 2010-02-03 | Peng Sheng-Kui | 8h |  | 320 |  |  |
| 138 | 1.6.2.3.4 | **Full Regression Cycle II** |  | 11d? | 2010-02-09 A | 2010-03-05 |  |  | 11d? | 2009-05-05 | 2009-05-27 | 17d | 138d |  | Peng Sheng-Kui | 104h | 32h | 4,160 | 21,760 | 1,280 |
| 139 | 1.6.2.3.4.1 | Regression IV |  | 1d? | 2010-02-09 | 2010-02-09 |  |  |  |  |  |  | 148d | start no earlier than 2010-02-09 | Peng Sheng-Kui | 8h |  | 320 |  |  |
| 140 | 1.6.2.3.4.2 | Regression V |  | 1d? | 2010-03-05 | 2010-03-05 |  |  |  |  |  |  | 138d | start no earlier than 2010-03-05 | Peng Sheng-Kui | 8h |  | 320 |  |  |
| 141 | 1.6.2.3.5 | **Full Regression Cycle III** |  | 11d? | 2010-03-12 A | 2010-03-26 |  |  | 11d? | 2009-05-05 | 2009-05-27 | 17d | 123d |  | Peng Sheng-Kui | 104h | 32h | 4,160 | 21,760 | 1,280 |
| 142 | 1.6.2.3.5.1 | Regression VI |  | 1d? | 2010-03-12 | 2010-03-12 |  |  |  |  |  |  | 133d | start no earlier than 2010-03-12 | Peng Sheng-Kui | 8h |  | 320 |  |  |
| 143 | 1.6.2.3.5.2 | Regression VII |  | 1d? | 2010-03-26 | 2010-03-26 |  |  |  |  |  |  | 123d | start no earlier than 2010-03-26 | Peng Sheng-Kui | 8h |  | 320 |  |  |
| 144 | 1.7 | **Pre-Iteration Tasks & Trunk Tasks** |  | 275d? | 2009-03-02 A | 2010-04-09 |  | 94% | 17.23d? |  |  |  | 114d |  |  | 22213.9h | 21341.4h | 887,276.35 |  | 852,374.95 |
| 145 | 1.7.1 | **DEV Tasks** |  | 191d? | 2009-03-02 A | 2009-11-27 |  | 98% | 3.12d? |  |  |  | 198d |  |  | 15095.7h | 14959.9h | 603,828.35 |  | 598,394.95 |
| 146 | 1.7.1.1 | **Requirements & Mockups** |  | 25d | 2009-08-25 A | 2009-09-27 A |  | 100% |  |  |  |  |  |  |  | 6552h | 6552h | 262,080 |  | 262,080 |
| 147 | 1.7.1.1.1 | **Policy Group** |  | 25d | 2009-08-25 A | 2009-09-27 A |  | 100% |  |  |  |  |  |  |  | 6552h | 6552h | 262,080 |  | 262,080 |
| 148 | 1.7.1.1.1.1 | **Review & Update** |  | 24d | 2009-08-25 A | 2009-09-25 A |  | 100% |  |  |  |  |  |  |  | 6512h | 6512h | 260,480 |  | 260,480 |
| 149 | 1.7.1.1.1.1.1 | **Iteration I** |  | 10d | 2009-09-08 A | 2009-09-21 A |  | 100% |  |  |  |  |  |  |  | 472h | 472h | 18,880 |  | 18,880 |
| 150 | 1.7.1.1.1.1.1.1 | **Windows Mobile** |  | 10d | 2009-09-08 A | 2009-09-21 A |  | 100% |  |  |  |  |  |  |  | 472h | 472h | 18,880 |  | 18,880 |
| 151 | 1.7.1.1.1.1.1.1.1 | Drafting & Review & Revision |  | 9d | 2009-09-08 A | 2009-09-18 A |  | 100% |  |  |  |  |  | finish no earlier than 2009-09-18 | Caslavka Jason; McNeil Edward; Gong Zhi; Li Yi-Gang; Li Bin | 432h | 432h | 17,280 |  | 17,280 |
| 152 | 1.7.1.1.1.1.1.1.2 | Sign Off & Baseline |  | 1d | 2009-09-21 A | 2009-09-21 A | 151 | 100% |  |  |  |  |  |  | Caslavka Jason; McNeil Edward; Gong Zhi; Li Yi-Gang; Li Bin | 40h | 40h | 1,600 |  | 1,600 |
| 153 | 1.7.1.1.1.1.2 | **Iteration II** |  | 19d | 2009-09-01 A | 2009-09-25 A |  | 100% |  |  |  |  |  |  |  | 760h | 760h | 30,400 |  | 30,400 |
| 154 | 1.7.1.1.1.1.2.1 | **Symbian S60** |  | 19d | 2009-09-01 A | 2009-09-25 A |  | 100% |  |  |  |  |  |  |  | 760h | 760h | 30,400 |  | 30,400 |
| 155 | 1.7.1.1.1.1.2.1.1 | Drafting & Review & Revision |  | 15d | 2009-09-01 A | 2009-09-21 A |  | 100% |  |  |  |  |  | finish no earlier than 2009-09-21 | Caslavka Jason; McNeil Edward; Gong Zhi; Li Yi-Gang; Li Bin | 600h | 600h | 24,000 |  | 24,000 |
| 156 | 1.7.1.1.1.1.2.1.2 | Sign Off & Baseline |  | 4d | 2009-09-22 A | 2009-09-25 A | 155 | 100% |  |  |  |  |  | start no earlier than 2009-09-22 | Caslavka Jason; McNeil Edward; Gong Zhi; Li Yi-Gang; Li Bin | 160h | 160h | 6,400 |  | 6,400 |

| ID | WBS | Task | Duration | Start | Finish | Predecessors | Complete | Constraint | Resources | Work | Actual work | Cost | Actual cost |
| --- | --- | --- | --- | --- | --- | --- | --- | --- | --- | --- | --- | --- | --- |
| 157 | 1.7.1.1.1.1.3 | **Iteration III** | 17d | 2009-09-01 A | 2009-09-23 A |  | 100% |  |  | 1360h | 1360h | 54,400 | 54,400 |
| 158 | 1.7.1.1.1.1.3.1 | **Symbian UIQ** | 17d | 2009-09-01 A | 2009-09-23 A |  | 100% |  |  | 680h | 680h | 27,200 | 27,200 |
| 159 | 1.7.1.1.1.1.3.1.1 | Drafting & Review & Revision | 16d | 2009-09-01 A | 2009-09-22 A |  | 100% | finish no earlier than 2009-09-23 | Caslavka Jason; McNeil Edward; Gong Zhi; Li Yi-Gang; Li Bin | 640h | 640h | 25,600 | 25,600 |
| 160 | 1.7.1.1.1.1.3.1.2 | Sign Off & Baseline | 1d | 2009-09-23 A | 2009-09-23 A | 159 | 100% |  | Caslavka Jason; McNeil Edward; Gong Zhi; Li Yi-Gang; Li Bin | 40h | 40h | 1,600 | 1,600 |
| 161 | 1.7.1.1.1.1.3.2 | **SE** | 17d | 2009-09-01 A | 2009-09-23 A |  | 100% |  |  | 680h | 680h | 27,200 | 27,200 |
| 162 | 1.7.1.1.1.1.3.2.1 | Drafting & Review & Revision | 16d | 2009-09-01 A | 2009-09-22 A |  | 100% | finish no earlier than 2009-09-23 | Caslavka Jason; McNeil Edward; Gong Zhi; Li Yi-Gang; Li Bin | 640h | 640h | 25,600 | 25,600 |
| 163 | 1.7.1.1.1.1.3.2.2 | Sign Off & Baseline | 1d | 2009-09-23 A | 2009-09-23 A | 162 | 100% |  | Caslavka Jason; McNeil Edward; Gong Zhi; Li Yi-Gang; Li Bin | 40h | 40h | 1,600 | 1,600 |
| 164 | 1.7.1.1.1.1.4 | **Iteration IV** | 24d | 2009-08-25 A | 2009-09-25 A |  | 100% |  |  | 3920h | 3920h | 156,800 | 156,800 |
| 165 | 1.7.1.1.1.1.4.1 | **CDMA** | 18d | 2009-09-02 A | 2009-09-25 A |  | 100% |  |  | 720h | 720h | 28,800 | 28,800 |
| 166 | 1.7.1.1.1.1.4.1.1 | Drafting & Review & Revision | 17d | 2009-09-02 A | 2009-09-24 A |  | 100% | finish no earlier than 2009-09-24 | Caslavka Jason; McNeil Edward; Gong Zhi; Li Yi-Gang; Li Bin | 680h | 680h | 27,200 | 27,200 |
| 167 | 1.7.1.1.1.1.4.1.2 | Sign Off & Baseline | 1d | 2009-09-25 A | 2009-09-25 A | 166 | 100% |  | Caslavka Jason; McNeil Edward; Gong Zhi; Li Yi-Gang; Li Bin | 40h | 40h | 1,600 | 1,600 |
| 168 | 1.7.1.1.1.1.4.2 | **Windows Native** | 24d | 2009-08-25 A | 2009-09-25 A |  | 100% |  |  | 960h | 960h | 38,400 | 38,400 |
| 169 | 1.7.1.1.1.1.4.2.1 | Drafting & Review & Revision | 23d | 2009-08-25 A | 2009-09-24 A |  | 100% | finish no earlier than 2009-09-24 | Caslavka Jason; McNeil Edward; Gong Zhi; Li Yi-Gang; Li Bin | 920h | 920h | 36,800 | 36,800 |
| 170 | 1.7.1.1.1.1.4.2.2 | Sign Off & Baseline | 1d | 2009-09-25 A | 2009-09-25 A | 169 | 100% |  | Caslavka Jason; McNeil Edward; Gong Zhi; Li Yi-Gang; Li Bin | 40h | 40h | 1,600 | 1,600 |
| 171 | 1.7.1.1.1.1.4.3 | **Nokia S40** | 18d | 2009-09-02 A | 2009-09-25 A |  | 100% |  |  | 720h | 720h | 28,800 | 28,800 |
| 172 | 1.7.1.1.1.1.4.3.1 | Drafting & Review & Revision | 17d | 2009-09-02 A | 2009-09-24 A |  | 100% | finish no earlier than 2009-09-24 | Caslavka Jason; McNeil Edward; Gong Zhi; Li Yi-Gang; Li Bin | 680h | 680h | 27,200 | 27,200 |
| 173 | 1.7.1.1.1.1.4.3.2 | Sign Off & Baseline | 1d | 2009-09-25 A | 2009-09-25 A | 172 | 100% |  | Caslavka Jason; McNeil Edward; Gong Zhi; Li Yi-Gang; Li Bin | 40h | 40h | 1,600 | 1,600 |
| 174 | 1.7.1.1.1.1.4.4 | **BlackBerry** | 19d | 2009-09-01 A | 2009-09-25 A |  | 100% |  |  | 760h | 760h | 30,400 | 30,400 |
| 175 | 1.7.1.1.1.1.4.4.1 | Drafting & Review & Revision | 17d | 2009-09-01 A | 2009-09-23 A |  | 100% | finish no earlier than 2009-09-24 | Caslavka Jason; McNeil Edward; Gong Zhi; Li Yi-Gang; Li Bin | 680h | 680h | 27,200 | 27,200 |
| 176 | 1.7.1.1.1.1.4.4.2 | Sign Off & Baseline | 2d | 2009-09-24 A | 2009-09-25 A | 175 | 100% |  | Caslavka Jason; McNeil Edward; Gong Zhi; Li Yi-Gang; Li Bin | 80h | 80h | 3,200 | 3,200 |
| 177 | 1.7.1.1.1.1.4.5 | **P2K** | 19d | 2009-09-01 A | 2009-09-25 A |  | 100% |  |  | 760h | 760h | 30,400 | 30,400 |
| 178 | 1.7.1.1.1.1.4.5.1 | Drafting & Review & Revision | 17d | 2009-09-01 A | 2009-09-23 A |  | 100% | finish no earlier than 2009-09-24 | Caslavka Jason; McNeil Edward; Gong Zhi; Li Yi-Gang; Li Bin | 680h | 680h | 27,200 | 27,200 |
| 179 | 1.7.1.1.1.1.4.5.2 | Sign Off & Baseline | 2d | 2009-09-24 A | 2009-09-25 A | 178 | 100% |  | Caslavka Jason; McNeil Edward; Gong Zhi; Li Yi-Gang; Li Bin | 80h | 80h | 3,200 | 3,200 |
| 180 | 1.7.1.1.1.2 | Final Sign Off | 1d | 2009-09-27 A | 2009-09-27 A | 148 | 100% |  | Caslavka Jason; McNeil Edward; Gong Zhi; Li Yi-Gang; Li Bin | 40h | 40h | 1,600 | 1,600 |

| ID | WBS | Task | Type | Duration | Start | Finish | Predecessors | Complete | Remaining | Total slack | Free slack | Constraint | Resources | Work | Actual work | Cost | Actual cost |
| --- | --- | --- | --- | --- | --- | --- | --- | --- | --- | --- | --- | --- | --- | --- | --- | --- | --- |
| 181 | 1.7.1.2 | **Architecture Design** |  | 53d? | 2009-09-10 A | 2009-11-27 |  | 87% | 7.07d? | 198d |  |  |  | 492h | 356.17h | 19,680 | 14,246.6 |
| 182 | 1.7.1.2.1 | M: Starting | milestone | 0d | 2009-09-10 | 2009-09-10 |  |  |  | 251d |  | start no earlier than 2009-09-10 |  |  |  |  |  |
| 183 | 1.7.1.2.2 | **Drafting** |  | 16d? | 2009-09-10 A | 2009-09-30 |  | 99% | 0d? | 0d |  |  | Li Yi-Gang | 380h | 324.17h | 15,200 | 12,966.6 |
| 184 | 1.7.1.2.2.1 | **Architecture document** |  | 13d? | 2009-09-10 A | 2009-09-27 A | 182 | 100% |  |  |  |  |  | 60h | 60h | 2,400 | 2,400 |
| 185 | 1.7.1.2.2.1.1 | data model relationship with IOP |  | 13d | 2009-09-10 A | 2009-09-27 A |  | 100% |  |  |  |  | Li Yi-Gang [50%] | 52h | 52h | 2,080 | 2,080 |
| 186 | 1.7.1.2.2.1.2 | System Architecture |  | 1d? | 2009-09-10 A | 2009-09-10 A |  | 100% |  |  |  |  | Li Yi-Gang [50%] | 4h | 4h | 160 | 160 |
| 187 | 1.7.1.2.2.1.3 | Remove Life Cycle Features from Firmware Management |  | 1d? | 2009-09-10 A | 2009-09-10 A |  | 100% |  |  |  |  | Li Yi-Gang [50%] | 4h | 4h | 160 | 160 |
| 188 | 1.7.1.2.2.2 | **Renew Refactoring HLD** |  | 16d | 2009-09-10 A | 2009-09-30 A | 182 | 100% |  |  |  |  |  | 124h | 124h | 4,960 | 4,960 |
| 189 | 1.7.1.2.2.2.1 | Refactoring framework: task/operation |  | 5d | 2009-09-10 A | 2009-09-16 A |  | 100% |  |  |  |  | Wang Jia [50%] | 20h | 20h | 800 | 800 |
| 190 | 1.7.1.2.2.2.2 | Refactoring framework: device layer/workflow (script) |  | 5d | 2009-09-17 A | 2009-09-23 A | 189 | 100% |  |  |  |  | Wang Jia [50%] | 20h | 20h | 800 | 800 |
| 191 | 1.7.1.2.2.2.3 | cluster support/common issues |  | 6d | 2009-09-24 A | 2009-09-30 A | 190 | 100% |  |  |  |  | Wang Jia [50%] | 24h | 24h | 960 | 960 |
| 192 | 1.7.1.2.2.2.4 | 8 pre-defined workflows |  | 5d | 2009-09-10 A | 2009-09-16 A |  | 100% |  |  |  |  | Dong Jin-Peng [50%] | 20h | 20h | 800 | 800 |
| 193 | 1.7.1.2.2.2.5 | 8 pre-defined workflows |  | 5d | 2009-09-17 A | 2009-09-23 A | 192 | 100% |  |  |  |  | Dong Jin-Peng [50%] | 20h | 20h | 800 | 800 |
| 194 | 1.7.1.2.2.2.6 | 8 pre-defined workflows |  | 5d | 2009-09-24 A | 2009-09-29 A | 193 | 100% |  |  |  |  | Dong Jin-Peng [50%] | 20h | 20h | 800 | 800 |
| 195 | 1.7.1.2.2.3 | **Renew existing 4.6 HLD** |  | 15d | 2009-09-10 A | 2009-09-29 A | 182 | 100% |  |  |  |  |  | 68h | 68h | 2,720 | 2,720 |
| 196 | 1.7.1.2.2.3.1 | Non-Functional Requirements and Design Improvements |  | 5d | 2009-09-10 A | 2009-09-16 A |  | 100% |  |  |  |  | Liao Qin-Qin [30%] | 12h | 12h | 480 | 480 |
| 197 | 1.7.1.2.2.3.2 | Functional Requirements |  | 5d | 2009-09-17 A | 2009-09-23 A | 196 | 100% |  |  |  |  | Zhang Zhi-Yu [30%]; Liu Zhi-Qiang [30%]; Hu Guang-Zhi [20%]; Fan Bin [30%] | 44h | 44h | 1,760 | 1,760 |
| 198 | 1.7.1.2.2.3.3 | Ericsson ER and others |  | 5d | 2009-09-24 A | 2009-09-29 A | 197 | 100% |  |  |  |  | Li Bin [30%] | 12h | 12h | 480 | 480 |
| 199 | 1.7.1.2.2.4 | **Dependent documents (Checkpoint)** |  | 3d | 2009-09-27 A | 2009-09-30 A | 184 | 100% |  |  |  |  |  |  |  |  |  |
| 200 | 1.7.1.2.2.4.1 | Backend API document | milestone | 0d | 2009-09-27 A | 2009-09-27 A |  | 100% |  |  |  |  | Wang Xiu-Feng |  |  |  |  |
| 201 | 1.7.1.2.2.4.2 | IOP Design document | milestone | 0d | 2009-09-27 A | 2009-09-27 A |  | 100% |  |  |  |  | IOP Team |  |  |  |  |
| 202 | 1.7.1.2.2.4.3 | Simplified Device Layer HLD | milestone | 0d | 2009-09-30 A | 2009-09-30 A |  | 100% |  |  |  |  | Singh Anand |  |  |  |  |
| 203 | 1.7.1.2.2.4.4 | Simplified Device Layer LLD | milestone | 0d | 2009-09-30 A | 2009-09-30 A |  | 100% |  |  |  |  | Singh Anand |  |  |  |  |
| 204 | 1.7.1.2.2.4.5 | SmartView HLD | milestone | 0d | 2009-09-27 A | 2009-09-27 A |  | 100% |  |  |  |  | Singh Anand |  |  |  |  |
| 205 | 1.7.1.2.3 | Internal Review |  | 4d | 2009-11-10 A | 2009-11-13 A | 183 | 100% |  |  |  | finish no earlier than 2009-11-13 | Li Yi-Gang | 32h | 32h | 1,280 | 1,280 |
| 206 | 1.7.1.2.4 | Review |  | 10d | 2009-11-16 | 2009-11-27 | 205 |  |  | 198d | 0d |  | Li Yi-Gang | 80h |  | 3,200 |  |
| 207 | 1.7.1.2.5 | Baseline & Sign Off | milestone | 0d | 2009-11-27 | 2009-11-27 | 206 |  |  | 198d |  |  | Li Yi-Gang |  |  |  |  |

| ID | WBS | Task | Duration | Start | Finish | Predecessors | Complete | Constraint | Resources | Work | Actual work | Cost | Actual cost |
| --- | --- | --- | --- | --- | --- | --- | --- | --- | --- | --- | --- | --- | --- |
| 208 | 1.7.1.3 | **Backend APIs** | 40d | 2009-07-13 A | 2009-09-04 A |  | 100% |  |  | 1162.88h | 1162.88h | 46,515.2 | 46,515.2 |
| 209 | 1.7.1.3.1 | Analysis, Investigation and Estimation | 5d | 2009-07-13 A | 2009-07-17 A |  | 100% | finish no earlier than 2009-07-17 | Zhang Zhi-Yu; Hu Guang-Zhi; Liu Zhi-Qiang; Fan Bin; Liao Qin-Qin | 200h | 200h | 8,000 | 8,000 |
| 210 | 1.7.1.3.2 | **Phase I** | 18d | 2009-07-20 A | 2009-08-12 A |  | 100% |  |  | 364h | 364h | 14,560 | 14,560 |
| 211 | 1.7.1.3.2.1 | ReqID (638) - Login | 5d | 2009-07-20 A | 2009-07-24 A |  | 100% |  | Hu Guang-Zhi | 40h | 40h | 1,600 | 1,600 |
| 212 | 1.7.1.3.2.2 | ReqID (639) - Logout | 3d | 2009-07-27 A | 2009-07-29 A | 211 | 100% |  | Hu Guang-Zhi | 24h | 24h | 960 | 960 |
| 213 | 1.7.1.3.2.3 | **System Adminstration** | 15d | 2009-07-20 A | 2009-08-07 A |  | 100% |  |  | 288h | 288h | 11,520 | 11,520 |
| 214 | 1.7.1.3.2.3.1 | ReqID (680) - Agents | 1d | 2009-07-20 A | 2009-07-20 A |  | 100% |  | Liu Zhi-Qiang | 8h | 8h | 320 | 320 |
| 215 | 1.7.1.3.2.3.2 | ReqID (681) - Agents Add/Edit/Delete | 1d | 2009-07-21 A | 2009-07-21 A | 214 | 100% |  | Liu Zhi-Qiang | 8h | 8h | 320 | 320 |
| 216 | 1.7.1.3.2.3.3 | ReqID (682) - Applications | 1.5d | 2009-07-22 A | 2009-07-23 A | 215 | 100% |  | Liu Zhi-Qiang | 12h | 12h | 480 | 480 |
| 217 | 1.7.1.3.2.3.4 | ReqID (683) - Applications Add/Edit/Delete | 1.5d | 2009-07-23 A | 2009-07-24 A | 216 | 100% |  | Liu Zhi-Qiang | 12h | 12h | 480 | 480 |
| 218 | 1.7.1.3.2.3.5 | ReqID (684) - Applications Add Platforms | 1.5d | 2009-07-20 A | 2009-07-21 A |  | 100% |  | Zhang Zhi-Yu | 12h | 12h | 480 | 480 |
| 219 | 1.7.1.3.2.3.6 | ReqID (685) - Applications Add Models | 1.5d | 2009-07-21 A | 2009-07-22 A | 218 | 100% |  | Zhang Zhi-Yu | 12h | 12h | 480 | 480 |
| 220 | 1.7.1.3.2.3.7 | ReqID (686) - Applications Add Tenants | 1d | 2009-07-23 A | 2009-07-23 A | 219 | 100% |  | Zhang Zhi-Yu | 8h | 8h | 320 | 320 |
| 221 | 1.7.1.3.2.3.8 | ReqID (687) - Applications Add Languages | 1d | 2009-07-24 A | 2009-07-24 A | 220 | 100% |  | Zhang Zhi-Yu | 8h | 8h | 320 | 320 |
| 222 | 1.7.1.3.2.3.9 | ReqID (688) - Custom Distribution Configuration | 2d | 2009-07-30 A | 2009-07-31 A | 212 | 100% |  | Hu Guang-Zhi | 16h | 16h | 640 | 640 |
| 223 | 1.7.1.3.2.3.10 | ReqID (689) - Custom Distribution Rate Plan | 2d | 2009-08-03 A | 2009-08-04 A | 222 | 100% |  | Hu Guang-Zhi | 16h | 16h | 640 | 640 |
| 224 | 1.7.1.3.2.3.11 | ReqID (690) - Custom Distribution Rate Plan Add/Edit/Delete | 3d | 2009-08-05 A | 2009-08-07 A | 223 | 100% |  | Hu Guang-Zhi | 24h | 24h | 960 | 960 |
| 225 | 1.7.1.3.2.3.12 | ReqID (697) - Scripts | 2d | 2009-08-04 A | 2009-08-05 A |  | 100% |  | Liao Qin-Qin | 16h | 16h | 640 | 640 |
| 226 | 1.7.1.3.2.3.13 | ReqID (698) - Scripts Add/Edit/Delete | 2d | 2009-08-06 A | 2009-08-07 A | 225 | 100% |  | Liao Qin-Qin | 16h | 16h | 640 | 640 |
| 227 | 1.7.1.3.2.3.14 | ReqID (699) - SMSC Setup | 2d | 2009-07-20 A | 2009-07-21 A |  | 100% |  | Fan Bin [50%] | 8h | 8h | 320 | 320 |
| 228 | 1.7.1.3.2.3.15 | ReqID (700) - SMSC Add/Edit/Delete | 2d | 2009-07-22 A | 2009-07-23 A | 227 | 100% |  | Fan Bin [50%] | 8h | 8h | 320 | 320 |
| 229 | 1.7.1.3.2.3.16 | ReqID (783) - System Administration > Push Gateway Setup | 1d | 2009-07-24 A | 2009-07-24 A | 228 | 100% |  | Fan Bin [50%] | 4h | 4h | 160 | 160 |
| 230 | 1.7.1.3.2.3.17 | ReqID (701) - Tenant Partitions | 2d | 2009-07-27 A | 2009-07-28 A | 229 | 100% |  | Fan Bin [50%] | 8h | 8h | 320 | 320 |
| 231 | 1.7.1.3.2.3.18 | ReqID (702) - Tenant Partitions Add/Edit/Delete | 2d | 2009-07-29 A | 2009-07-30 A | 230 | 100% |  | Fan Bin [50%] | 8h | 8h | 320 | 320 |
| 232 | 1.7.1.3.2.3.19 | ReqID (708) - User Administration System Users | 2d | 2009-07-31 A | 2009-08-03 A | 231 | 100% |  | Fan Bin [50%] | 8h | 8h | 320 | 320 |
| 233 | 1.7.1.3.2.3.20 | ReqID (709) - User Administration System Users Add/Edit/Delete | 2d | 2009-08-04 A | 2009-08-05 A | 232 | 100% |  | Fan Bin [50%] | 8h | 8h | 320 | 320 |
| 234 | 1.7.1.3.2.3.21 | Role & Permission using AOP design | 4d | 2009-07-20 A | 2009-07-23 A |  | 100% |  | Fan Bin [50%] | 16h | 16h | 640 | 640 |
| 235 | 1.7.1.3.2.3.22 | ReqID (704) - User Administration Roles & Permissions | 5d | 2009-07-24 A | 2009-07-30 A | 234 | 100% |  | Fan Bin [50%] | 20h | 20h | 800 | 800 |
| 236 | 1.7.1.3.2.3.23 | ReqID (705) - User Administration Roles & Permissions Add/Edit/Delete | 2d | 2009-07-31 A | 2009-08-03 A | 235 | 100% |  | Fan Bin [50%] | 8h | 8h | 320 | 320 |
| 237 | 1.7.1.3.2.3.24 | ReqID (706) - User Administration Roles & Permissions Add (Set Help Desk Graphs) | 2d | 2009-08-04 A | 2009-08-05 A | 236 | 100% |  | Fan Bin [50%] | 8h | 8h | 320 | 320 |
| 238 | 1.7.1.3.2.3.25 | ReqID (707) - User Administration Roles & Permissions Add (Set Devices Group Graphs) | 2d | 2009-08-06 A | 2009-08-07 A | 237 | 100% |  | Fan Bin | 16h | 16h | 640 | 640 |
| 239 | 1.7.1.3.2.4 | newUI installer | 3d | 2009-08-04 A | 2009-08-12 A |  | 100% | finish no earlier than 2009-08-07 | Liao Qin-Qin [50%] | 12h | 12h | 480 | 480 |

| ID | WBS | Task | Type | Duration | Start | Finish | Predecessors | Complete | Constraint | Resources | Work | Actual work | Cost | Actual cost |
| --- | --- | --- | --- | --- | --- | --- | --- | --- | --- | --- | --- | --- | --- | --- |
| 240 | 1.7.1.3.3 | **Phase II** |  | 25d | 2009-08-03 A | 2009-09-04 A |  | 100% |  |  | 598.88h | 598.88h | 23,955.2 | 23,955.2 |
| 241 | 1.7.1.3.3.1 | Bug fixing for Phase I |  | 8d | 2009-08-10 A | 2009-09-04 A |  | 100% | finish no earlier than 2009-09-04 | Fan Bin [70%]; Hu Guang-Zhi [30%]; Liao Qin-Qin [70%] | 79.68h | 79.68h | 3,187.2 | 3,187.2 |
| 242 | 1.7.1.3.3.2 | CI test-framework for junit test |  | 3d | 2009-08-10 A | 2009-08-12 A |  | 100% | start no earlier than 2009-08-10 | Meng De-Jun; Liao Xue-Feng | 48h | 48h | 1,920 | 1,920 |
| 243 | 1.7.1.3.3.3 | E2E refactoring code merge from trunk |  | 2d | 2009-08-13 A | 2009-08-14 A | 242 | 100% | start no earlier than 2009-08-13 | Meng De-Jun [30%]; Zhong Zi-Long [30%] | 9.6h | 9.6h | 384 | 384 |
| 244 | 1.7.1.3.3.4 | **Common Items** |  | 2d | 2009-08-20 A | 2009-08-21 A |  | 100% |  |  | 11.2h | 11.2h | 448 | 448 |
| 245 | 1.7.1.3.3.4.1 | ReqID (787) - Forgot password |  | 1d | 2009-08-20 A | 2009-08-20 A |  | 100% |  | Hu Guang-Zhi [70%] | 5.6h | 5.6h | 224 | 224 |
| 246 | 1.7.1.3.3.4.2 | ReqID (788) - Login > password expire |  | 1d | 2009-08-21 A | 2009-08-21 A | 245 | 100% |  | Hu Guang-Zhi [70%] | 5.6h | 5.6h | 224 | 224 |
| 247 | 1.7.1.3.3.5 | **System Adminstration** |  | 13d | 2009-08-10 A | 2009-08-26 A |  | 100% |  |  | 82.4h | 82.4h | 3,296 | 3,296 |
| 248 | 1.7.1.3.3.5.1 | ReqID (691) - Supported Device Listing |  | 2d | 2009-08-10 A | 2009-08-11 A |  | 100% | start no earlier than 2009-08-10 | Zhong Zi-Long [70%] | 11.2h | 11.2h | 448 | 448 |
| 249 | 1.7.1.3.3.5.2 | ReqID (692) - Supported Devices Add/Edit/Delete |  | 2d | 2009-08-12 A | 2009-08-13 A | 248 | 100% |  | Zhong Zi-Long [70%] | 11.2h | 11.2h | 448 | 448 |
| 250 | 1.7.1.3.3.5.3 | ReqID (710) - Workflow |  | 3d | 2009-08-17 A | 2009-08-19 A |  | 100% |  | Meng De-Jun | 24h | 24h | 960 | 960 |
| 251 | 1.7.1.3.3.5.4 | ReqID (781) - Firmware Tags |  | 1d | 2009-08-10 A | 2009-08-11 A |  | 100% |  | Liao Qin-Qin | 8h | 8h | 320 | 320 |
| 252 | 1.7.1.3.3.5.5 | ReqID (790) - Custom Distribution Rate Plan Exception |  | 3d | 2009-08-24 A | 2009-08-26 A |  | 100% |  | Hu Guang-Zhi | 24h | 24h | 960 | 960 |
| 253 | 1.7.1.3.3.5.6 | ReqID (945) - Version & License |  | 0.5d | 2009-08-20 A | 2009-08-20 A | 250 | 100% |  | Meng De-Jun | 4h | 4h | 160 | 160 |
| 254 | 1.7.1.3.3.6 | **Device Groups** |  | 25d | 2009-08-03 A | 2009-09-04 A |  | 100% |  |  | 368h | 368h | 14,720 | 14,720 |
| 255 | 1.7.1.3.3.6.1 | ReqID (660) - Device Groups > Root > | milestone | 0d | 2009-08-10 A | 2009-08-10 A |  | 100% | finish no earlier than 2009-08-10 | Zhang Zhi-Yu [50%]; Liu Zhi-Qiang [50%] |  |  |  |  |
| 256 | 1.7.1.3.3.6.2 | ReqID (667) - Device Groups > Root > Add/Edit The Selected Group |  | 2d | 2009-08-10 A | 2009-08-11 A |  | 100% | start no earlier than 2009-08-10 | Zhang Zhi-Yu [50%]; Liu Zhi-Qiang [50%] | 16h | 16h | 640 | 640 |
| 257 | 1.7.1.3.3.6.3 | ReqID (668) - Device Groups > Root > Add/Edit The Selected Group > Group Settings |  | 1d | 2009-08-12 A | 2009-08-12 A | 256 | 100% |  | Zhang Zhi-Yu [50%]; Liu Zhi-Qiang [50%] | 8h | 8h | 320 | 320 |
| 258 | 1.7.1.3.3.6.4 | ReqID (669) - Device Groups > Root > Add/Edit The Selected Group > Group Members |  | 1d | 2009-08-13 A | 2009-08-13 A | 257 | 100% |  | Zhang Zhi-Yu [50%]; Liu Zhi-Qiang [50%] | 8h | 8h | 320 | 320 |
| 259 | 1.7.1.3.3.6.5 | ReqID (670) - Device Groups > Root > Delete Group |  | 2d | 2009-08-14 A | 2009-08-17 A | 258 | 100% |  | Zhang Zhi-Yu [50%]; Liu Zhi-Qiang [50%] | 16h | 16h | 640 | 640 |
| 260 | 1.7.1.3.3.6.6 | **ReqID (675) - Device Groups ->Root >Edit Group Settings** |  | 25d | 2009-08-03 A | 2009-09-04 A |  | 100% |  |  | 320h | 320h | 12,800 | 12,800 |
| 261 | 1.7.1.3.3.6.6.1 | Device group new APIs design |  | 5d | 2009-08-03 A | 2009-08-07 A |  | 100% | finish no earlier than 2009-08-07 | Zhang Zhi-Yu; Liu Zhi-Qiang | 80h | 80h | 3,200 | 3,200 |
| 262 | 1.7.1.3.3.6.6.2 | Refactoring existing 5 APIs (Firmware, Agent, Application, CSP, General Settings) |  | 5d | 2009-08-10 A | 2009-08-14 A | 261 | 100% | finish no earlier than 2009-08-14 | Zhang Zhi-Yu; Liu Zhi-Qiang | 80h | 80h | 3,200 | 3,200 |
| 263 | 1.7.1.3.3.6.6.3 | **Edit Group 17 new APIs Implementation** |  | 15d | 2009-08-17 A | 2009-09-04 A |  | 100% |  |  | 160h | 160h | 6,400 | 6,400 |
| 264 | 1.7.1.3.3.6.6.3.1 | part I |  | 5d | 2009-08-17 A | 2009-08-21 A | 262 | 100% |  | Zhang Zhi-Yu; Liu Zhi-Qiang | 80h | 80h | 3,200 | 3,200 |
| 265 | 1.7.1.3.3.6.6.3.2 | part II (including ReqID (649, 655) Edit User Settings, ReqID (784) View Group Settings) |  | 5d | 2009-08-31 A | 2009-09-04 A | 264 | 100% | finish no earlier than 2009-09-04 | Zhang Zhi-Yu; Liu Zhi-Qiang | 80h | 80h | 3,200 | 3,200 |

Notes:
- 260: getPlatforms() / getTabs() / getSubTabs() / getDatabyTab() / saveOrUpdate() / delete() / getDeviceLists() / 4.2.5.2.17 ReqID (676) - Device Groups ->Root >Edit Group Settings > General 4.2.5.2.18 ReqID (677) - Device Groups ->Root >Edit Group Settings > Wifi > Wifi Settings popup 4.2.5.2.19 ReqID (678) - Device Groups ->Root >Edit Group Settings > Email 4.2.5.2.20 ReqID (679) - Device Groups ->Root >Edit Group Settings > Email popup 4.2.5.2.21 ReqID (723) - Device Groups ->Root >Edit Group Settings > Active Sync 4.2.5.2.22 ReqID (724) - Device Groups ->Root >Edit Group Settings > Active Sync popup 4.2.5.2.23 ReqID (725) - Device Groups ->Root >Edit Group Settings > VoIP 4.2.5.2.24 ReqID (726) - Device Groups ->Root >Edit Group Settings > VoIP Settings popup 4.2.5.2.25 ReqID (727) - Device Groups ->Root >Edit Group Settings > VPN 4.2.5.2.26 ReqID (728) - Device Groups ->Root >Edit Group Settings > VPN Settings popup 4.2.5.2.27 ReqID (729) - Device Groups ->Root >Edit Group Settings > Bookmarks 4.2.5.2.28 ReqID (730) - Device Groups ->Root >Edit Group Settings > Bookmarks Settings popup 4.2.5.2.29 ReqID (731) - Device Groups ->Root >Edit Group Settings > Applications 4.2.5.2.30 ReqID (732) - Device Groups ->Root >Edit Group Settings > Applications Settings popup 4.2.5.2.31 ReqID (733) - Device Groups ->Root >Edit Group Settings > Firmware 4.2.5.2.32 ReqID (734) - Device Groups ->Root >Edit Group Settings > Firmware popup 4.2.5.2.33 ReqID (735) - Device Groups ->Root >Edit Group Settings > Scripts 4.2.5.2.34 ReqID (736) - Device Groups ->Root >Edit Group Settings > Scripts popup 4.2.5.2.35 ReqID (737) - Device Groups ->Root >Edit Group Settings > Connectivity 4.2.5.2.36 ReqID (738) - Device Groups ->Root >Edit Group Settings > Brower 4.2.5.2.37 ReqID (739) - Device Groups ->Root >Edit Group Settings > DC 4.2.5.2.38 ReqID (740) - Device Groups ->Root >Edit Group Settings > Media Stream 4.2.5.2.39 ReqID (741) - Device Groups ->Root >Edit Group Settings > DMAcc 4.2.5.2.40 ReqID (742) - Device Groups ->Root >Edit Group Settings > Data Sync 4.2.5.2.41 ReqID (743) - Device Groups ->Root >Edit Group Settings > IM 4.2.5.2.42 ReqID (744) - Device Groups ->Root >Edit Group Settings > MMS 4.2.5.2.43 ReqID (745) - Device Groups ->Root >Edit Group Settings > Push to Talk 4.2.5.2.44 ReqID (746) - Device Groups ->Root >Edit Group Settings > Miscellaneous 4.2.5.2.45 ReqID (747) - Device Groups ->Root >Edit Group Settings > Diagmon 4.2.5.2.46 ReqID (748) - Device Groups ->Root >Edit Group Settings > NAM 4.2.5.2.47 ReqID (749) - Device Groups ->Root >Edit Group Settings > RPL 4.2.5.2.48 ReqID (750) - Device Groups ->Root >Edit Group Settings > Mail for exchange 4.2.5.2.49 ReqID (751) - Device Groups ->Root >Edit Group Settings > SMS 4.2.5.2.50 ReqID (752) - Device Groups ->Root >Edit Group Settings > GPS
- 265: ReqID (649) - HelpDesk ->Search > DeviceDetails > Edit User Settings / ReqID (655) - HelpDesk ->Search > UserDetails > Edit User Settings

| ID | WBS | Task | Type | Duration | Start | Finish | Predecessors | Complete | Remaining | Baseline start | Baseline finish | Baseline duration | Total slack | Constraint | Resources | Work | Actual work | Cost | Baseline cost | Actual cost |
| --- | --- | --- | --- | --- | --- | --- | --- | --- | --- | --- | --- | --- | --- | --- | --- | --- | --- | --- | --- | --- |
| 266 | 1.7.1.4 | **SmartView 2.0 ( can be dropped-wein)** |  | 0d | 2009-09-04 | 2009-09-04 | 208 |  |  |  |  |  | 254d |  |  |  |  |  |  |  |
| 267 | 1.7.1.4.1 | **Performance Framework** |  | 0d | 2009-09-04 | 2009-09-04 |  |  |  |  |  |  | 254d |  |  |  |  |  |  |  |
| 268 | 1.7.1.4.1.1 | Design | milestone | 0d | 2009-09-04 | 2009-09-04 |  |  |  |  |  |  | 254d | start no earlier than 2009-08-17 | Singh Anand [50%] |  |  |  |  |  |
| 269 | 1.7.1.5 | **Trunk Development** |  | 71d | 2009-03-02 A | 2009-06-08 |  | 99% | 0.68d |  |  |  | 318d |  |  | 2323.2h | 2323.2h | 92,928 |  | 92,928 |
| 270 | 1.7.1.5.1 | **[ReqID: 583] Technology Upgrade** |  | 15d | 2009-03-02 A | 2009-03-20 A |  | 100% |  | 2009-03-02 | 2009-03-20 | 15d |  |  |  | 120h | 120h | 4,800 | 4,800 | 4,800 |
| 271 | 1.7.1.5.1.1 | [ReqID: 584] App Server Upgrade |  | 5d | 2009-03-02 A | 2009-03-06 A |  | 100% |  | 2009-03-02 | 2009-03-06 | 5d |  |  | Chunbo | 40h | 40h | 1,600 | 1,600 | 1,600 |
| 272 | 1.7.1.5.1.2 | [ReqID: 586] Bulk on Java 6 |  | 2d | 2009-03-09 A | 2009-03-10 A | 271 | 100% |  | 2009-03-09 | 2009-03-10 | 2d |  |  | Chunbo | 16h | 16h | 640 | 640 | 640 |
| 273 | 1.7.1.5.1.3 | **[ReqID: 588] Kodo Upgrade to 3.4.0** |  | 8d | 2009-03-11 A | 2009-03-20 A | 272 | 100% |  | 2009-03-11 | 2009-03-20 | 8d |  |  |  | 64h | 64h | 2,560 | 2,560 | 2,560 |
| 274 | 1.7.1.5.1.3.1 | Kodo upgrade research |  | 3d | 2009-03-11 A | 2009-03-13 A |  | 100% |  | 2009-03-11 | 2009-03-13 | 3d |  |  | Chunbo | 24h | 24h | 960 | 960 | 960 |
| 275 | 1.7.1.5.1.3.2 | Kodo upgrade coding, review and test |  | 5d | 2009-03-16 A | 2009-03-20 A | 274 | 100% |  | 2009-03-16 | 2009-03-20 | 5d |  |  | Chunbo | 40h | 40h | 1,600 | 1,600 | 1,600 |
| 276 | 1.7.1.5.2 | **[ReqID: 403] Continuous Integration** |  | 20d | 2009-03-02 A | 2009-03-27 A |  | 100% |  | 2009-03-02 | 2009-03-27 | 20d |  |  |  | 272h | 272h | 10,880 | 16,000 | 10,880 |
| 277 | 1.7.1.5.2.1 | Migrate Incremental Build Script to MMC trunk |  | 5d | 2009-03-02 A | 2009-03-06 A |  | 100% |  | 2009-03-02 | 2009-03-06 | 5d |  |  | Julia | 40h | 40h | 1,600 | 1,600 | 1,600 |
| 278 | 1.7.1.5.2.2 | Developer Automation usage guide |  | 5d | 2009-03-09 A | 2009-03-13 A | 277 | 100% |  | 2009-03-09 | 2009-03-13 | 5d |  |  | Julia | 40h | 40h | 1,600 | 1,600 | 1,600 |
| 279 | 1.7.1.5.2.3 | Evaluate TeamCity professional and Pre-Tested Commit |  | 5d | 2009-03-02 A | 2009-03-06 A |  | 100% |  | 2009-03-02 | 2009-03-06 | 5d |  |  | Caocao | 40h | 40h | 1,600 | 1,600 | 1,600 |
| 280 | 1.7.1.5.2.4 | Incremental Build Scripts deploy target refinement |  | 3d | 2009-03-09 A | 2009-03-11 A | 279 | 100% |  | 2009-03-09 | 2009-03-11 | 3d |  |  | Caocao | 24h | 24h | 960 | 960 | 960 |
| 281 | 1.7.1.5.2.5 | Incremental Build Script bootstrap |  | 3d | 2009-03-12 A | 2009-03-16 A | 280 | 100% |  | 2009-03-12 | 2009-03-16 | 3d |  |  | Caocao | 24h | 24h | 960 | 960 | 960 |
| 282 | 1.7.1.5.2.6 | Unit Test Sample |  | 9d | 2009-03-17 A | 2009-03-27 A | 281 | 100% |  | 2009-03-17 | 2009-03-27 | 9d |  |  | Caocao | 72h | 72h | 2,880 | 2,880 | 2,880 |
| 283 | 1.7.1.5.2.7 | WS Test Case Preparation |  | 4d | 2009-03-02 A | 2009-03-05 A |  | 100% |  | 2009-03-02 | 2009-03-27 | 20d |  |  | Xuefeng | 32h | 32h | 1,280 | 6,400 | 1,280 |
| 284 | 1.7.1.5.3 | **[ReqID: 451] Upgrade from previously deployed versions** |  | 5d | 2009-03-09 A | 2009-03-13 A |  | 100% |  | 2009-03-16 | 2009-03-27 | 10d |  |  | Sophie [80%] | 32h | 32h | 1,280 | 3,200 | 1,280 |
| 285 | 1.7.1.5.3.1 | [ReqID: 453] Installer requirements for an upgrade (Fresh installer for technology upgrade) |  | 5d | 2009-03-09 A | 2009-03-13 A |  | 100% |  | 2009-03-16 | 2009-03-27 | 10d |  |  |  |  |  |  |  |  |
| 286 | 1.7.1.5.4 | [ReqID: 536] Silent mode installer |  | 5d | 2009-03-23 A | 2009-03-27 A |  | 100% |  | 2009-04-09 | 2009-04-22 | 10d |  |  | Sophie [80%] | 32h | 32h | 1,280 | 3,200 | 1,280 |
| 287 | 1.7.1.5.5 | **[ReqID: 447] ADD Integration** |  | 17d | 2009-03-12 A | 2009-04-03 A |  | 100% |  | 2009-03-12 | 2009-04-03 | 17d |  |  |  | 217.6h | 217.6h | 8,704 | 8,704 | 8,704 |
| 288 | 1.7.1.5.5.1 | **[ReqID: 448] Simple ADD Integration** |  | 5d | 2009-03-12 A | 2009-03-18 A |  | 100% |  | 2009-03-12 | 2009-03-18 | 5d |  |  | Zhiyu [80%]; Priscilla [80%] | 64h | 64h | 2,560 | 2,560 | 2,560 |
| 289 | 1.7.1.5.5.1.1 | Unit Test Case preparation & review |  | 1d | 2009-03-12 A | 2009-03-12 A |  | 100% |  | 2009-03-12 | 2009-03-12 | 1d |  |  |  |  |  |  |  |  |
| 290 | 1.7.1.5.5.1.2 | Develop Code (Update POC from SE work) |  | 2d | 2009-03-13 A | 2009-03-16 A | 289 | 100% |  | 2009-03-13 | 2009-03-16 | 2d |  |  |  |  |  |  |  |  |
| 291 | 1.7.1.5.5.1.3 | Unit testing |  | 1d | 2009-03-17 A | 2009-03-17 A | 290 | 100% |  | 2009-03-17 | 2009-03-17 | 1d |  |  |  |  |  |  |  |  |
| 292 | 1.7.1.5.5.1.4 | Code review |  | 1d | 2009-03-18 A | 2009-03-18 A | 291 | 100% |  | 2009-03-18 | 2009-03-18 | 1d |  |  |  |  |  |  |  |  |

| ID | WBS | Task | Duration | Start | Finish | Predecessors | Complete | Baseline start | Baseline finish | Baseline duration | Constraint | Resources | Work | Actual work | Cost | Baseline cost | Actual cost |
| --- | --- | --- | --- | --- | --- | --- | --- | --- | --- | --- | --- | --- | --- | --- | --- | --- | --- |
| 293 | 1.7.1.5.5.2 | **[ReqID: 449] Advanced ADD Integration** | 12d | 2009-03-19 A | 2009-04-03 A | 288 | 100% | 2009-03-19 | 2009-04-03 | 12d |  | Zhiyu [80%]; Priscilla [80%] | 153.6h | 153.6h | 6,144 | 6,144 | 6,144 |
| 294 | 1.7.1.5.5.2.1 | **[ReqID: 457] Use Case 1: MSISDN pre-registration** | 10d | 2009-03-23 A | 2009-04-03 A |  | 100% | 2009-03-23 | 2009-04-03 | 10d |  |  |  |  |  |  |  |
| 295 | 1.7.1.5.5.2.1.1 | Unit Test Case preparation & review | 1d | 2009-03-23 A | 2009-03-23 A |  | 100% | 2009-03-23 | 2009-03-23 | 1d |  |  |  |  |  |  |  |
| 296 | 1.7.1.5.5.2.1.2 | Develop Code | 7d | 2009-03-24 A | 2009-04-01 A | 295 | 100% | 2009-03-24 | 2009-04-01 | 7d |  |  |  |  |  |  |  |
| 297 | 1.7.1.5.5.2.1.3 | Unit testing | 1d | 2009-04-02 A | 2009-04-02 A | 296 | 100% | 2009-04-02 | 2009-04-02 | 1d |  |  |  |  |  |  |  |
| 298 | 1.7.1.5.5.2.1.4 | Code review | 1d | 2009-04-03 A | 2009-04-03 A | 297 | 100% | 2009-04-03 | 2009-04-03 | 1d |  |  |  |  |  |  |  |
| 299 | 1.7.1.5.5.2.2 | **[ReqID: 459] Use Case 2: Device detection and Configuration** | 10d | 2009-03-19 A | 2009-04-01 A |  | 100% | 2009-03-19 | 2009-04-01 | 10d |  |  |  |  |  |  |  |
| 300 | 1.7.1.5.5.2.2.1 | Unit Test Case preparation & review | 1d | 2009-03-19 A | 2009-03-19 A |  | 100% | 2009-03-19 | 2009-03-19 | 1d |  |  |  |  |  |  |  |
| 301 | 1.7.1.5.5.2.2.2 | Develop Code | 7d | 2009-03-20 A | 2009-03-30 A | 300 | 100% | 2009-03-20 | 2009-03-30 | 7d |  |  |  |  |  |  |  |
| 302 | 1.7.1.5.5.2.2.3 | Unit testing | 1d | 2009-03-31 A | 2009-03-31 A | 301 | 100% | 2009-03-31 | 2009-03-31 | 1d |  |  |  |  |  |  |  |
| 303 | 1.7.1.5.5.2.2.4 | Code review | 1d | 2009-04-01 A | 2009-04-01 A | 302 | 100% | 2009-04-01 | 2009-04-01 | 1d |  |  |  |  |  |  |  |
| 304 | 1.7.1.5.6 | **[ReqID: 530] LDAP Integration** | 8d | 2009-04-02 A | 2009-04-13 A |  | 100% | 2009-05-12 | 2009-05-25 | 10d |  | Kino [80%] | 44.8h | 44.8h | 1,792 | 2,560 | 1,792 |
| 305 | 1.7.1.5.6.1 | [ReqID: 531] Use Case: Admin and Helpdesk console | 3d | 2009-04-02 A | 2009-04-07 A |  | 100% | 2009-05-12 | 2009-05-14 | 3d |  |  |  |  |  |  |  |
| 306 | 1.7.1.5.6.2 | [ReqID: 532] Use Case: Selfcare using LDAP | 4d | 2009-04-08 A | 2009-04-13 A | 305 | 100% | 2009-05-15 | 2009-05-20 | 4d |  |  |  |  |  |  |  |
| 307 | 1.7.1.5.7 | [ReqID: 547] GUI mode installer for LDAP | 3d | 2009-04-16 A | 2009-04-20 A | 304 | 100% | 2009-05-21 | 2009-05-25 | 3d |  | Sophie [80%] | 19.2h | 19.2h | 768 |  | 768 |
| 308 | 1.7.1.5.8 | [ReqID: 547] GUI mode installer for CP | 3d | 2009-04-23 A | 2009-04-27 A |  | 100% | 2009-04-23 | 2009-04-24 | 2d |  | Sophie [80%] | 19.2h | 19.2h | 768 | 640 | 768 |
| 309 | 1.7.1.5.9 | **[ReqID: 546] Improved Error messages (Need more details)** | 15.12d | 2009-04-07 A | 2009-04-28 A |  | 100% |  |  |  |  |  | 57.6h | 57.6h | 2,304 |  | 2,304 |
| 310 | 1.7.1.5.9.1 | Web service module (QC#5710, merge from SE works) | 2d | 2009-04-07 A | 2009-04-08 A |  | 100% | 2009-04-21 | 2009-04-27 | 5d |  | Priscilla [80%] | 12.8h | 12.8h | 512 | 1,280 | 512 |
| 311 | 1.7.1.5.9.2 | **20 WS APIs to be improved** | 5.12d | 2009-04-21 A | 2009-04-28 A |  | 100% |  |  |  |  |  | 44.8h | 44.8h | 1,792 |  | 1,792 |
| 312 | 1.7.1.5.9.2.1 | bootstrap(), executeWorkFlowByScript() | 5d | 2009-04-21 A | 2009-04-27 A |  | 100% |  |  |  |  | Kino [80%] | 32h | 32h | 1,280 |  | 1,280 |
| 313 | 1.7.1.5.9.2.2 | getDeviceDetail() | 2d | 2009-04-24 A | 2009-04-28 A |  | 100% |  |  |  | finish no earlier than 2009-04-27 | Zhiyu [80%] | 12.8h | 12.8h | 512 |  | 512 |
| 314 | 1.7.1.5.10 | [ReqID: 582] WS API for Self-Care (needs specific use cases) | 8d | 2009-04-16 A | 2009-04-27 A |  | 100% | 2009-05-21 | 2009-05-27 | 5d |  | Priscilla [80%] | 51.2h | 51.2h | 2,048 | 2,560 | 2,048 |
| 315 | 1.7.1.5.11 | Code Beauty | 5d | 2009-04-20 A | 2009-04-24 A |  | 100% |  |  |  | finish no earlier than 2009-04-24 | Billie | 40h | 40h | 1,600 |  | 1,600 |
| 316 | 1.7.1.5.12 | **[ReqID: 537] 4.6 Bug fix Part I** | 21d | 2009-03-30 A | 2009-04-27 A |  | 100% | 2009-03-30 | 2009-04-27 | 20d |  | Zhiyu [20%]; Kino [20%]; Priscilla [20%]; Zhiqiang [20%]; Sophie [20%] | 160h | 160h | 6,400 | 5,120 | 6,400 |
| 317 | 1.7.1.5.12.1 | Unit Test Case preparation & review | 3d | 2009-03-30 A | 2009-04-01 A |  | 100% | 2009-03-30 | 2009-04-01 | 3d |  |  |  |  |  |  |  |
| 318 | 1.7.1.5.12.2 | Develop Code | 12d | 2009-04-02 A | 2009-04-20 A | 317 | 100% | 2009-04-02 | 2009-04-20 | 12d |  |  |  |  |  |  |  |
| 319 | 1.7.1.5.12.3 | Unit testing | 3d | 2009-04-21 A | 2009-04-23 A | 318 | 100% | 2009-04-21 | 2009-04-23 | 3d |  |  |  |  |  |  |  |
| 320 | 1.7.1.5.12.4 | Code review | 2d | 2009-04-24 A | 2009-04-27 A | 319 | 100% | 2009-04-24 | 2009-04-27 | 2d |  |  |  |  |  |  |  |

| ID | WBS | Task | Type | Duration | Start | Finish | Predecessors | Complete | Baseline start | Baseline finish | Baseline duration | Constraint | Resources | Work | Actual work | Cost | Baseline cost | Actual cost |
| --- | --- | --- | --- | --- | --- | --- | --- | --- | --- | --- | --- | --- | --- | --- | --- | --- | --- | --- |
| 321 | 1.7.1.5.13 | **[ReqID: 546] Improved Error messages (Need more details)** |  | 43d | 2009-04-08 A | 2009-06-08 A |  | 100% | 2009-04-14 | 2009-05-12 | 20d |  |  | 347.2h | 347.2h | 13,888 | 6,400 | 13,888 |
| 322 | 1.7.1.5.13.1 | **17 of 20 WS APIs to be improved** |  | 16.88d | 2009-05-15 A | 2009-06-08 A |  | 100% |  |  |  |  |  | 289.6h | 289.6h | 11,584 |  | 11,584 |
| 323 | 1.7.1.5.13.1.1 | customProfile(), customConfiguration(), updateFirmware() |  | 7d | 2009-05-15 A | 2009-05-26 A |  | 100% |  |  |  |  | Priscilla [80%] | 44.8h | 44.8h | 1,792 |  | 1,792 |
| 324 | 1.7.1.5.13.1.2 | createDevice(), lookupDevice() |  | 4d | 2009-05-26 A | 2009-06-04 A |  | 100% |  |  |  | start no earlier than 2009-05-26 | Zhiyu [80%] | 25.6h | 25.6h | 1,024 |  | 1,024 |
| 325 | 1.7.1.5.13.1.3 | standardProfile(), getProfileResult(), deviceSetup(), configure() |  | 9d | 2009-05-19 A | 2009-06-04 A |  | 100% |  |  |  |  | Kino [80%] | 57.6h | 57.6h | 2,304 |  | 2,304 |
| 326 | 1.7.1.5.13.1.4 | unlockDevice(), wipeData() |  | 5d | 2009-05-25 A | 2009-06-04 A |  | 100% |  |  |  |  | Zhiqiang [80%] | 32h | 32h | 1,280 |  | 1,280 |
| 327 | 1.7.1.5.13.1.5 | getDiagnosticResults(), lookupTask(), lookupTaskStatus() |  | 9d | 2009-05-19 A | 2009-06-04 A |  | 100% |  |  |  |  | Sophie [80%] | 57.6h | 57.6h | 2,304 |  | 2,304 |
| 328 | 1.7.1.5.13.1.6 | profileParameters(), getDeviceUserParametersByPhoneNumber(), lockDevice() |  | 3d | 2009-06-04 A | 2009-06-08 A |  | 100% |  |  |  |  | Xuefeng; Chunbo; Caocao | 72h | 72h | 2,880 |  | 2,880 |
| 329 | 1.7.1.5.13.2 | Merge 3 WS APIs error message improvements from SE |  | 7.2d | 2009-05-11 A | 2009-05-20 A |  | 100% |  |  |  |  | Shanker | 57.6h | 57.6h | 2,304 |  | 2,304 |
| 330 | 1.7.1.5.13.3 | **Other modules (needs specific module lists or use cases)** |  | 0d | 2009-04-08 A | 2009-04-08 A |  | 100% | 2009-04-14 | 2009-05-12 | 20d |  |  |  |  |  | 5,120 |  |
| 331 | 1.7.1.5.13.3.1 | Module Part I | milestone | 0d | 2009-04-08 A | 2009-04-08 A |  | 100% | 2009-04-28 | 2009-05-12 | 10d |  | Priscilla [80%] |  |  |  | 2,560 |  |
| 332 | 1.7.1.5.13.3.2 | Module Part II | milestone | 0d | 2009-04-08 A | 2009-04-08 A |  | 100% | 2009-04-14 | 2009-04-27 | 10d |  | Zhiyu [80%] |  |  |  | 2,560 |  |
| 333 | 1.7.1.5.14 | **[ReqID: 265] RIM BlackBerry Support (Depends on Agent & IOP)** |  | 14d | 2009-05-08 A | 2009-05-27 A |  | 100% | 2009-05-12 | 2009-05-26 | 11d |  | Zhiyu [80%] | 89.6h | 89.6h | 3,584 | 2,816 | 3,584 |
| 334 | 1.7.1.5.14.1 | Unit Test Case preparation & review |  | 1d | 2009-05-08 A | 2009-05-08 A |  | 100% | 2009-05-12 | 2009-05-12 | 1d |  |  |  |  |  |  |  |
| 335 | 1.7.1.5.14.2 | [ReqID: 498] J2ME based client |  | 1d | 2009-05-11 A | 2009-05-11 A | 334 | 100% | 2009-05-13 | 2009-05-13 | 1d |  |  |  |  |  |  |  |
| 336 | 1.7.1.5.14.3 | [ReqID: 499] BB OS 4.2 > |  | 1d | 2009-05-11 A | 2009-05-11 A | 334 | 100% | 2009-05-13 | 2009-05-13 | 1d |  |  |  |  |  |  |  |
| 337 | 1.7.1.5.14.4 | [ReqID: 500] Extensible |  | 1d | 2009-05-11 A | 2009-05-11 A | 334 | 100% | 2009-05-13 | 2009-05-13 | 1d |  |  |  |  |  |  |  |
| 338 | 1.7.1.5.14.5 | [ReqID: 501] BES server connection |  | 1d | 2009-05-11 A | 2009-05-11 A | 334 | 100% | 2009-05-13 | 2009-05-13 | 1d |  |  |  |  |  |  |  |
| 339 | 1.7.1.5.14.6 | [ReqID: 502] OMA DM 1.2 Support |  | 1d | 2009-05-11 A | 2009-05-11 A | 334 | 100% | 2009-05-13 | 2009-05-13 | 1d |  |  |  |  |  |  |  |
| 340 | 1.7.1.5.14.7 | [ReqID: 503] Application Management |  | 1d | 2009-05-12 A | 2009-05-12 A | 339 | 100% | 2009-05-14 | 2009-05-14 | 1d |  |  |  |  |  |  |  |
| 341 | 1.7.1.5.14.8 | [ReqID: 504] Inventory profiling |  | 1d | 2009-05-13 A | 2009-05-13 A | 340 | 100% | 2009-05-15 | 2009-05-15 | 1d |  |  |  |  |  |  |  |
| 342 | 1.7.1.5.14.9 | [ReqID: 505] Network information profiling |  | 1d | 2009-05-12 A | 2009-05-12 A | 339 | 100% | 2009-05-14 | 2009-05-14 | 1d |  |  |  |  |  |  |  |
| 343 | 1.7.1.5.14.10 | [ReqID: 506] Settings Profiling | milestone | 0d | 2009-05-13 A | 2009-05-13 A | 341 | 100% | 2009-05-15 | 2009-05-15 | 0d |  |  |  |  |  |  |  |
| 344 | 1.7.1.5.14.11 | [ReqID: 507] Log and debug information | milestone | 0d | 2009-05-13 A | 2009-05-13 A | 343 | 100% | 2009-05-15 | 2009-05-15 | 0d |  |  |  |  |  |  |  |
| 345 | 1.7.1.5.14.12 | [ReqID: 508] Fault Tolerance | milestone | 0d | 2009-05-13 A | 2009-05-13 A | 344 | 100% | 2009-05-15 | 2009-05-15 | 0d |  |  |  |  |  |  |  |
| 346 | 1.7.1.5.14.13 | [ReqID: 509] Pre-loader support | milestone | 0d | 2009-05-13 A | 2009-05-13 A | 345 | 100% | 2009-05-15 | 2009-05-15 | 0d |  |  |  |  |  |  |  |
| 347 | 1.7.1.5.14.14 | [ReqID: 510] Preloader upgrade (Not support) | milestone | 0d | 2009-05-13 A | 2009-05-13 A | 346 | 100% | 2009-05-15 | 2009-05-15 | 0d |  |  |  |  |  |  |  |
| 348 | 1.7.1.5.14.15 | [ReqID: 511] Atomic command | milestone | 0d | 2009-05-13 A | 2009-05-13 A | 347 | 100% | 2009-05-15 | 2009-05-15 | 0d |  |  |  |  |  |  |  |
| 349 | 1.7.1.5.14.16 | [ReqID: 512] UI DM Alerts | milestone | 0d | 2009-05-13 A | 2009-05-13 A | 348 | 100% | 2009-05-15 | 2009-05-15 | 0d |  |  |  |  |  |  |  |
| 350 | 1.7.1.5.14.17 | [ReqID: 513] HTTP Push, SMS and SmartStart |  | 4d | 2009-05-13 A | 2009-05-18 A | 342 | 100% | 2009-05-15 | 2009-05-21 | 5d |  |  |  |  |  |  |  |
| 351 | 1.7.1.5.14.18 | [ReqID: 516] DL resume |  | 1d | 2009-05-19 A | 2009-05-19 A | 350 | 100% | 2009-05-18 | 2009-05-18 | 1d |  |  |  |  |  |  |  |
| 352 | 1.7.1.5.14.19 | Unit testing |  | 2d | 2009-05-19 A | 2009-05-20 A | 350 | 100% | 2009-05-22 | 2009-05-25 | 2d |  |  |  |  |  |  |  |
| 353 | 1.7.1.5.14.20 | Code review |  | 1d | 2009-05-21 A | 2009-05-21 A | 352 | 100% | 2009-05-26 | 2009-05-26 | 1d |  |  |  |  |  |  |  |
| 354 | 1.7.1.5.14.21 | Multiple preloader files support |  | 4d | 2009-05-22 A | 2009-05-27 A | 351 | 100% |  |  |  |  |  |  |  |  |  |  |

Notes:
- 343: No effort from server dev for ReqID: 506-512

| ID | WBS | Task | Type | Duration | Start | Finish | Predecessors | Complete | Remaining | Baseline start | Baseline finish | Baseline duration | Total slack | Constraint | Resources | Work | Actual work | Cost | Baseline cost | Actual cost |
| --- | --- | --- | --- | --- | --- | --- | --- | --- | --- | --- | --- | --- | --- | --- | --- | --- | --- | --- | --- | --- |
| 355 | 1.7.1.5.15 | **[ReqID: 491] Support of OMA-DM LAWMO Specification** |  | 27.12d | 2009-04-07 A | 2009-05-14 A |  | 100% |  | 2009-04-10 | 2009-05-20 | 28d |  |  |  | 140.8h | 140.8h | 5,632 | 7,168 | 5,632 |
| 356 | 1.7.1.5.15.1 | Unit Test Case preparation & review |  | 2d | 2009-04-07 A | 2009-04-08 A |  | 100% |  | 2009-04-10 | 2009-04-13 | 2d |  |  | Zhiqiang [80%] | 12.8h | 12.8h | 512 |  | 512 |
| 357 | 1.7.1.5.15.2 | [ReqID: 492] Use-Case: Profiling a LAWMO device's nodes. |  | 5d | 2009-04-09 A | 2009-04-15 A | 356 | 100% |  | 2009-04-14 | 2009-04-20 | 5d |  |  | Zhiqiang [80%] | 32h | 32h | 1,280 |  | 1,280 |
| 358 | 1.7.1.5.15.3 | [ReqID: 493] Use-Case: Fully Lock |  | 6d | 2009-04-16 A | 2009-04-23 A | 357 | 100% |  | 2009-04-21 | 2009-04-28 | 6d |  |  | Zhiqiang [80%] | 38.4h | 38.4h | 1,536 |  | 1,536 |
| 359 | 1.7.1.5.15.4 | [ReqID: 494] Use-Case: Partially Lock (Out of scope according to MMC4.6 FRD) |  | 2d | 2009-04-24 A | 2009-04-27 A | 358 | 100% |  | 2009-04-29 | 2009-05-04 | 3d |  |  | Zhiqiang [80%] | 12.8h | 12.8h | 512 |  | 512 |
| 360 | 1.7.1.5.15.5 | [ReqID: 495] Use-Case: Wipe | milestone | 0d | 2009-04-27 A | 2009-04-27 A | 359 | 100% |  | 2009-05-05 | 2009-05-11 | 5d |  |  | Zhiqiang [80%] |  |  |  |  |  |
| 361 | 1.7.1.5.15.6 | [ReqID: 496] Use-case: Unlock device |  | 2d | 2009-04-30 A | 2009-05-07 A | 360 | 100% |  | 2009-05-12 | 2009-05-13 | 2d |  |  | Zhiqiang [80%] | 12.8h | 12.8h | 512 |  | 512 |
| 362 | 1.7.1.5.15.7 | [ReqID: 497] Use-Case: Factory reset device |  | 2d | 2009-05-07 A | 2009-05-11 A | 361 | 100% |  | 2009-05-14 | 2009-05-15 | 2d |  |  | Zhiqiang [80%] | 12.8h | 12.8h | 512 |  | 512 |
| 363 | 1.7.1.5.15.8 | Unit testing |  | 2d | 2009-05-11 A | 2009-05-13 A | 362 | 100% |  | 2009-05-18 | 2009-05-19 | 2d |  |  | Zhiqiang [80%] | 12.8h | 12.8h | 512 |  | 512 |
| 364 | 1.7.1.5.15.9 | Code review |  | 1d | 2009-05-13 A | 2009-05-14 A | 363 | 100% |  | 2009-05-20 | 2009-05-20 | 1d |  |  | Zhiqiang [80%] | 6.4h | 6.4h | 256 |  | 256 |
| 365 | 1.7.1.5.16 | **Agent** |  | 32d | 2009-04-03 A | 2009-05-18 |  | 96% | 1.13d | 2009-04-03 | 2009-05-14 | 28d | 333d |  |  | 680h | 680h | 27,200 | 27,200 | 27,200 |
| 366 | 1.7.1.5.16.1 | **Implementation (Coding & UT)** |  | 32d | 2009-04-03 A | 2009-05-18 |  | 96% | 1.13d | 2009-04-03 | 2009-05-14 | 28d | 333d |  |  | 680h | 680h | 27,200 | 27,200 | 27,200 |
| 367 | 1.7.1.5.16.1.1 | **RIM Support** |  | 29d | 2009-04-03 A | 2009-05-13 A |  | 100% |  | 2009-04-03 | 2009-05-11 | 25d |  |  |  | 368h | 368h | 14,720 | 14,720 | 14,720 |
| 368 | 1.7.1.5.16.1.1.1 | [Req: 498/499/500/501/502/503/504/509/510/511/512/513/514/515/516]Bitheads drop bug fix |  | 10d | 2009-04-03 A | 2009-04-17 A |  | 100% |  | 2009-04-03 | 2009-04-17 | 10d |  | start no earlier than 2009-03-02 | Guohua; Houli | 160h | 160h | 6,400 | 6,400 | 6,400 |
| 369 | 1.7.1.5.16.1.1.2 | **Phase 1 requirement GAP compared with Bitheads implementation** |  | 4d | 2009-04-20 A | 2009-04-23 A | 368 | 100% |  | 2009-04-20 | 2009-04-23 | 4d |  |  |  | 208h | 208h | 8,320 | 8,320 | 8,320 |
| 370 | 1.7.1.5.16.1.1.2.1 | [Req: 504]Get User Name / Information |  | 1d | 2009-04-20 A | 2009-04-20 A |  | 100% |  | 2009-04-20 | 2009-04-20 | 1d |  | start no earlier than 2009-03-02 | Houli | 8h | 8h | 320 | 320 | 320 |
| 371 | Email a | [Req: 506]Get Email Configuration |  | 2d | 2009-04-20 A | 2009-04-21 A |  | 100% |  | 2009-04-20 | 2009-04-21 | 2d |  |  | Guohua | 16h | 16h | 640 | 640 | 640 |
| 372 | 1.7.1.5.16.1.1.2.3 | [Req: 504]Get Device PIN |  | 1d | 2009-04-20 A | 2009-04-20 A |  | 100% |  | 2009-04-20 | 2009-04-20 | 1d |  |  | Houli | 8h | 8h | 320 | 320 | 320 |
| 373 | 1.7.1.5.16.1.1.2.4 | [Req: 505]Get Network Information |  | 1d | 2009-04-20 A | 2009-04-20 A |  | 100% |  | 2009-04-20 | 2009-04-20 | 1d |  |  | Guohua; Houli | 16h | 16h | 640 | 640 | 640 |
| 374 | 1.7.1.5.16.1.1.2.5 | [Req: 504]Get Battery/Charger information |  | 1d | 2009-04-20 A | 2009-04-20 A |  | 100% |  | 2009-04-20 | 2009-04-20 | 1d |  |  | Guohua; Houli | 16h | 16h | 640 | 640 | 640 |
| 375 | Email a | [Req: 504]Get Location Information |  | 2d | 2009-04-20 A | 2009-04-21 A |  | 100% |  | 2009-04-20 | 2009-04-21 | 2d |  |  | Guohua; Houli | 32h | 32h | 1,280 | 1,280 | 1,280 |
| 376 | 1.7.1.5.16.1.1.2.7 | [Req: 503]Application Management GAP |  | 3d | 2009-04-20 A | 2009-04-22 A |  | 100% |  | 2009-04-20 | 2009-04-22 | 3d |  |  | Guohua; Houli | 48h | 48h | 1,920 | 1,920 | 1,920 |
| 377 | Email a | [Req: 506]Other Security Information |  | 4d | 2009-04-20 A | 2009-04-23 A |  | 100% |  | 2009-04-20 | 2009-04-23 | 4d |  |  | Guohua; Houli | 64h | 64h | 2,560 | 2,560 | 2,560 |
| 378 | 1.7.1.5.16.1.1.3 | [Req: 514] More device support |  | 10d | 2009-04-24 A | 2009-05-12 A | 369 | 100% |  | 2009-04-24 | 2009-05-08 | 10d |  |  |  |  |  |  |  |  |
| 379 | 1.7.1.5.16.1.1.4 | Unit Test |  | 1d | 2009-05-13 A | 2009-05-13 A | 378 | 100% |  | 2009-05-11 | 2009-05-11 | 1d |  |  |  |  |  |  |  |  |

| ID | WBS | Task | Duration | Start | Finish | Predecessors | Complete | Baseline start | Baseline finish | Baseline duration | Total slack | Constraint | Resources | Work | Actual work | Cost | Baseline cost | Actual cost |
| --- | --- | --- | --- | --- | --- | --- | --- | --- | --- | --- | --- | --- | --- | --- | --- | --- | --- | --- |
| 380 | 1.7.1.5.16.1.2 | **[Req 548] LAWMO support on Simulator** | 29d | 2009-04-03 A | 2009-05-13 A |  | 100% | 2009-04-03 | 2009-05-11 | 25d |  |  |  | 176h | 176h | 7,040 | 7,040 | 7,040 |
| 381 | 1.7.1.5.16.1.2.1 | [Req: 494/496/497]Port CMCC LAWMO back to simulator | 11d | 2009-04-03 A | 2009-04-20 A |  | 100% | 2009-04-03 | 2009-04-20 | 11d |  |  | Jianhui | 88h | 88h | 3,520 | 3,520 | 3,520 |
| 382 | 1.7.1.5.16.1.2.2 | [Req: 492]Add notify config support | 2d | 2009-04-21 A | 2009-04-22 A | 381 | 100% | 2009-04-21 | 2009-04-22 | 2d |  |  | Jianhui | 16h | 16h | 640 | 640 | 640 |
| 383 | 1.7.1.5.16.1.2.3 | [Req: 495]WipeList support | 3d | 2009-04-23 A | 2009-04-27 A | 382 | 100% | 2009-04-23 | 2009-04-27 | 3d |  |  | Jianhui | 24h | 24h | 960 | 960 | 960 |
| 384 | 1.7.1.5.16.1.2.4 | [Req: 493]Fully Lock | 1d | 2009-04-28 A | 2009-04-28 A | 383 | 100% | 2009-04-28 | 2009-04-28 | 1d |  |  | Jianhui | 8h | 8h | 320 | 320 | 320 |
| 385 | 1.7.1.5.16.1.2.5 | [Req: 493/494/495/496/497]support both sync and async | 5d | 2009-04-29 A | 2009-05-08 A | 384 | 100% | 2009-04-29 | 2009-05-06 | 5d |  |  | Jianhui | 40h | 40h | 1,600 | 1,600 | 1,600 |
| 386 | 1.7.1.5.16.1.2.6 | Unit Test | 3d | 2009-05-11 A | 2009-05-13 A | 385 | 100% | 2009-05-07 | 2009-05-11 | 3d |  |  |  |  |  |  |  |  |
| 387 | 1.7.1.5.16.1.3 | [Req: 537]4.5 bug fix (include unit test) | 7d | 2009-04-03 A | 2009-04-14 A |  | 100% | 2009-04-03 | 2009-04-14 | 7d |  | start no earlier than 2009-03-02 | All | 56h | 56h | 2,240 | 2,240 | 2,240 |
| 388 | 1.7.1.5.16.1.4 | **[Req: 537] 4.5 enhancements** | 15d | 2009-04-03 A | 2009-04-23 A |  | 100% | 2009-04-03 | 2009-04-23 | 14d |  |  |  | 80h | 80h | 3,200 | 3,200 | 3,200 |
| 389 | 1.7.1.5.16.1.4.1 | [Req: 537] PreLoader MMV from system infor rather than iPAQUtil | 3d | 2009-04-03 A | 2009-04-08 A |  | 100% | 2009-04-03 | 2009-04-08 | 3d |  | start no earlier than 2009-03-02 | Houli | 24h | 24h | 960 | 960 | 960 |
| 390 | 1.7.1.5.16.1.4.2 | [Req: 537] Cookie URL enhancement (more brief domain name?) | 4d | 2009-04-09 A | 2009-04-14 A | 389 | 100% | 2009-04-09 | 2009-04-14 | 4d |  | start no earlier than 2008-03-17 | Houli | 32h | 32h | 1,280 | 1,280 | 1,280 |
| 391 | 1.7.1.5.16.1.4.3 | [Req: 537] PreLoader error information UI improvement | 3d | 2009-04-15 A | 2009-04-17 A | 390 | 100% | 2009-04-15 | 2009-04-17 | 3d |  |  | Houli | 24h | 24h | 960 | 960 | 960 |
| 392 | 1.7.1.5.16.1.4.4 | Unit Test | 4d | 2009-04-20 A | 2009-04-23 A | 391 | 100% | 2009-04-20 | 2009-04-23 | 4d |  |  |  |  |  |  |  |  |
| 393 | 1.7.1.5.16.1.5 | code review | 3d | 2009-05-14 | 2009-05-18 | 367, 380, 387, 388 |  | 2009-05-12 | 2009-05-14 | 3d | 333d |  |  |  |  |  |  |  |
| 394 | 1.7.1.6 | **Trunk Bug Fixing** | 63d | 2009-08-27 A | 2009-11-27 A |  | 100% |  |  |  |  |  |  | 4565.63h | 4565.63h | 182,625.15 |  | 182,625.15 |
| 395 | 1.7.1.6.1 | **Trunk Bug Fixing (569 E2E & MMC 4.5 remaining bugs)** | 63d | 2009-08-27 A | 2009-11-27 A | 43 | 100% |  |  |  |  |  |  | 4565.63h | 4565.63h | 182,625.15 |  | 182,625.15 |
| 396 | 1.7.1.6.1.1 | **Round 0 - Full Regression** | 14d | 2009-08-27 A | 2009-09-15 A |  | 100% |  |  |  |  |  |  | 1052.8h | 1052.8h | 42,112 |  | 42,112 |
| 397 | 1.7.1.6.1.1.1 | **Full regression** | 14d | 2009-08-27 A | 2009-09-15 A |  | 100% |  |  |  |  |  |  | 1052.8h | 1052.8h | 42,112 |  | 42,112 |
| 398 | 1.7.1.6.1.1.1.1 | QA testing & bug verification | 14d | 2009-08-27 A | 2009-09-15 A |  | 100% |  |  |  |  |  | Li Shuang; Sun Lei; Liu Qing-Bo; Wang Ji-Zhong; Chen Guo-Na; Wang Rui; Wu Li-Rong | 784h | 784h | 31,360 |  | 31,360 |
| 399 | 1.7.1.6.1.1.1.2 | Bug fixing | 14d | 2009-08-27 A | 2009-09-15 A |  | 100% |  |  |  |  |  | Wang Jia [50%]; Zhu Zhen-Xing; Lei Juan [30%]; Liao Xue-Feng [30%]; Su Chun-Bo [30%] | 268.8h | 268.8h | 10,752 |  | 10,752 |
| 400 | 1.7.1.6.1.2 | **Round 1 - Sanity** | 4d | 2009-09-16 A | 2009-09-21 A | 396 | 100% |  |  |  |  |  |  | 172.8h | 172.8h | 6,912 |  | 6,912 |
| 401 | 1.7.1.6.1.2.1 | **Cycle 1** | 4d | 2009-09-16 A | 2009-09-21 A |  | 100% |  |  |  |  |  |  | 172.8h | 172.8h | 6,912 |  | 6,912 |
| 402 | 1.7.1.6.1.2.1.1 | QA testing & bug verification | 4d | 2009-09-16 A | 2009-09-21 A |  | 100% |  |  |  |  | start no earlier than 2009-09-07 | Wang Rui; Wu Li-Rong; Geng Cheng | 96h | 96h | 3,840 |  | 3,840 |
| 403 | 1.7.1.6.1.2.1.2 | Bug fixing (S1/2/3 bug fixes: 20) | 4d | 2009-09-16 A | 2009-09-21 A |  | 100% |  |  |  |  |  | Wang Jia [50%]; Zhu Zhen-Xing; Lei Juan [30%]; Liao Xue-Feng [30%]; Su Chun-Bo [30%] | 76.8h | 76.8h | 3,072 |  | 3,072 |

| ID | WBS | Task | Duration | Start | Finish | Predecessors | Complete | Constraint | Resources | Work | Actual work | Cost | Actual cost |
| --- | --- | --- | --- | --- | --- | --- | --- | --- | --- | --- | --- | --- | --- |
| 404 | 1.7.1.6.1.3 | **Round 2 - MAT** | 20d | 2009-09-22 A | 2009-10-23 A |  | 100% |  |  | 1393.78h | 1393.78h | 55,751.27 | 55,751.27 |
| 405 | 1.7.1.6.1.3.1 | **Cycle 2** | 5d | 2009-09-22 A | 2009-09-27 A | 401 | 100% |  |  | 260.09h | 260.09h | 10,403.64 | 10,403.64 |
| 406 | 1.7.1.6.1.3.1.1 | QA testing & bug verification | 5d | 2009-09-22 A | 2009-09-27 A |  | 100% |  | Wang Rui; Wu Li-Rong; Geng Cheng | 120h | 120h | 4,800 | 4,800 |
| 407 | 1.7.1.6.1.3.1.2 | Bug fixing(S1/2/3 bug fixes: 25) | 5d | 2009-09-22 A | 2009-09-27 A |  | 100% |  | Wang Jia [50%]; Zhu Zhen-Xing; Lei Juan [33.4%]; Liao Xue-Feng [33.4%]; Su Chun-Bo [33.4%]; Zhong Zi-Long [50%]; Meng De-Jun [50%] | 140.09h | 140.09h | 5,603.64 | 5,603.64 |
| 408 | 1.7.1.6.1.3.2 | **Cycle 3** | 5d | 2009-09-28 A | 2009-10-10 A | 405, 407 | 100% |  |  | 260.09h | 260.09h | 10,403.64 | 10,403.64 |
| 409 | 1.7.1.6.1.3.2.1 | QA testing & bug verification | 5d | 2009-09-28 A | 2009-10-10 A |  | 100% |  | Wang Rui; Wu Li-Rong; Geng Cheng | 120h | 120h | 4,800 | 4,800 |
| 410 | 1.7.1.6.1.3.2.2 | Bug fixing(S1/2/3 bug fixes: 25) | 5d | 2009-09-28 A | 2009-10-10 A |  | 100% |  | Wang Jia [50%]; Zhu Zhen-Xing; Lei Juan [33.4%]; Liao Xue-Feng [33.4%]; Su Chun-Bo [33.4%]; Zhong Zi-Long [50%]; Meng De-Jun [50%] | 140.09h | 140.09h | 5,603.64 | 5,603.64 |
| 411 | 1.7.1.6.1.3.3 | **Cycle 4** | 5d | 2009-10-12 A | 2009-10-16 A | 408, 410 | 100% |  |  | 429.6h | 429.6h | 17,184 | 17,184 |
| 412 | 1.7.1.6.1.3.3.1 | QA testing & bug verification | 5d | 2009-10-12 A | 2009-10-16 A |  | 100% |  | Wang Rui; Wu Li-Rong; Geng Cheng | 120h | 120h | 4,800 | 4,800 |
| 413 | 1.7.1.6.1.3.3.2 | Bug fixing(S1/2/3 bug fixes: 25) | 5d | 2009-10-12 A | 2009-10-16 A |  | 100% |  | Wang Jia; Zhu Zhen-Xing; Lei Juan [30%]; Liao Xue-Feng [30%]; Su Chun-Bo [30%]; Ma Zhi-Hui; Li Jia; Zhong Zi-Long; Meng De-Jun | 276h | 276h | 11,040 | 11,040 |
| 414 | 1.7.1.6.1.3.3.3 | Ericsson ER Merge from 4.5.3 | 2d | 2009-10-15 A | 2009-10-16 A |  | 100% | start no earlier than 2009-10-15 | Lei Juan [70%]; Liao Xue-Feng [70%]; Su Chun-Bo [70%] | 33.6h | 33.6h | 1,344 | 1,344 |
| 415 | 1.7.1.6.1.3.4 | **Cycle 5 (GOAL For Active Bugs: S1=0; S2<75; S3<74; S4+S5<23)** | 5d | 2009-10-19 A | 2009-10-23 A | 401, 411 | 100% |  |  | 444h | 444h | 17,760 | 17,760 |
| 416 | 1.7.1.6.1.3.4.1 | QA testing & bug verification | 5d | 2009-10-19 A | 2009-10-23 A |  | 100% |  | Wang Rui; Wu Li-Rong; Geng Cheng | 120h | 120h | 4,800 | 4,800 |
| 417 | 1.7.1.6.1.3.4.2 | Bug fixing(S1/2/3 bug fixes: 46) | 5d | 2009-10-19 A | 2009-10-23 A |  | 100% |  | Wang Jia; Zhu Zhen-Xing; Lei Juan [70%]; Liao Xue-Feng [70%]; Su Chun-Bo [70%]; Ma Zhi-Hui; Li Jia; Zhong Zi-Long; Meng De-Jun | 324h | 324h | 12,960 | 12,960 |
| 418 | 1.7.1.6.1.4 | **Round 3 - Full Regression** | 25d | 2009-10-26 A | 2009-11-27 A |  | 100% |  |  | 1946.25h | 1946.25h | 77,849.88 | 77,849.88 |
| 419 | 1.7.1.6.1.4.1 | **Cycle 6 (GOAL For Active Bugs: S1=0; S2<65; S3<69; S4+S5<20)** | 5d | 2009-10-26 A | 2009-10-30 A | 415 | 100% |  |  | 404h | 404h | 16,160 | 16,160 |
| 420 | 1.7.1.6.1.4.1.1 | QA testing & bug verification | 5d | 2009-10-26 A | 2009-10-30 A |  | 100% |  | Wang Rui; Wu Li-Rong | 80h | 80h | 3,200 | 3,200 |
| 421 | 1.7.1.6.1.4.1.2 | Bug fixing(S1/2/3 bug fixes: 46) | 5d | 2009-10-26 A | 2009-10-30 A |  | 100% |  | Wang Jia; Zhu Zhen-Xing; Lei Juan [70%]; Liao Xue-Feng [70%]; Su Chun-Bo [70%]; Ma Zhi-Hui; Li Jia; Zhong Zi-Long; Meng De-Jun | 324h | 324h | 12,960 | 12,960 |
| 422 | 1.7.1.6.1.4.2 | **Cycle 7 (GOAL For Active Bugs: S1=0; S2<55; S3<64; S4+S5<17)** | 5d | 2009-11-02 A | 2009-11-06 A | 419, 421 | 100% |  |  | 440h | 440h | 17,600 | 17,600 |
| 423 | 1.7.1.6.1.4.2.1 | QA testing & bug verification | 5d | 2009-11-02 A | 2009-11-06 A |  | 100% |  | Wang Rui; Wu Li-Rong | 80h | 80h | 3,200 | 3,200 |
| 424 | 1.7.1.6.1.4.2.2 | Bug fixing(S1/2/3 bug fixes: 62) | 5d | 2009-11-02 A | 2009-11-06 A |  | 100% |  | Wang Jia; Zhu Zhen-Xing; Lei Juan; Liao Xue-Feng; Su Chun-Bo; Ma Zhi-Hui; Li Jia; Zhong Zi-Long; Meng De-Jun | 360h | 360h | 14,400 | 14,400 |
| 425 | 1.7.1.6.1.4.3 | **Cycle 8 (GOAL For Active Bugs: S1=0; S2<45; S3<59; S4+S5<14)** | 5d | 2009-11-09 A | 2009-11-13 A | 422, 424 | 100% |  |  | 375.83h | 375.83h | 15,033.24 | 15,033.24 |
| 426 | 1.7.1.6.1.4.3.1 | QA testing & bug verification | 5d | 2009-11-09 A | 2009-11-13 A |  | 100% |  | Wang Rui; Wu Li-Rong | 80h | 80h | 3,200 | 3,200 |
| 427 | 1.7.1.6.1.4.3.2 | Bug fixing(S1/2/3 bug fixes: 62) | 5d | 2009-11-09 A | 2009-11-13 A |  | 100% |  | Wang Jia; Zhu Zhen-Xing; Lei Juan; Liao Xue-Feng; Su Chun-Bo; Li Jia; Zhong Zi-Long; Meng De-Jun | 295.83h | 295.83h | 11,833.24 | 11,833.24 |

| ID | WBS | Task | Duration | Start | Finish | Predecessors | Complete | Remaining | Total slack | Resources | Work | Actual work | Cost | Actual cost |
| --- | --- | --- | --- | --- | --- | --- | --- | --- | --- | --- | --- | --- | --- | --- |
| 428 | 1.7.1.6.1.4.4 | **Cycle 9 (GOAL For Active Bugs: S1=0; S2<35; S3<54; S4+S5<11)** | 5d | 2009-11-16 A | 2009-11-20 A | 415, 425 | 100% |  |  |  | 374.88h | 374.88h | 14,995 | 14,995 |
| 429 | 1.7.1.6.1.4.4.1 | Ericsson ER Merge | 3d | 2009-11-16 A | 2009-11-18 A |  | 100% |  |  | Lei Juan | 24h | 24h | 960 | 960 |
| 430 | 1.7.1.6.1.4.4.2 | QA testing & bug verification | 5d | 2009-11-16 A | 2009-11-20 A |  | 100% |  |  | Geng Cheng; Wu Li-Rong | 80h | 80h | 3,200 | 3,200 |
| 431 | 1.7.1.6.1.4.4.3 | Bug fixing(S1/2/3 bug fixes: 62) | 5d | 2009-11-16 A | 2009-11-20 A |  | 100% |  |  | Wang Jia; Zhu Zhen-Xing; Liao Xue-Feng; Su Chun-Bo; Li Jia; Zhong Zi-Long; Meng De-Jun | 270.88h | 270.88h | 10,835 | 10,835 |
| 432 | 1.7.1.6.1.4.5 | **Cycle 10 (GOAL For Active Bugs: S1=0; S2<25; S3<49; S4+S5<8)** | 5d | 2009-11-23 A | 2009-11-27 A | 428 | 100% |  |  |  | 351.54h | 351.54h | 14,061.64 | 14,061.64 |
| 433 | 1.7.1.6.1.4.5.1 | QA testing & bug verification | 5d | 2009-11-23 A | 2009-11-27 A |  | 100% |  |  | Geng Cheng; Wu Li-Rong | 80h | 80h | 3,200 | 3,200 |
| 434 | 1.7.1.6.1.4.5.2 | Bug fixing(S1/2/3 bug fixes: 62) | 5d | 2009-11-23 A | 2009-11-27 A |  | 100% |  |  | Wang Jia; Zhu Zhen-Xing; Lei Juan; Liao Xue-Feng; Su Chun-Bo; Li Jia; Zhong Zi-Long | 271.54h | 271.54h | 10,861.64 | 10,861.64 |
| 435 | 1.7.2 | **QA Tasks** | 170d | 2009-07-27 A | 2010-04-09 |  | 88% | 20.42d | 114d |  | 7118.2h | 6381.5h | 283,448 | 253,980 |
| 436 | 1.7.2.1 | **Testing Preparation** | 34d | 2009-09-16 A | 2009-11-06 | 44 | 94% | 2.16d | 213d |  | 1017.6h | 897.6h | 39,424 | 34,624 |
| 437 | 1.7.2.1.1 | **Test Cases Design I** | 18d | 2009-09-16 A | 2009-10-15 | 396 | 93% | 1.29d | 229d |  | 881.6h | 761.6h | 35,264 | 30,464 |
| 438 | 1.7.2.1.1.1 | **Add UI new cases** | 10d | 2009-09-16 A | 2009-09-28 A |  | 100% |  |  |  | 160h | 160h | 6,400 | 6,400 |
| 439 | 1.7.2.1.1.1.1 | [ReqID 628]Help Desk | 3d | 2009-09-16 A | 2009-09-18 A |  | 100% |  |  | Gao Hang; Chen Xiu-Qiong | 48h | 48h | 1,920 | 1,920 |
| 440 | 1.7.2.1.1.1.2 | [ReqID 629]Device Groups | 3d | 2009-09-21 A | 2009-09-23 A | 439 | 100% |  |  | Gao Hang; Chen Xiu-Qiong | 48h | 48h | 1,920 | 1,920 |
| 441 | 1.7.2.1.1.1.3 | [ReqID 630]System Administration | 2d | 2009-09-24 A | 2009-09-25 A | 440 | 100% |  |  | Gao Hang; Chen Xiu-Qiong | 32h | 32h | 1,280 | 1,280 |
| 442 | 1.7.2.1.1.1.4 | [ReqID 631]Reporting | 2d | 2009-09-27 A | 2009-09-28 A | 441 | 100% |  |  | Gao Hang; Chen Xiu-Qiong | 32h | 32h | 1,280 | 1,280 |
| 443 | 1.7.2.1.1.2 | **Update UI cases** | 6d | 2009-09-29 A | 2009-10-13 A | 442 | 100% |  |  |  | 96h | 96h | 3,840 | 3,840 |
| 444 | 1.7.2.1.1.2.1 | [ReqID 628]Help Desk | 2d | 2009-09-29 A | 2009-09-30 A |  | 100% |  |  | Gao Hang; Chen Xiu-Qiong | 32h | 32h | 1,280 | 1,280 |
| 445 | 1.7.2.1.1.2.2 | [ReqID 629]Device Groups | 1d | 2009-10-09 A | 2009-10-09 A | 444 | 100% |  |  | Gao Hang; Chen Xiu-Qiong | 16h | 16h | 640 | 640 |
| 446 | 1.7.2.1.1.2.3 | [ReqID 630]System Administration | 2d | 2009-10-10 A | 2009-10-12 A | 445 | 100% |  |  | Gao Hang; Chen Xiu-Qiong | 32h | 32h | 1,280 | 1,280 |
| 447 | 1.7.2.1.1.2.4 | [ReqID 631]Reporting | 1d | 2009-10-13 A | 2009-10-13 A | 446 | 100% |  |  | Gao Hang; Chen Xiu-Qiong | 16h | 16h | 640 | 640 |
| 448 | 1.7.2.1.1.3 | **Add UI Performance cases** | 16d | 2009-09-16 A | 2009-10-13 A |  | 100% |  |  |  | 128h | 128h | 5,120 | 5,120 |
| 449 | 1.7.2.1.1.3.1 | [ReqID 628]Help Desk | 5d | 2009-09-16 A | 2009-09-22 A |  | 100% |  |  | Xu Yan | 40h | 40h | 1,600 | 1,600 |
| 450 | 1.7.2.1.1.3.2 | [ReqID 629]Device Groups | 5d | 2009-09-23 A | 2009-09-28 A | 449 | 100% |  |  | Xu Yan | 40h | 40h | 1,600 | 1,600 |
| 451 | 1.7.2.1.1.3.3 | [ReqID 630]System Administration | 4d | 2009-09-29 A | 2009-10-10 A | 450 | 100% |  |  | Xu Yan | 32h | 32h | 1,280 | 1,280 |
| 452 | 1.7.2.1.1.3.4 | [ReqID 631]Reporting | 2d | 2009-10-12 A | 2009-10-13 A | 451 | 100% |  |  | Xu Yan | 16h | 16h | 640 | 640 |

| ID | WBS | Task | Type | Duration | Start | Finish | Predecessors | Complete | Total slack | Resources | Work | Actual work | Cost | Actual cost |
| --- | --- | --- | --- | --- | --- | --- | --- | --- | --- | --- | --- | --- | --- | --- |
| 453 | 1.7.2.1.1.4 | **Update all E2E cases** |  | 16d | 2009-09-16 A | 2009-10-13 A |  | 100% |  |  | 345.6h | 345.6h | 13,824 | 13,824 |
| 454 | 1.7.2.1.1.4.1 | Single Operations |  | 10d | 2009-09-16 A | 2009-09-28 A |  | 100% |  | Chen Guo-Na; Liu Qing-Bo [50%]; Sun Lei [70%]; Wang Ji-Zhong [50%] | 216h | 216h | 8,640 | 8,640 |
| 455 | 1.7.2.1.1.4.2 | Bulk Operations |  | 6d | 2009-09-29 A | 2009-10-13 A | 454 | 100% |  | Chen Guo-Na; Liu Qing-Bo [50%]; Sun Lei [70%]; Wang Ji-Zhong [50%] | 129.6h | 129.6h | 5,184 | 5,184 |
| 456 | 1.7.2.1.1.5 | **UI Test Cases Intenal review** |  | 5d | 2009-10-09 A | 2009-10-14 A |  | 100% |  |  | 32h | 32h | 1,280 | 1,280 |
| 457 | 1.7.2.1.1.5.1 | [ReqID 628]Help Desk |  | 1d | 2009-10-09 A | 2009-10-09 A | 444 | 100% |  | Liu Qing-Bo [50%]; Wang Ji-Zhong [50%] | 8h | 8h | 320 | 320 |
| 458 | 1.7.2.1.1.5.2 | [ReqID 629]Device Groups |  | 1d | 2009-10-10 A | 2009-10-10 A | 445 | 100% |  | Liu Qing-Bo [50%]; Wang Ji-Zhong [50%] | 8h | 8h | 320 | 320 |
| 459 | 1.7.2.1.1.5.3 | [ReqID 630]System Administration |  | 1d | 2009-10-13 A | 2009-10-13 A | 446 | 100% |  | Liu Qing-Bo [50%]; Wang Ji-Zhong [50%] | 8h | 8h | 320 | 320 |
| 460 | 1.7.2.1.1.5.4 | [ReqID 631]Reporting |  | 1d | 2009-10-14 A | 2009-10-14 A | 447 | 100% |  | Liu Qing-Bo [50%]; Wang Ji-Zhong [50%] | 8h | 8h | 320 | 320 |
| 461 | 1.7.2.1.1.6 | **UI Test Cases External review** |  | 5d | 2009-10-10 | 2009-10-15 |  |  | 229d | PS; DEV; PM | 120h |  | 4,800 |  |
| 462 | 1.7.2.1.1.6.1 | [ReqID 628]Help Desk |  | 1d | 2009-10-10 | 2009-10-10 | 457 |  | 233d |  |  |  |  |  |
| 463 | 1.7.2.1.1.6.2 | [ReqID 629]Device Groups |  | 1d | 2009-10-12 | 2009-10-12 | 458 |  | 232d |  |  |  |  |  |
| 464 | 1.7.2.1.1.6.3 | [ReqID 630]System Administration |  | 1d | 2009-10-14 | 2009-10-14 | 459 |  | 230d |  |  |  |  |  |
| 465 | 1.7.2.1.1.6.4 | [ReqID 631]Reporting |  | 1d | 2009-10-15 | 2009-10-15 | 460 |  | 229d |  |  |  |  |  |
| 466 | 1.7.2.1.2 | **Test Cases Design II** |  | 0d | 2009-11-06 A | 2009-11-06 A | 710 | 100% |  |  |  |  |  |  |
| 467 | 1.7.2.1.2.1 | **Add UI new cases** |  | 0d | 2009-11-06 A | 2009-11-06 A |  | 100% |  |  |  |  |  |  |
| 468 | 1.7.2.1.2.1.1 | [ReqID 628]Help Desk(Symbian UIQ, SE, CDMA,Windows Native, Symbian S40, BlackBerry, P2K) | milestone | 0d | 2009-11-06 A | 2009-11-06 A |  | 100% |  | Chen Guo-Na; Chen Xiu-Qiong; Gao Hang; Liu Qing-Bo |  |  |  |  |
| 469 | 1.7.2.1.2.1.2 | [ReqID 629]Device Groups(Symbian UIQ, SE, CDMA,Windows Native, Symbian S40, BlackBerry, P2K) | milestone | 0d | 2009-11-06 A | 2009-11-06 A | 468 | 100% |  | Gao Hang; Chen Xiu-Qiong; Chen Guo-Na; Liu Qing-Bo |  |  |  |  |
| 470 | 1.7.2.1.2.2 | **Update UI cases** |  | 0d | 2009-11-06 A | 2009-11-06 A | 467 | 100% |  |  |  |  |  |  |
| 471 | 1.7.2.1.2.2.1 | [ReqID 628]Help Desk(Symbian UIQ, SE, CDMA,Windows Native, Symbian S40, BlackBerry, P2K) | milestone | 0d | 2009-11-06 A | 2009-11-06 A |  | 100% |  | Gao Hang [50%]; Chen Xiu-Qiong [50%] |  |  |  |  |
| 472 | 1.7.2.1.2.2.2 | [ReqID 629]Device Groups(Symbian UIQ, SE, CDMA,Windows Native, Symbian S40, BlackBerry, P2K) | milestone | 0d | 2009-11-06 A | 2009-11-06 A |  | 100% |  | Gao Hang [50%]; Chen Xiu-Qiong [50%] |  |  |  |  |
| 473 | 1.7.2.1.2.3 | **UI Test Cases Intenal review** |  | 0d | 2009-11-06 A | 2009-11-06 A |  | 100% |  |  |  |  |  |  |
| 474 | 1.7.2.1.2.3.1 | [ReqID 628]Help Desk(Symbian UIQ, SE, CDMA,Windows Native, Symbian S40, BlackBerry, P2K) | milestone | 0d | 2009-11-06 A | 2009-11-06 A | 468 | 100% |  | Liu Qing-Bo; Wang Ji-Zhong |  |  |  |  |
| 475 | 1.7.2.1.2.3.2 | [ReqID 629]Device Groups(Symbian UIQ, SE, CDMA,Windows Native, Symbian S40, BlackBerry, P2K) | milestone | 0d | 2009-11-06 A | 2009-11-06 A | 469 | 100% |  | Liu Qing-Bo; Wang Ji-Zhong |  |  |  |  |
| 476 | 1.7.2.1.2.4 | **UI Test Cases External review** |  | 0d | 2009-11-06 A | 2009-11-06 A | 473 | 100% |  | PS; DEV; PM |  |  |  |  |
| 477 | 1.7.2.1.2.4.1 | [ReqID 628]Help Desk(Symbian UIQ, SE, CDMA,Windows Native, Symbian S40, BlackBerry, P2K) | milestone | 0d | 2009-11-06 A | 2009-11-06 A |  | 100% |  |  |  |  |  |  |
| 478 | 1.7.2.1.2.4.2 | [ReqID 629]Device Groups(Symbian UIQ, SE, CDMA,Windows Native, Symbian S40, BlackBerry, P2K) | milestone | 0d | 2009-11-06 A | 2009-11-06 A |  | 100% |  |  |  |  |  |  |
| 479 | 1.7.2.1.3 | Test Cases Structure |  | 3d | 2009-10-15 A | 2009-10-19 A | 456 | 100% |  | Gao Hang; Chen Xiu-Qiong; Liu Qing-Bo | 72h | 72h | 2,880 | 2,880 |

| ID | WBS | Task | Type | Duration | Start | Finish | Predecessors | Complete | Remaining | Total slack | Constraint | Resources | Work | Actual work | Cost | Actual cost |
| --- | --- | --- | --- | --- | --- | --- | --- | --- | --- | --- | --- | --- | --- | --- | --- | --- |
| 480 | 1.7.2.1.4 | **Environment Preparation** |  | 4d | 2009-10-14 A | 2009-10-19 A | 448 | 100% |  |  |  | Xu Yan | 64h | 64h | 1,280 | 1,280 |
| 481 | 1.7.2.1.4.1 | [ReqID 581]High Availability |  | 1d | 2009-10-14 A | 2009-10-14 A |  | 100% |  |  |  |  | 8h | 8h |  |  |
| 482 | 1.7.2.1.4.2 | **[ReqID 458]QA Testing environment to mimic production** |  | 2d | 2009-10-15 A | 2009-10-16 A | 481 | 100% |  |  |  |  | 16h | 16h |  |  |
| 483 | 1.7.2.1.4.2.1 | Weblogic Server Upgrade |  | 0.1d | 2009-10-15 A | 2009-10-15 A |  | 100% |  |  |  |  | 0.8h | 0.8h |  |  |
| 484 | 1.7.2.1.4.2.2 | JDK Upgrade |  | 0.1d | 2009-10-15 A | 2009-10-15 A | 483 | 100% |  |  |  |  | 0.8h | 0.8h |  |  |
| 485 | 1.7.2.1.4.2.3 | OpenLDAP Server Setup |  | 0.8d | 2009-10-15 A | 2009-10-15 A | 484 | 100% |  |  |  |  | 6.4h | 6.4h |  |  |
| 486 | 1.7.2.1.4.2.4 | WDS Server Setup | milestone | 0d | 2009-10-15 A | 2009-10-15 A | 485 | 100% |  |  |  |  |  |  |  |  |
| 487 | 1.7.2.1.4.2.5 | Proxy Server Setup |  | 1d | 2009-10-16 A | 2009-10-16 A | 486 | 100% |  |  |  |  | 8h | 8h |  |  |
| 488 | 1.7.2.1.4.3 | [ReqID 317]Performance Server Setup |  | 1d | 2009-10-19 A | 2009-10-19 A | 487 | 100% |  |  |  |  | 8h | 8h |  |  |
| 489 | 1.7.2.2 | **QA Automation Testing (BVT + WS API + Backend API)** |  | 170d | 2009-07-27 A | 2010-04-09 |  | 87% | 21.46d | 114d |  |  | 6100.6h | 5483.9h | 244,024 | 219,356 |
| 490 | 1.7.2.2.1 | **Milestones** |  | 80d | 2009-09-09 A | 2009-12-31 A |  | 100% |  |  |  |  |  |  |  |  |
| 491 | 1.7.2.2.1.1 | Backend API automation - output 50 cases per week | milestone | 0d | 2009-12-31 A | 2009-12-31 A | 499 | 100% |  |  |  |  |  |  |  |  |
| 492 | 1.7.2.2.1.2 | Backend API automation coverages 200 APIs | milestone | 0d | 2009-12-31 A | 2009-12-31 A | 500 | 100% |  |  | start no earlier than 2009-12-10 |  |  |  |  |  |
| 493 | 1.7.2.2.1.3 | NewUI minimal BVT online (Check login and logout) | milestone | 0d | 2009-09-09 A | 2009-09-09 A | 533 | 100% |  |  | start no earlier than 2009-09-09 |  |  |  |  |  |
| 494 | 1.7.2.2.1.4 | NewUI BVT framework online | milestone | 0d | 2009-09-25 A | 2009-09-25 A | 523 | 100% |  |  | start no earlier than 2009-09-25 |  |  |  |  |  |
| 495 | 1.7.2.2.1.5 | NewUI BVT tests enlarging (30 sanity cases) | milestone | 0d | 2009-12-22 A | 2009-12-22 A | 526 | 100% |  |  | start no earlier than 2009-12-10 |  |  |  |  |  |
| 496 | 1.7.2.2.1.6 | Original WS API automation testing on NewUI branch | milestone | 0d | 2009-12-22 A | 2009-12-22 A | 506 | 100% |  |  | start no earlier than 2009-09-25 |  |  |  |  |  |
| 497 | 1.7.2.2.1.7 | Original WS API automation testing on trunk | milestone | 0d | 2009-10-30 A | 2009-10-30 A | 508 | 100% |  |  | start no earlier than 2009-10-29 |  |  |  |  |  |
| 498 | 1.7.2.2.2 | **WS API & Backend API Automation Testing** |  | 132d | 2009-09-07 A | 2010-03-29 |  | 86% | 18.26d | 122d |  |  | 3365.6h | 3022.4h | 134,624 | 120,896 |
| 499 | 1.7.2.2.2.1 | **Part-I Backend API automation testing** |  | 82d | 2009-09-07 A | 2009-12-31 A |  | 100% |  |  |  |  | 1900h | 1900h | 76,000 | 76,000 |
| 500 | 1.7.2.2.2.1.1 | Reach WS Case Output rate - 50 cases per week |  | 82d | 2009-09-07 A | 2009-12-31 A |  | 100% |  |  | start no earlier than 2009-09-07 | Yin Yu-Mei; Liu Ying; Bao Ning | 1900h | 1900h | 76,000 | 76,000 |
| 501 | 1.7.2.2.2.1.2 | Achieve total 600 cases (Covers 200 API) | milestone | 0d | 2009-12-31 A | 2009-12-31 A | 500 | 100% |  |  |  |  |  |  |  |  |
| 502 | 1.7.2.2.2.2 | **Part-II The original WS API testing on NewUI branch (550 cases)** |  | 34d | 2009-11-09 A | 2009-12-22 A |  | 100% |  |  |  |  | 757.6h | 757.6h | 30,304 | 30,304 |
| 503 | 1.7.2.2.2.2.1 | Data Precondition - Rewrite public functions of NewUI |  | 15d | 2009-11-09 A | 2009-11-27 A |  | 100% |  |  | start no earlier than 2009-11-09 | Li; He-Xiong [10%]; Yin Yu-Mei [20%]; Lv Ping [20%] | 180h | 180h | 7,200 | 7,200 |
| 504 | 1.7.2.2.2.2.2 | Integrate the NewUI Preconditon with case scripts |  | 10d | 2009-11-30 A | 2009-12-11 A | 503 | 100% |  |  |  | Liu; Ying [20%]; Lv Ping [20%]; Bao; Ning [20%]; Yang; Jing [20%] | 304h | 304h | 12,160 | 12,160 |
| 505 | 1.7.2.2.2.2.3 | First Web Service API testing cycle before Alpha build |  | 2d | 2009-12-12 A | 2009-12-13 A | 504 | 100% |  |  |  | Liu; Ying [20%]; Lv Ping [20%]; Bao; Ning [20%]; Yang; Jing [20%] | 60.8h | 60.8h | 2,432 | 2,432 |
| 506 | 1.7.2.2.2.2.4 | Code updating for whole Web Service API automation on NewUI |  | 7d | 2009-12-14 A | 2009-12-22 A | 505 | 100% |  |  | finish no earlier than 2009-12-22 | Liu; Ying [20%]; Lv Ping [20%]; Bao; Ning [20%]; Yang; Jing [20%] | 212.8h | 212.8h | 8,512 | 8,512 |

| ID | WBS | Task | Type | Duration | Start | Finish | Predecessors | Complete | Remaining | Total slack | Free slack | Constraint | Resources | Work | Actual work | Cost | Actual cost |
| --- | --- | --- | --- | --- | --- | --- | --- | --- | --- | --- | --- | --- | --- | --- | --- | --- | --- |
| 507 | 1.7.2.2.2.3 | **Part-III The original WS API testing on trunk** |  | 60d | 2009-09-27 A | 2009-12-22 |  | 99% | 0d | 179d |  |  |  | 206.4h | 206.4h | 8,256 | 8,256 |
| 508 | 1.7.2.2.2.3.1 | Update scripts according to trunk status |  | 10d | 2009-10-19 A | 2009-10-30 A |  | 100% |  |  |  | start no earlier than 2009-10-19 | Yang Jing [30%]; Liu Ying [20%] | 40h | 40h | 1,600 | 1,600 |
| 509 | 1.7.2.2.2.3.2 | Integration testing |  | 5d | 2009-11-02 A | 2009-11-06 A | 508 | 100% |  |  |  |  | Yang Jing [20%]; Peng Sheng-Kui [10%] | 12h | 12h | 480 | 480 |
| 510 | 1.7.2.2.2.3.3 | QTP WS testing is ready for trunk | milestone | 0d | 2009-11-06 | 2009-11-06 | 509 |  |  | 213d |  |  |  |  |  |  |  |
| 511 | 1.7.2.2.2.3.4 | Maintenance the daily execution until merging |  | 34d | 2009-11-09 A | 2009-12-22 A | 510 | 100% |  |  |  | start no earlier than 2009-09-07 | Yang Jing [14.1%] | 38.4h | 38.4h | 1,536 | 1,536 |
| 512 | 1.7.2.2.2.3.5 | Bug Verification |  | 60d | 2009-09-27 A | 2009-12-22 A |  | 100% |  |  |  | start no earlier than 2009-09-27 | Yang Jing [25%] | 116h | 116h | 4,640 | 4,640 |
| 513 | 1.7.2.2.2.4 | **Part-IV WS Automation Testing Execution** |  | 57d | 2009-12-23 A | 2010-03-29 |  | 32% | 39d | 122d |  |  |  | 501.6h | 158.4h | 20,064 | 6,336 |
| 514 | 1.7.2.2.2.4.1 | Integration testing and scripts updating after merge |  | 5d | 2009-12-23 A | 2009-12-29 A | 512 | 100% |  |  |  | start no earlier than 2009-12-23 | Yang Jing [10%]; Liu Ying | 44h | 44h | 1,760 | 1,760 |
| 515 | 1.7.2.2.2.4.2 | Maintenance the daily execution until GA (550 Cases) |  | 52d | 2009-12-30 A | 2010-03-29 | 514 | 25% | 39d | 122d | 0d |  | Liu Ying; Yang Jing [10%] | 457.6h | 114.4h | 18,304 | 4,576 |
| 516 | 1.7.2.2.2.4.3 | WS Test Reporting (Sync up with function test cycle) | milestone | 0d | 2010-03-29 | 2010-03-29 | 515 |  |  | 122d |  | start no earlier than 2010-03-29 | Liu Ying [10%]; Yin Yu-Mei [10%] |  |  |  |  |
| 517 | 1.7.2.2.3 | **BVT for Flex UI (30 cases, include 6 E2E cases)** |  | 170d | 2009-07-27 A | 2010-04-09 |  | 89% | 19.52d | 114d |  |  |  | 2735h | 2461.5h | 109,400 | 98,460 |
| 518 | 1.7.2.2.3.1 | **Part-I New UI BVT** |  | 170d | 2009-07-27 A | 2010-04-09 |  | 86% | 23.09d | 114d |  |  |  | 2168h | 1983.25h | 86,720 | 79,330 |
| 519 | 1.7.2.2.3.1.1 | Be familiar with BVT cases and MMC server functions |  | 5d | 2009-07-27 A | 2009-07-31 A |  | 100% |  |  |  | start no earlier than 2009-07-27 | Li He-Xiong; Lv Ping | 80h | 80h | 3,200 | 3,200 |
| 520 | 1.7.2.2.3.1.2 | Be familiar with New UI structure |  | 2d | 2009-08-03 A | 2009-08-04 A | 519 | 100% |  |  |  |  | Li He-Xiong; Lv Ping | 32h | 32h | 1,280 | 1,280 |
| 521 | 1.7.2.2.3.1.3 | Flex UI Automation Solution (QTP, Selenium, Flex Unit, etc.) |  | 20d | 2009-08-05 A | 2009-09-01 A | 520 | 100% |  |  |  |  | Li He-Xiong; Lv Ping | 320h | 320h | 12,800 | 12,800 |
| 522 | 1.7.2.2.3.1.4 | Build up automation framework and public functions |  | 15d | 2009-09-02 A | 2009-09-22 A | 521 | 100% |  |  |  |  | Li He-Xiong; Lv Ping | 240h | 240h | 9,600 | 9,600 |
| 523 | 1.7.2.2.3.1.5 | NewUI BVT framework online |  | 3d | 2009-09-23 A | 2009-09-25 A | 522 | 100% |  |  |  |  | Li He-Xiong; Lv Ping | 48h | 48h | 1,920 | 1,920 |
| 524 | 1.7.2.2.3.1.6 | BVT Case output - First 15 cases |  | 20d | 2009-09-27 A | 2009-10-29 A | 523 | 100% |  |  |  |  | Li He-Xiong; Lv Ping | 320h | 320h | 12,800 | 12,800 |
| 525 | 1.7.2.2.3.1.7 | BVT Case output - Another 15 cases |  | 28d | 2009-10-30 A | 2009-12-08 A | 524 | 100% |  |  |  |  | Li He-Xiong; Lv Ping | 448h | 448h | 17,920 | 17,920 |
| 526 | 1.7.2.2.3.1.8 | Integration testing |  | 12d | 2009-12-09 A | 2009-12-22 A | 525 | 100% |  |  |  |  | Li He-Xiong; Lv Ping | 160h | 160h | 6,400 | 6,400 |
| 527 | 1.7.2.2.3.1.9 | NewUI BVT 30 cases online | milestone | 0d | 2009-12-22 A | 2009-12-22 A | 526 | 100% |  |  |  |  | Li He-Xiong; Lv Ping |  |  |  |  |
| 528 | 1.7.2.2.3.1.10 | Maintenance the daily execution until GA |  | 65d | 2009-12-23 A | 2010-04-09 | 527 | 64% | 23.09d | 114d |  |  | Li He-Xiong [50%]; Lv Ping [50%] | 520h | 335.25h | 20,800 | 13,410 |
| 529 | 1.7.2.2.3.2 | **Part-II MMC4.6 BVT runs on trunk/branches** |  | 72.75d | 2009-09-10 A | 2009-12-23 A |  | 100% |  |  |  |  |  | 123h | 123h | 4,920 | 4,920 |
| 530 | 1.7.2.2.3.2.1 | Maintenance the daily execution until merge |  | 72.75d | 2009-09-10 A | 2009-12-23 A |  | 100% |  |  |  |  | Yang Jing [97.2%] | 123h | 123h | 4,920 | 4,920 |

| ID | WBS | Task | Duration | Start | Finish | Predecessors | Complete | Remaining | Total slack | Free slack | Constraint | Resources | Work | Actual work | Cost | Actual cost |
| --- | --- | --- | --- | --- | --- | --- | --- | --- | --- | --- | --- | --- | --- | --- | --- | --- |
| 531 | 1.7.2.2.3.3 | **Part-III New UI BVT Case Enlarging** | 53d | 2009-12-23 A | 2010-03-23 |  | 79% | 11.09d | 126d |  |  |  | 424h | 335.25h | 16,960 | 13,410 |
| 532 | 1.7.2.2.3.3.1 | BVT test coverage enlarging (adds more cases) until Beta | 53d | 2009-12-23 A | 2010-03-23 | 527 | 79% | 11.09d | 126d |  |  | Lv Ping [50%]; Li He-Xiong [50%] | 424h | 335.25h | 16,960 | 13,410 |
| 533 | 1.7.2.2.3.4 | Part-IV A minimal BVT for NewUI early build (login and logout) | 2d | 2009-09-07 A | 2009-09-08 A |  | 100% |  |  |  | start no earlier than 2009-09-03 | Lv Ping; Yang Jing | 20h | 20h | 800 | 800 |
| 534 | 1.8 | **Iteration I - Implementation** | 63d | 2009-08-27 A | 2009-11-27 |  | 99% | 0d | 198d | 0d |  |  | 5113.83h | 5113.83h | 195,273.12 | 195,273.12 |
| 535 | 1.8.1 | **Development** | 34d | 2009-08-27 A | 2009-10-19 |  | 99% | 0d | 227d |  |  |  | 2649.83h | 2649.83h | 105,673.12 | 105,673.12 |
| 536 | 1.8.1.1 | **IOP** | 17d | 2009-09-18 A | 2009-10-16 A |  | 100% |  |  |  |  |  | 529.6h | 529.6h | 21,184 | 21,184 |
| 537 | 1.8.1.1.1 | **Release parameters list v4.0 (Completed all columns in parameters list )** | 5d | 2009-09-18 A | 2009-09-24 A |  | 100% |  |  |  |  | Device Certification Team | 480h | 480h | 19,200 | 19,200 |
| 538 | 1.8.1.1.1.1 | Active Sync/Mail for Exchange Server | 5d | 2009-09-18 A | 2009-09-24 A |  | 100% |  |  |  | start no earlier than 2009-09-18 | Zhang Peng-Fei | 40h | 40h | 1,600 | 1,600 |
| 539 | 1.8.1.1.1.2 | Data Sync/DMAcc | 5d | 2009-09-18 A | 2009-09-24 A |  | 100% |  |  |  | start no earlier than 2009-09-18 | Li Bo | 40h | 40h | 1,600 | 1,600 |
| 540 | 1.8.1.1.1.3 | Email/MMS | 5d | 2009-09-18 A | 2009-09-24 A |  | 100% |  |  |  | start no earlier than 2009-09-18 | Lu Yue; Zhou Wen-Ping | 80h | 80h | 3,200 | 3,200 |
| 541 | 1.8.1.1.1.4 | NAP/PROXY | 5d | 2009-09-18 A | 2009-09-24 A |  | 100% |  |  |  | start no earlier than 2009-09-18 | Liu Yu | 40h | 40h | 1,600 | 1,600 |
| 542 | 1.8.1.1.1.5 | WIFI/VPN | 5d | 2009-09-18 A | 2009-09-24 A |  | 100% |  |  |  | start no earlier than 2009-09-18 | Zhao Wen-Xiu | 40h | 40h | 1,600 | 1,600 |
| 543 | 1.8.1.1.1.6 | VoIP/SIP/SMS | 5d | 2009-09-18 A | 2009-09-24 A |  | 100% |  |  |  | start no earlier than 2009-09-18 | Yu Qiu-Lian; Fu Xing-Qiong | 80h | 80h | 3,200 | 3,200 |
| 544 | 1.8.1.1.1.7 | IM/Browser | 5d | 2009-09-18 A | 2009-09-24 A |  | 100% |  |  |  | start no earlier than 2009-09-18 | Wan Li-Li; Xie ZhongSheng | 80h | 80h | 3,200 | 3,200 |
| 545 | 1.8.1.1.1.8 | CDMA Features | 5d | 2009-09-18 A | 2009-09-24 A |  | 100% |  |  |  | start no earlier than 2009-09-18 | Gong Zhi | 40h | 40h | 1,600 | 1,600 |
| 546 | 1.8.1.1.2 | **MAPPING FILES** | 4d | 2009-09-28 A | 2009-10-09 A |  | 100% |  |  |  |  |  | 9.6h | 9.6h | 384 | 384 |
| 547 | 1.8.1.1.2.1 | Modify mapping file to support NEW UI | 2d | 2009-09-28 A | 2009-09-29 A |  | 100% |  |  |  | start no earlier than 2009-09-28 | Gong Zhi [30%] | 4.8h | 4.8h | 192 | 192 |
| 548 | 1.8.1.1.2.2 | Merge all MMC 4.5.x mapping files to MMC 4.6 NEW UI | 2d | 2009-09-30 A | 2009-10-09 A | 547 | 100% |  |  |  |  | Gong Zhi [30%] | 4.8h | 4.8h | 192 | 192 |
| 549 | 1.8.1.1.3 | **DEVICE ADAPTOR ON MMC 4.6** | 5d | 2009-10-12 A | 2009-10-16 A |  | 100% |  |  |  |  |  | 40h | 40h | 1,600 | 1,600 |
| 550 | 1.8.1.1.3.1 | HP MMA Adaptor | 5d | 2009-10-12 A | 2009-10-16 A |  | 100% |  |  |  | start no earlier than 2009-10-09 | Zhao Wen-Xiu | 40h | 40h | 1,600 | 1,600 |
| 551 | 1.8.1.2 | **Backend APIs** | 26d | 2009-08-27 A | 2009-09-30 A |  | 100% |  |  |  |  |  | 686.63h | 686.63h | 27,465.12 | 27,465.12 |
| 552 | 1.8.1.2.1 | **Design and Implementation** | 26d | 2009-08-27 A | 2009-09-30 A |  | 100% |  |  |  |  |  | 686.63h | 686.63h | 27,465.12 | 27,465.12 |
| 553 | 1.8.1.2.1.1 | **Phase II** | 17d | 2009-08-27 A | 2009-09-18 A |  | 100% |  |  |  |  |  | 434.56h | 434.56h | 17,382.4 | 17,382.4 |
| 554 | 1.8.1.2.1.1.1 | **System Adminstration** | 7d | 2009-09-03 A | 2009-09-11 A |  | 100% |  |  |  |  |  | 39.36h | 39.36h | 1,574.4 | 1,574.4 |
| 555 | 1.8.1.2.1.1.1.1 | ReqID (693) - Firmware Packages | 6d | 2009-09-03 A | 2009-09-11 A |  | 100% |  |  |  | finish no earlier than 2009-09-11 | Liao Qin-Qin | 39.36h | 39.36h | 1,574.4 | 1,574.4 |

Notes:
- 551: Needs further estimations on moving business logic from presentation layer to back-end, it's more like another refactoring our code. The rough estimations on mandays will be provided by Jul. 15th. / The WBS should be aligned with the low level design from new UI project GDCC guys.

| ID | WBS | Task | Type | Duration | Start | Finish | Predecessors | Complete | Constraint | Resources | Work | Actual work | Cost | Actual cost |
| --- | --- | --- | --- | --- | --- | --- | --- | --- | --- | --- | --- | --- | --- | --- |
| 556 | 1.8.1.2.1.1.2 | **Help Desk** |  | 17d | 2009-08-27 A | 2009-09-18 A |  | 100% |  |  | 247.2h | 247.2h | 9,888 | 9,888 |
| 557 | 1.8.1.2.1.1.2.1 | HelpDesk requirement change review & reestimation |  | 5d | 2009-08-27 A | 2009-09-02 A |  | 100% | start no earlier than 2009-08-27 | Zhong Zi-Long; Meng De-Jun | 80h | 80h | 3,200 | 3,200 |
| 558 | 1.8.1.2.1.1.2.2 | ReqID (640) - Search (Help Desk Search Main Page) |  | 2d | 2009-09-03 A | 2009-09-04 A | 557 | 100% |  | Zhong Zi-Long [33%]; Meng De-Jun [33%] | 10.56h | 10.56h | 422.4 | 422.4 |
| 559 | 1.8.1.2.1.1.2.3 | ReqID (641) - Search > DeviceDetails (reference ReqID 648) |  | 1d | 2009-09-07 A | 2009-09-07 A | 558 | 100% |  | Zhong Zi-Long [33%]; Meng De-Jun [33%] | 5.28h | 5.28h | 211.2 | 211.2 |
| 560 | 1.8.1.2.1.1.2.4 | ReqID (???) - DeviceUser Details |  | 2d | 2009-09-08 A | 2009-09-09 A | 559 | 100% |  | Zhong Zi-Long [33%]; Meng De-Jun [33%] | 10.56h | 10.56h | 422.4 | 422.4 |
| 561 | 1.8.1.2.1.1.2.5 | ReqID (643) - Search > DeviceDetails > Get Device Profile |  | 1d | 2009-09-03 A | 2009-09-03 A | 557 | 100% | start no earlier than 2009-08-18 | Zhong Zi-Long [33%]; Meng De-Jun [33%] | 5.28h | 5.28h | 211.2 | 211.2 |
| 562 | 1.8.1.2.1.1.2.6 | ReqID (644) - Search > DeviceDetails > Enforce Settings |  | 2d | 2009-09-04 A | 2009-09-07 A | 561 | 100% |  | Zhong Zi-Long [33%]; Meng De-Jun [33%] | 10.56h | 10.56h | 422.4 | 422.4 |
| 563 | 1.8.1.2.1.1.2.7 | ReqID (645) - Search > DeviceDetails > Diagnose my device |  | 2d | 2009-09-08 A | 2009-09-09 A | 562 | 100% |  | Zhong Zi-Long [33%]; Meng De-Jun [33%] | 10.56h | 10.56h | 422.4 | 422.4 |
| 564 | 1.8.1.2.1.1.2.8 | ReqID (646) - HelpDesk ->Search > DeviceDetails > Update software |  | 1d | 2009-09-10 A | 2009-09-10 A | 563 | 100% |  | Zhong Zi-Long [50%]; Meng De-Jun [50%] | 8h | 8h | 320 | 320 |
| 565 | 1.8.1.2.1.1.2.9 | ReqID (647) - HelpDesk ->Search > DeviceDetails > Lock & Wipe |  | 2d | 2009-09-11 A | 2009-09-14 A | 564 | 100% |  | Zhong Zi-Long [50%]; Meng De-Jun [50%] | 16h | 16h | 640 | 640 |
| 566 | 1.8.1.2.1.1.2.10 | ReqID (654) - HelpDesk ->Search > DeviceDetails > Transaction Details |  | 2d | 2009-09-15 A | 2009-09-16 A | 565 | 100% |  | Zhong Zi-Long [50%]; Meng De-Jun [50%] | 16h | 16h | 640 | 640 |
| 567 | 1.8.1.2.1.1.2.11 | ReqID (921) - HelpDesk ->Search > DeviceDetails > SMS Provisioning |  | 2d | 2009-09-17 A | 2009-09-18 A | 566 | 100% |  | Zhong Zi-Long [50%]; Meng De-Jun [50%] | 16h | 16h | 640 | 640 |
| 568 | 1.8.1.2.1.1.2.12 | ReqID (922) - HelpDesk ->Search > DeviceDetails > Bootstrap Device |  | 2d | 2009-09-03 A | 2009-09-04 A | 557 | 100% |  | Zhong Zi-Long [33%]; Meng De-Jun [33%] | 10.56h | 10.56h | 422.4 | 422.4 |
| 569 | 1.8.1.2.1.1.2.13 | ReqID (785) - Edit Device |  | 1d | 2009-09-07 A | 2009-09-07 A | 568 | 100% |  | Zhong Zi-Long [33%]; Meng De-Jun [33%] | 5.28h | 5.28h | 211.2 | 211.2 |
| 570 | 1.8.1.2.1.1.2.14 | ReqID (771) - HelpDesk -> Add Device user (Help Desk Search > Add Device User) |  | 2d | 2009-09-08 A | 2009-09-09 A | 569 | 100% | start no earlier than 2009-06-24 | Zhong Zi-Long [33%]; Meng De-Jun [33%] | 10.56h | 10.56h | 422.4 | 422.4 |
| 571 | 1.8.1.2.1.1.2.15 | ReqID (772) - HelpDesk ->Search > Edit/Delete selected device user |  | 1d | 2009-09-10 A | 2009-09-10 A | 570 | 100% |  | Zhong Zi-Long [50%]; Meng De-Jun [50%] | 8h | 8h | 320 | 320 |
| 572 | 1.8.1.2.1.1.2.16 | ReqID (773) - HelpDesk ->Search > DeviceDetails > Add Device to Device User |  | 2d | 2009-09-11 A | 2009-09-14 A | 571 | 100% |  | Zhong Zi-Long [50%]; Meng De-Jun [50%] | 16h | 16h | 640 | 640 |
| 573 | 1.8.1.2.1.1.2.17 | ReqID (774) - HelpDesk ->Search > DeviceDetails > View/Delete selected device |  | 1d | 2009-09-15 A | 2009-09-15 A | 572 | 100% |  | Zhong Zi-Long [50%]; Meng De-Jun [50%] | 8h | 8h | 320 | 320 |
| 574 | 1.8.1.2.1.1.3 | **Device Groups** |  | 10d | 2009-09-07 A | 2009-09-18 A |  | 100% |  |  | 148h | 148h | 5,920 | 5,920 |
| 575 | 1.8.1.2.1.1.3.1 | ReqID (661) - Device Groups > Root > Search (Same under HelpDesk) | milestone | 0d | 2009-09-15 A | 2009-09-15 A | 573 | 100% |  | Zhong Zi-Long; Meng De-Jun |  |  |  |  |
| 576 | 1.8.1.2.1.1.3.2 | ReqID (662) - Device Groups > Root > Add New Device User > (Same under HelpDesk) |  | 1d | 2009-09-16 A | 2009-09-16 A | 575 | 100% |  | Zhong Zi-Long; Meng De-Jun [50%] | 12h | 12h | 480 | 480 |
| 577 | 1.8.1.2.1.1.3.3 | ReqID (663) - Device Groups > Root > Add New Device User > Add Manually (Same under HelpDesk) |  | 1d | 2009-09-17 A | 2009-09-17 A | 576 | 100% |  | Zhong Zi-Long; Meng De-Jun [50%] | 12h | 12h | 480 | 480 |
| 578 | 1.8.1.2.1.1.3.4 | ReqID (665) - Device Groups > Root > Add New Device User > Import (Same under HelpDesk) |  | 1d | 2009-09-18 A | 2009-09-18 A | 577 | 100% |  | Zhong Zi-Long; Meng De-Jun [50%] | 12h | 12h | 480 | 480 |
| 579 | 1.8.1.2.1.1.3.5 | ReqID (666) - Device Groups > Root > Add New Device User > Add From LDAP (Same under HelpDesk) |  | 2d | 2009-09-07 A | 2009-09-08 A |  | 100% | start no earlier than 2009-09-07 | Hu Guang-Zhi [50%] | 8h | 8h | 320 | 320 |

| ID | WBS | Task | Type | Duration | Start | Finish | Predecessors | Complete | Remaining | Total slack | Constraint | Resources | Work | Actual work | Cost | Actual cost |
| --- | --- | --- | --- | --- | --- | --- | --- | --- | --- | --- | --- | --- | --- | --- | --- | --- |
| 580 | 1.8.1.2.1.1.3.6 | **ReqID (675) - Device Groups ->Root >Edit Group Settings** |  | 5d | 2009-09-07 A | 2009-09-11 A |  | 100% |  |  |  |  | 80h | 80h | 3,200 | 3,200 |
| 581 | 1.8.1.2.1.1.3.6.1 | **Edit Group 17 new APIs Implementation** |  | 5d | 2009-09-07 A | 2009-09-11 A |  | 100% |  |  |  |  | 80h | 80h | 3,200 | 3,200 |
| 582 | 1.8.1.2.1.1.3.6.1.1 | ReqID (648) - HelpDesk ->Search > DeviceDetails > Device Details |  | 5d | 2009-09-07 A | 2009-09-11 A |  | 100% |  |  | start no earlier than 2009-09-07 | Zhang Zhi-Yu; Liu Zhi-Qiang | 80h | 80h | 3,200 | 3,200 |
| 583 | 1.8.1.2.1.1.3.7 | ReqID (778) - Device Groups > Root > Enforce Group setting |  | 2d | 2009-09-09 A | 2009-09-10 A | 579 | 100% |  |  | start no earlier than 2009-08-10 | Hu Guang-Zhi [50%] | 8h | 8h | 320 | 320 |
| 584 | 1.8.1.2.1.1.3.8 | ReqID (779) - Device Groups > Root > Enforce Group setting>Advanced |  | 2d | 2009-09-11 A | 2009-09-14 A | 583 | 100% |  |  |  | Hu Guang-Zhi [50%] | 8h | 8h | 320 | 320 |
| 585 | 1.8.1.2.1.1.3.9 | ReqID (780) - Device Groups > Root > Enforce Group setting for All Groups |  | 2d | 2009-09-15 A | 2009-09-16 A | 584 | 100% |  |  |  | Hu Guang-Zhi [50%] | 8h | 8h | 320 | 320 |
| 586 | 1.8.1.2.1.2 | **Phase-III** |  | 16d | 2009-09-10 A | 2009-09-30 A |  | 100% |  |  |  |  | 252.07h | 252.07h | 10,082.72 | 10,082.72 |
| 587 | 1.8.1.2.1.2.1 | **Bug fixing for Phase II** |  | 8d | 2009-09-21 A | 2009-09-29 A |  | 100% |  |  |  |  | 192.07h | 192.07h | 7,682.72 | 7,682.72 |
| 588 | 1.8.1.2.1.2.1.1 | Bug fixing for Device Groups |  | 8d | 2009-09-21 A | 2009-09-29 A | 553 | 100% |  |  | start no earlier than 2009-09-21 | Zhang Zhi-Yu [40%]; Liu Zhi-Qiang [40%] | 51.2h | 51.2h | 2,048 | 2,048 |
| 589 | 1.8.1.2.1.2.1.2 | Other bugs fixing |  | 8d | 2009-09-21 A | 2009-09-29 A | 553 | 100% |  |  | start no earlier than 2009-09-04 | Hu Guang-Zhi [30%]; Liao Qin-Qin [70%]; Meng De-Jun [50%]; Zhong Zi-Long [50%]; Fan Bin [40%] | 140.87h | 140.87h | 5,634.72 | 5,634.72 |
| 590 | 1.8.1.2.1.2.2 | Installer importing mapping file |  | 1d | 2009-09-30 A | 2009-09-30 A | 587 | 100% |  |  |  | Liao Qin-Qin | 8h | 8h | 320 | 320 |
| 591 | 1.8.1.2.1.2.3 | ReqID (775) - Device Groups > Root > Create Custom distribution > Create New > Add Selected Device |  | 2d | 2009-09-10 A | 2009-09-11 A |  | 100% |  |  | finish no earlier than 2009-09-11 | Hu Guang-Zhi [50%] | 8h | 8h | 320 | 320 |
| 592 | 1.8.1.2.1.2.4 | ReqID (672) - Device Groups > Root > Create Custom distribution > Create New > Import |  | 2d | 2009-09-14 A | 2009-09-15 A | 591 | 100% |  |  | finish no earlier than 2009-09-15 | Hu Guang-Zhi [50%] | 8h | 8h | 320 | 320 |
| 593 | 1.8.1.2.1.2.5 | ReqID (947) - Device Groups > Root > Create Custom distribution > View Recurrign Plan |  | 3d | 2009-09-16 A | 2009-09-18 A | 592 | 100% |  |  | finish no earlier than 2009-09-17 | Hu Guang-Zhi [50%] | 12h | 12h | 480 | 480 |
| 594 | 1.8.1.2.1.2.6 | ReqID (948) - Device Groups > Root > Create Custom distribution > Create Onetime Job |  | 3d | 2009-09-21 A | 2009-09-23 A | 593 | 100% |  |  | finish no earlier than 2009-09-22 | Hu Guang-Zhi [50%] | 12h | 12h | 480 | 480 |
| 595 | 1.8.1.2.1.2.7 | ReqID (949) - Device Groups > Root > Create Custom distribution > View All Jobs |  | 3d | 2009-09-24 A | 2009-09-27 A | 594 | 100% |  |  | finish no earlier than 2009-07-30 | Hu Guang-Zhi [50%] | 12h | 12h | 480 | 480 |
| 596 | 1.8.1.3 | **NewUI DEV** |  | 21d | 2009-09-14 A | 2009-10-19 |  | 99% | 0d | 227d |  |  | 961.6h | 961.6h | 38,464 | 38,464 |
| 597 | 1.8.1.3.1 | Pre-defined pages 1 | milestone | 0d | 2009-09-14 A | 2009-09-14 A | 32 | 100% |  |  |  | Caslavka Jason |  |  |  |  |
| 598 | 1.8.1.3.2 | **System Adminstration** |  | 10d | 2009-09-15 A | 2009-09-27 A | 32 | 100% |  |  |  |  | 328h | 328h | 13,120 | 13,120 |
| 599 | 1.8.1.3.2.1 | ReqID (680) - Agents |  | 2d | 2009-09-15 A | 2009-09-16 A |  | 100% |  |  | finish no earlier than 2009-09-16 | Li Da-Peng | 16h | 16h | 640 | 640 |
| 600 | 1.8.1.3.2.2 | ReqID (681) - Agents Add/Edit/Delete |  | 2d | 2009-09-15 A | 2009-09-16 A |  | 100% |  |  | finish no earlier than 2009-09-16 | Li Da-Peng | 16h | 16h | 640 | 640 |
| 601 | 1.8.1.3.2.3 | ReqID (682) - Applications |  | 2d | 2009-09-16 A | 2009-09-17 A | 600 | 100% |  |  | finish no earlier than 2009-09-17 | Li Da-Peng | 16h | 16h | 640 | 640 |
| 602 | 1.8.1.3.2.4 | ReqID (683) - Applications Add/Edit/Delete |  | 2d | 2009-09-16 A | 2009-09-17 A | 600 | 100% |  |  | finish no earlier than 2009-09-17 | Li Da-Peng | 16h | 16h | 640 | 640 |
| 603 | 1.8.1.3.2.5 | ReqID (684) - Applications Add Platforms | milestone | 0d | 2009-09-17 A | 2009-09-17 A | 602 | 100% |  |  |  | Li Da-Peng |  |  |  |  |
| 604 | 1.8.1.3.2.6 | ReqID (685) - Applications Add Models | milestone | 0d | 2009-09-17 A | 2009-09-17 A | 603 | 100% |  |  |  | Li Da-Peng |  |  |  |  |
| 605 | 1.8.1.3.2.7 | ReqID (686) - Applications Add Tenants | milestone | 0d | 2009-09-17 A | 2009-09-17 A | 604 | 100% |  |  |  | Li Da-Peng |  |  |  |  |
| 606 | 1.8.1.3.2.8 | ReqID (687) - Applications Add Languages | milestone | 0d | 2009-09-17 A | 2009-09-17 A | 605 | 100% |  |  |  | Li Da-Peng |  |  |  |  |
| 607 | 1.8.1.3.2.9 | ReqID (693) - Firmware Packages |  | 4d | 2009-09-17 A | 2009-09-22 A | 602 | 100% |  |  | finish no earlier than 2009-09-22 | Li Da-Peng | 32h | 32h | 1,280 | 1,280 |
| 608 | 1.8.1.3.2.10 | ReqID (764) - Firmware Packages Add/Edit/Delete |  | 2d | 2009-09-21 A | 2009-09-22 A | 602 | 100% |  |  |  | Li Da-Peng | 16h | 16h | 640 | 640 |
| 609 | 1.8.1.3.2.11 | ReqID (781) - Firmware Tag | milestone | 0d | 2009-09-22 A | 2009-09-22 A | 602 | 100% |  |  |  | Li Da-Peng |  |  |  |  |
| 610 | 1.8.1.3.2.12 | ReqID (697) - Scripts |  | 3d | 2009-09-15 A | 2009-09-17 A |  | 100% |  |  | finish no earlier than 2009-09-17 | Li Da-Peng | 24h | 24h | 960 | 960 |
| 611 | 1.8.1.3.2.13 | ReqID (698) - Scripts Add/Edit/Delete | milestone | 0d | 2009-09-17 A | 2009-09-17 A | 608 | 100% |  |  |  | Li Da-Peng |  |  |  |  |
| 612 | 1.8.1.3.2.14 | ReqID (688) - Custom Distribution Configuration |  | 1d | 2009-09-24 A | 2009-09-25 A | 611 | 100% |  |  | finish no earlier than 2009-09-25 | Li Da-Peng | 8h | 8h | 320 | 320 |
| 613 | 1.8.1.3.2.15 | ReqID (689) - Custom Distribution Rate Plan |  | 1d | 2009-09-24 A | 2009-09-25 A |  | 100% |  |  | finish no earlier than 2009-09-25 | Li Da-Peng | 8h | 8h | 320 | 320 |
| 614 | 1.8.1.3.2.16 | ReqID (690) - Custom Distribution Rate Plan Add/Edit/Delete |  | 1d | 2009-09-24 A | 2009-09-25 A |  | 100% |  |  | finish no earlier than 2009-09-25 | Li Da-Peng | 8h | 8h | 320 | 320 |
| 615 | 1.8.1.3.2.17 | ReqID (790) - Custom Distribution Rate Plan Exception |  | 9d | 2009-09-15 A | 2009-09-25 A |  | 100% |  |  | finish no earlier than 2009-09-25 | Li Da-Peng | 72h | 72h | 2,880 | 2,880 |
| 616 | 1.8.1.3.2.18 | ReqID (699) - SMSC Setup |  | 1d | 2009-09-27 A | 2009-09-27 A | 615 | 100% |  |  | finish no earlier than 2009-09-27 | Li Da-Peng | 8h | 8h | 320 | 320 |
| 617 | 1.8.1.3.2.19 | ReqID (700) - SMSC Add/Edit/Delete |  | 1d | 2009-09-27 A | 2009-09-27 A |  | 100% |  |  | finish no earlier than 2009-09-27 | Li Da-Peng | 8h | 8h | 320 | 320 |
| 618 | 1.8.1.3.2.20 | ReqID (691) - Supported Device Listing |  | 2d | 2009-09-18 A | 2009-09-22 A |  | 100% |  |  | finish no earlier than 2009-09-22 | Chen Luo-Jie | 16h | 16h | 640 | 640 |
| 619 | 1.8.1.3.2.21 | ReqID (692) - Supported Device Add/Edit/Delete |  | 2d | 2009-09-18 A | 2009-09-21 A |  | 100% |  |  | finish no earlier than 2009-09-22 | Chen Luo-Jie | 16h | 16h | 640 | 640 |
| 620 | 1.8.1.3.2.22 | ReqID (783) - Push Gateway Setup | milestone | 0d | 2009-09-17 A | 2009-09-17 A | 619 | 100% |  |  |  |  |  |  |  |  |
| 621 | 1.8.1.3.2.23 | ReqID (701) - Tenant Partitions | milestone | 0d | 2009-09-17 A | 2009-09-17 A | 620 | 100% |  |  |  |  |  |  |  |  |
| 622 | 1.8.1.3.2.24 | ReqID (702) - Tenant Partitions Add/Edit/Delete | milestone | 0d | 2009-09-17 A | 2009-09-17 A | 621 | 100% |  |  |  |  |  |  |  |  |
| 623 | 1.8.1.3.2.25 | ReqID (708) - User Administration System Users | milestone | 0d | 2009-09-17 A | 2009-09-17 A | 622 | 100% |  |  |  |  |  |  |  |  |
| 624 | 1.8.1.3.2.26 | ReqID (709) - User Administration System Users Add/Edit/Delete | milestone | 0d | 2009-09-17 A | 2009-09-17 A | 623 | 100% |  |  |  |  |  |  |  |  |
| 625 | 1.8.1.3.2.27 | ReqID (704) - User Administration Roles & Permissions |  | 1d | 2009-09-18 A | 2009-09-18 A | 619 | 100% |  |  |  | Chen Luo-Jie | 8h | 8h | 320 | 320 |
| 626 | 1.8.1.3.2.28 | ReqID (705) - User Administration Roles & Permissions Add/Edit/Delete | milestone | 0d | 2009-09-18 A | 2009-09-18 A | 625 | 100% |  |  |  |  |  |  |  |  |
| 627 | 1.8.1.3.2.29 | ReqID (706) - User Administration Roles & Permissions Add (Set Help Desk Graphs) | milestone | 0d | 2009-09-18 A | 2009-09-18 A | 626 | 100% |  |  |  |  |  |  |  |  |
| 628 | 1.8.1.3.2.30 | ReqID (707) - User Administration Roles & Permissions Add (Set Devices Group Graphs) | milestone | 0d | 2009-09-18 A | 2009-09-18 A | 627 | 100% |  |  |  |  |  |  |  |  |
| 629 | 1.8.1.3.2.31 | ReqID (945) - Version & License |  | 0.5d | 2009-09-27 A | 2009-09-27 A | 625 | 100% |  |  | finish no earlier than 2009-09-27 | Chen Luo-Jie | 4h | 4h | 160 | 160 |
| 630 | 1.8.1.3.2.32 | ReqID (710) - Workflow |  | 4.5d | 2009-09-21 A | 2009-09-25 A | 629 | 100% |  |  |  | Chen Luo-Jie | 36h | 36h | 1,440 | 1,440 |

Notes:
- 580: getPlatforms() / getTabs() / getSubTabs() / getDatabyTab() / saveOrUpdate() / delete() / getDeviceLists() / 4.2.5.2.17 ReqID (676) - Device Groups ->Root >Edit Group Settings > General 4.2.5.2.18 ReqID (677) - Device Groups ->Root >Edit Group Settings > Wifi > Wifi Settings popup 4.2.5.2.19 ReqID (678) - Device Groups ->Root >Edit Group Settings > Email 4.2.5.2.20 ReqID (679) - Device Groups ->Root >Edit Group Settings > Email popup 4.2.5.2.21 ReqID (723) - Device Groups ->Root >Edit Group Settings > Active Sync 4.2.5.2.22 ReqID (724) - Device Groups ->Root >Edit Group Settings > Active Sync popup 4.2.5.2.23 ReqID (725) - Device Groups ->Root >Edit Group Settings > VoIP 4.2.5.2.24 ReqID (726) - Device Groups ->Root >Edit Group Settings > VoIP Settings popup 4.2.5.2.25 ReqID (727) - Device Groups ->Root >Edit Group Settings > VPN 4.2.5.2.26 ReqID (728) - Device Groups ->Root >Edit Group Settings > VPN Settings popup 4.2.5.2.27 ReqID (729) - Device Groups ->Root >Edit Group Settings > Bookmarks 4.2.5.2.28 ReqID (730) - Device Groups ->Root >Edit Group Settings > Bookmarks Settings popup 4.2.5.2.29 ReqID (731) - Device Groups ->Root >Edit Group Settings > Applications 4.2.5.2.30 ReqID (732) - Device Groups ->Root >Edit Group Settings > Applications Settings popup 4.2.5.2.31 ReqID (733) - Device Groups ->Root >Edit Group Settings > Firmware 4.2.5.2.32 ReqID (734) - Device Groups ->Root >Edit Group Settings > Firmware popup 4.2.5.2.33 ReqID (735) - Device Groups ->Root >Edit Group Settings > Scripts 4.2.5.2.34 ReqID (736) - Device Groups ->Root >Edit Group Settings > Scripts popup 4.2.5.2.35 ReqID (737) - Device Groups ->Root >Edit Group Settings > Connectivity 4.2.5.2.36 ReqID (738) - Device Groups ->Root >Edit Group Settings > Brower 4.2.5.2.37 ReqID (739) - Device Groups ->Root >Edit Group Settings > DC 4.2.5.2.38 ReqID (740) - Device Groups ->Root >Edit Group Settings > Media Stream 4.2.5.2.39 ReqID (741) - Device Groups ->Root >Edit Group Settings > DMAcc 4.2.5.2.40 ReqID (742) - Device Groups ->Root >Edit Group Settings > Data Sync 4.2.5.2.41 ReqID (743) - Device Groups ->Root >Edit Group Settings > IM 4.2.5.2.42 ReqID (744) - Device Groups ->Root >Edit Group Settings > MMS 4.2.5.2.43 ReqID (745) - Device Groups ->Root >Edit Group Settings > Push to Talk 4.2.5.2.44 ReqID (746) - Device Groups ->Root >Edit Group Settings > Miscellaneous 4.2.5.2.45 ReqID (747) - Device Groups ->Root >Edit Group Settings > Diagmon 4.2.5.2.46 ReqID (748) - Device Groups ->Root >Edit Group Settings > NAM 4.2.5.2.47 ReqID (749) - Device Groups ->Root >Edit Group Settings > RPL 4.2.5.2.48 ReqID (750) - Device Groups ->Root >Edit Group Settings > Mail for exchange 4.2.5.2.49 ReqID (751) - Device Groups ->Root >Edit Group Settings > SMS 4.2.5.2.50 ReqID (752) - Device Groups ->Root >Edit Group Settings > GPS

| ID | WBS | Task | Type | Duration | Start | Finish | Predecessors | Complete | Remaining | Total slack | Constraint | Resources | Work | Actual work | Cost | Actual cost |
| --- | --- | --- | --- | --- | --- | --- | --- | --- | --- | --- | --- | --- | --- | --- | --- | --- |
| 631 | 1.8.1.3.3 | **Policy Group Iteration 1** |  | 21d | 2009-09-15 A | 2009-10-19 | 32 | 99% | 0d | 227d |  |  | 404h | 404h | 16,160 | 16,160 |
| 632 | 1.8.1.3.3.1 | **ReqID (675) - Device Groups ->Root >Edit Group Settings** |  | 21d | 2009-09-15 A | 2009-10-19 A |  | 100% |  |  |  |  | 304h | 304h | 12,160 | 12,160 |
| 633 | 1.8.1.3.3.1.1 | Framework |  | 10d | 2009-09-15 A | 2009-09-27 A |  | 100% |  |  |  | Wang Xiu-Feng | 80h | 80h | 3,200 | 3,200 |
| 634 | 1.8.1.3.3.1.2 | Validation |  | 5d | 2009-09-28 A | 2009-10-10 A | 633 | 100% |  |  |  | Wang Xiu-Feng | 40h | 40h | 1,600 | 1,600 |
| 635 | 1.8.1.3.3.1.3 | Platform Selection |  | 1d | 2009-09-15 A | 2009-09-15 A |  | 100% |  |  |  | Xue Jun | 8h | 8h | 320 | 320 |
| 636 | 1.8.1.3.3.1.4 | **5 Types (Firmware, Agent, Application, CSP, General Settings)** |  | 10d | 2009-09-16 A | 2009-09-28 A | 635 | 100% |  |  |  |  | 80h | 80h | 3,200 | 3,200 |
| 637 | 1.8.1.3.3.1.4.1 | ReqID (676) - General Settings |  | 2d | 2009-09-16 A | 2009-09-17 A |  | 100% |  |  |  | Xue Jun | 16h | 16h | 640 | 640 |
| 638 | 1.8.1.3.3.1.4.2 | ReqID (731,732) - Application |  | 2d | 2009-09-18 A | 2009-09-21 A | 637 | 100% |  |  |  | Xue Jun | 16h | 16h | 640 | 640 |
| 639 | 1.8.1.3.3.1.4.3 | ReqID (735,736) - CSP |  | 2d | 2009-09-22 A | 2009-09-23 A | 638 | 100% |  |  |  | Xue Jun | 16h | 16h | 640 | 640 |
| 640 | 1.8.1.3.3.1.4.4 | ReqID (733,734) - Firmware |  | 2d | 2009-09-23 A | 2009-09-25 A | 639 | 100% |  |  |  | Xue Jun | 16h | 16h | 640 | 640 |
| 641 | 1.8.1.3.3.1.4.5 | ReqID (???) - Agent |  | 2d | 2009-09-27 A | 2009-09-28 A | 640 | 100% |  |  |  | Xue Jun | 16h | 16h | 640 | 640 |
| 642 | 1.8.1.3.3.1.5 | **9 Param Types** |  | 6d | 2009-10-12 A | 2009-10-19 A | 634, 635 | 100% |  |  |  |  | 96h | 96h | 3,840 | 3,840 |
| 643 | 1.8.1.3.3.1.5.1 | ReqID (678, 679) - Email |  | 1d | 2009-10-12 A | 2009-10-12 A | 637 | 100% |  |  |  | Wang Xiu-Feng; Xue Jun | 16h | 16h | 640 | 640 |
| 644 | 1.8.1.3.3.1.5.2 | ReqID (729,730) - Bookmark |  | 1d | 2009-10-13 A | 2009-10-13 A | 643 | 100% |  |  |  | Wang Xiu-Feng; Xue Jun | 16h | 16h | 640 | 640 |
| 645 | 1.8.1.3.3.1.5.3 | ReqID (677) - WiFi |  | 1d | 2009-10-14 A | 2009-10-14 A | 644 | 100% |  |  |  | Wang Xiu-Feng; Xue Jun | 16h | 16h | 640 | 640 |
| 646 | 1.8.1.3.3.1.5.4 | Other 6 Param Types |  | 3d | 2009-10-15 A | 2009-10-19 A | 645 | 100% |  |  |  | Wang Xiu-Feng; Xue Jun | 48h | 48h | 1,920 | 1,920 |
| 647 | 1.8.1.3.3.2 | **Device Group Homepage** |  | 9.5d | 2009-09-18 A | 2009-09-30 A |  | 100% |  |  |  |  | 36h | 36h | 1,440 | 1,440 |
| 648 | 1.8.1.3.3.2.1 | ReqID (660) - Device Group -> Root |  | 1d | 2009-09-18 A | 2009-09-18 A |  | 100% |  |  |  | Chen Yong-Lin | 8h | 8h | 320 | 320 |
| 649 | 1.8.1.3.3.2.2 | ReqID (667) - Device Groups > Root > Add/Edit The Selected Group |  | 1d | 2009-09-27 A | 2009-09-27 A | 648 | 100% |  |  |  | Chen Yong-Lin | 8h | 8h | 320 | 320 |
| 650 | 1.8.1.3.3.2.3 | ReqID (670) - Device Groups > Root > Delete Group |  | 0.5d | 2009-09-28 A | 2009-09-28 A | 649 | 100% |  |  |  | Chen Yong-Lin | 4h | 4h | 160 | 160 |
| 651 | 1.8.1.3.3.2.4 | ReqID (778) - Device Groups > Root > Enforce Group setting |  | 0.5d | 2009-09-28 A | 2009-09-28 A | 650 | 100% |  |  |  | Chen Yong-Lin | 4h | 4h | 160 | 160 |
| 652 | 1.8.1.3.3.2.5 | ReqID (779) - Device Groups > Root > Enforce Group setting>Advanced |  | 1d | 2009-09-29 A | 2009-09-29 A | 651 | 100% |  |  |  | Chen Yong-Lin | 8h | 8h | 320 | 320 |
| 653 | 1.8.1.3.3.2.6 | ReqID (780) - Device Groups > Root > Enforce Group setting for All Groups |  | 0.5d | 2009-09-30 A | 2009-09-30 A | 652 | 100% |  |  |  | Chen Yong-Lin | 4h | 4h | 160 | 160 |
| 654 | 1.8.1.3.3.3 | ReqID (648) - View Device Profile |  | 8d | 2009-10-01 A | 2009-10-12 A |  | 100% |  |  | start no earlier than 2009-10-01 | Singh Anand | 64h | 64h | 2,560 | 2,560 |
| 655 | 1.8.1.3.3.4 | Device Group Iteration I | milestone | 0d | 2009-10-12 | 2009-10-12 | 654 |  |  | 232d |  |  |  |  |  |  |

Notes:
- 632: getPlatforms() / getTabs() / getSubTabs() / getDatabyTab() / saveOrUpdate() / delete() / getDeviceLists() / 4.2.5.2.17 ReqID (676) - Device Groups ->Root >Edit Group Settings > General 4.2.5.2.18 ReqID (677) - Device Groups ->Root >Edit Group Settings > Wifi > Wifi Settings popup 4.2.5.2.19 ReqID (678) - Device Groups ->Root >Edit Group Settings > Email 4.2.5.2.20 ReqID (679) - Device Groups ->Root >Edit Group Settings > Email popup 4.2.5.2.21 ReqID (723) - Device Groups ->Root >Edit Group Settings > Active Sync 4.2.5.2.22 ReqID (724) - Device Groups ->Root >Edit Group Settings > Active Sync popup 4.2.5.2.23 ReqID (725) - Device Groups ->Root >Edit Group Settings > VoIP 4.2.5.2.24 ReqID (726) - Device Groups ->Root >Edit Group Settings > VoIP Settings popup 4.2.5.2.25 ReqID (727) - Device Groups ->Root >Edit Group Settings > VPN 4.2.5.2.26 ReqID (728) - Device Groups ->Root >Edit Group Settings > VPN Settings popup 4.2.5.2.27 ReqID (729) - Device Groups ->Root >Edit Group Settings > Bookmarks 4.2.5.2.28 ReqID (730) - Device Groups ->Root >Edit Group Settings > Bookmarks Settings popup 4.2.5.2.29 ReqID (731) - Device Groups ->Root >Edit Group Settings > Applications 4.2.5.2.30 ReqID (732) - Device Groups ->Root >Edit Group Settings > Applications Settings popup 4.2.5.2.31 ReqID (733) - Device Groups ->Root >Edit Group Settings > Firmware 4.2.5.2.32 ReqID (734) - Device Groups ->Root >Edit Group Settings > Firmware popup 4.2.5.2.33 ReqID (735) - Device Groups ->Root >Edit Group Settings > Scripts 4.2.5.2.34 ReqID (736) - Device Groups ->Root >Edit Group Settings > Scripts popup 4.2.5.2.35 ReqID (737) - Device Groups ->Root >Edit Group Settings > Connectivity 4.2.5.2.36 ReqID (738) - Device Groups ->Root >Edit Group Settings > Brower 4.2.5.2.37 ReqID (739) - Device Groups ->Root >Edit Group Settings > DC 4.2.5.2.38 ReqID (740) - Device Groups ->Root >Edit Group Settings > Media Stream 4.2.5.2.39 ReqID (741) - Device Groups ->Root >Edit Group Settings > DMAcc 4.2.5.2.40 ReqID (742) - Device Groups ->Root >Edit Group Settings > Data Sync 4.2.5.2.41 ReqID (743) - Device Groups ->Root >Edit Group Settings > IM 4.2.5.2.42 ReqID (744) - Device Groups ->Root >Edit Group Settings > MMS 4.2.5.2.43 ReqID (745) - Device Groups ->Root >Edit Group Settings > Push to Talk 4.2.5.2.44 ReqID (746) - Device Groups ->Root >Edit Group Settings > Miscellaneous 4.2.5.2.45 ReqID (747) - Device Groups ->Root >Edit Group Settings > Diagmon 4.2.5.2.46 ReqID (748) - Device Groups ->Root >Edit Group Settings > NAM 4.2.5.2.47 ReqID (749) - Device Groups ->Root >Edit Group Settings > RPL 4.2.5.2.48 ReqID (750) - Device Groups ->Root >Edit Group Settings > Mail for exchange 4.2.5.2.49 ReqID (751) - Device Groups ->Root >Edit Group Settings > SMS 4.2.5.2.50 ReqID (752) - Device Groups ->Root >Edit Group Settings > GPS

| ID | WBS | Task | Type | Duration | Start | Finish | Predecessors | Complete | Remaining | Total slack | Constraint | Resources | Work | Actual work | Cost | Actual cost |
| --- | --- | --- | --- | --- | --- | --- | --- | --- | --- | --- | --- | --- | --- | --- | --- | --- |
| 656 | 1.8.1.3.4 | **Common Items** |  | 9.5d | 2009-09-16 A | 2009-09-28 A | 598 | 100% |  |  |  |  | 12h | 12h | 480 | 480 |
| 657 | 1.8.1.3.4.1 | ReqID (638) - Login | milestone | 0d | 2009-09-16 A | 2009-09-16 A |  | 100% |  |  |  | Chen Luo-Jie |  |  |  |  |
| 658 | 1.8.1.3.4.2 | ReqID (639) - Logout | milestone | 0d | 2009-09-16 A | 2009-09-16 A |  | 100% |  |  |  | Chen Luo-Jie |  |  |  |  |
| 659 | 1.8.1.3.4.3 | ReqID (787) - Forgot password |  | 0.5d | 2009-09-27 A | 2009-09-27 A |  | 100% |  |  |  | Chen Luo-Jie | 4h | 4h | 160 | 160 |
| 660 | 1.8.1.3.4.4 | ReqID (788) Login > password expire |  | 1d | 2009-09-27 A | 2009-09-28 A | 659 | 100% |  |  |  | Chen Luo-Jie | 8h | 8h | 320 | 320 |
| 661 | 1.8.1.3.5 | **Help Desk** |  | 18.3d | 2009-09-15 A | 2009-10-15 |  | 99% | 0d | 229.7d |  |  | 217.6h | 217.6h | 8,704 | 8,704 |
| 662 | 1.8.1.3.5.1 | ReqID (640) - Search (Help Desk Search Main Page) |  | 1d | 2009-09-15 A | 2009-09-15 A | 597 | 100% |  |  |  | Tang Wen-Hua | 8h | 8h | 320 | 320 |
| 663 | 1.8.1.3.5.2 | ReqID (641) - Search > DeviceDetails (reference ReqID 648) |  | 3.5d | 2009-09-16 A | 2009-09-21 A | 662 | 100% |  |  |  | Tang Wen-Hua | 28h | 28h | 1,120 | 1,120 |
| 664 | 1.8.1.3.5.3 | ReqID (???) - DeviceUser Details |  | 5d | 2009-09-28 A | 2009-10-10 A | 598 | 100% |  |  |  | Chen Yong-Lin | 40h | 40h | 1,600 | 1,600 |
| 665 | 1.8.1.3.5.4 | ReqID (657) - Search > DeviceDetails > Enforce Settings |  | 1d | 2009-09-21 A | 2009-09-22 A | 663 | 100% |  |  |  | Li Da-Peng | 8h | 8h | 320 | 320 |
| 666 | 1.8.1.3.5.5 | ReqID (643) - Search > DeviceDetails > Get Device Profile |  | 0.5d | 2009-09-22 A | 2009-09-22 A | 665 | 100% |  |  |  | Tang Wen-Hua | 4h | 4h | 160 | 160 |
| 667 | 1.8.1.3.5.6 | ReqID (645) - Search > DeviceDetails > Diagnose my device |  | 0.5d | 2009-09-23 A | 2009-09-23 A | 666 | 100% |  |  |  | Tang Wen-Hua | 4h | 4h | 160 | 160 |
| 668 | 1.8.1.3.5.7 | ReqID (646) - HelpDesk ->Search > DeviceDetails > Update software |  | 3d | 2009-09-23 A | 2009-09-27 A | 667 | 100% |  |  |  | Tang Wen-Hua | 24h | 24h | 960 | 960 |
| 669 | 1.8.1.3.5.8 | ReqID (921) - HelpDesk ->Search > DeviceDetails > SMS Provisioning |  | 0.5d | 2009-10-12 A | 2009-10-12 A | 664 | 100% |  |  |  | Li Da-Peng | 4h | 4h | 160 | 160 |
| 670 | 1.8.1.3.5.9 | ReqID (922) - HelpDesk ->Search > DeviceDetails > Bootstrap Device |  | 1.5d | 2009-09-27 A | 2009-09-28 A | 668 | 100% |  |  |  | Tang Wen-Hua | 12h | 12h | 480 | 480 |
| 671 | 1.8.1.3.5.10 | ReqID (647) - HelpDesk ->Search > DeviceDetails > Lock & Wipe |  | 2d | 2009-10-12 A | 2009-10-14 A | 669 | 100% |  |  |  | Li Da-Peng | 16h | 16h | 640 | 640 |
| 672 | 1.8.1.3.5.11 | ReqID (648) - HelpDesk ->Search > DeviceDetails > Device Details | milestone | 0d | 2009-10-12 | 2009-10-12 |  |  |  | 232d | finish no earlier than 2009-10-12 |  |  |  |  |  |
| 673 | 1.8.1.3.5.12 | ReqID (654) - HelpDesk ->Search > DeviceDetails > Transaction Details |  | 2.7d | 2009-09-29 A | 2009-10-09 A | 670 | 100% |  |  |  | Tang Wen-Hua | 21.6h | 21.6h | 864 | 864 |
| 674 | 1.8.1.3.5.13 | ReqID (659) - HelpDesk ->Help | milestone | 0d | 2009-10-09 A | 2009-10-09 A | 673 | 100% |  |  |  | Tang Wen-Hua |  |  |  |  |
| 675 | 1.8.1.3.5.14 | ReqID (785) - Edit Device |  | 1d | 2009-10-09 A | 2009-10-10 A | 674 | 100% |  |  |  | Tang Wen-Hua | 8h | 8h | 320 | 320 |
| 676 | 1.8.1.3.5.15 | ReqID (771) - HelpDesk -> Add Device user (Help Desk Search > Add Device User) |  | 3.5d | 2009-09-30 A | 2009-10-12 A | 647 | 100% |  |  |  | Chen Yong-Lin | 28h | 28h | 1,120 | 1,120 |
| 677 | 1.8.1.3.5.16 | ReqID (772) - HelpDesk ->Search > Edit/Delete selected device user |  | 1d | 2009-10-13 A | 2009-10-14 A | 676 | 100% |  |  |  | Tang Wen-Hua | 8h | 8h | 320 | 320 |
| 678 | 1.8.1.3.5.17 | ReqID (773) - HelpDesk ->Search > DeviceDetails > Add Device to Device User | milestone | 0d | 2009-10-14 A | 2009-10-14 A | 677 | 100% |  |  |  | Tang Wen-Hua |  |  |  |  |
| 679 | 1.8.1.3.5.18 | ReqID (774) - HelpDesk ->Search > DeviceDetails > View/Delete selected device |  | 0.5d | 2009-10-14 A | 2009-10-15 A | 678 | 100% |  |  |  | Chen Yong-Lin | 4h | 4h | 160 | 160 |

| ID | WBS | Task | Type | Duration | Start | Finish | Predecessors | Complete | Constraint | Resources | Work | Actual work | Cost | Actual cost |
| --- | --- | --- | --- | --- | --- | --- | --- | --- | --- | --- | --- | --- | --- | --- |
| 680 | 1.8.1.4 | **SmartView 2.0** |  | 21d | 2009-09-04 A | 2009-10-09 A |  | 100% |  |  | 472h | 472h | 18,560 | 18,560 |
| 681 | 1.8.1.4.1 | new UI code freeze date |  | 1d | 2009-09-30 A | 2009-09-30 A |  | 100% | start no earlier than 2009-09-30 |  | 8h | 8h |  |  |
| 682 | 1.8.1.4.2 | **New Features** |  | 20d | 2009-09-04 A | 2009-09-30 A |  | 100% |  | Singh Anand | 392h | 392h | 15,680 | 15,680 |
| 683 | 1.8.1.4.2.1 | DataGrid Paging |  | 1d | 2009-09-04 A | 2009-09-04 A |  | 100% | start no earlier than 2009-09-04 | Singh Anand | 8h | 8h | 320 | 320 |
| 684 | 1.8.1.4.2.2 | DataGrid Sorting |  | 14d | 2009-09-14 A | 2009-09-30 A |  | 100% | start no earlier than 2009-09-14 | Singh Anand | 112h | 112h | 4,480 | 4,480 |
| 685 | 1.8.1.4.2.3 | Sorting for the drop-down list in Global Level |  | 1d | 2009-09-30 A | 2009-09-30 A |  | 100% | finish no earlier than 2009-09-30 | Singh Anand | 8h | 8h | 320 | 320 |
| 686 | 1.8.1.4.2.4 | Mult-Form Support |  | 4d | 2009-09-21 A | 2009-09-24 A |  | 100% | finish no earlier than 2009-09-24 | Singh Anand | 32h | 32h | 1,280 | 1,280 |
| 687 | 1.8.1.4.2.5 | Check-box Headers for SmartView Grids |  | 9d | 2009-09-21 A | 2009-09-30 A |  | 100% | start no earlier than 2009-09-21 | Singh Anand | 72h | 72h | 2,880 | 2,880 |
| 688 | 1.8.1.4.3 | **Maintenance** |  | 8d | 2009-09-15 A | 2009-09-24 A |  | 100% |  |  | 64h | 64h | 2,560 | 2,560 |
| 689 | 1.8.1.4.3.1 | Bug fixing & issue resolution |  | 8d | 2009-09-15 A | 2009-09-24 A |  | 100% | start no earlier than 2009-09-15 | Singh Anand | 64h | 64h | 2,560 | 2,560 |
| 690 | 1.8.1.4.4 | Release Candidate Build - SmartView2.0 |  | 1d | 2009-10-09 A | 2009-10-09 A |  | 100% | start no earlier than 2009-10-09 | Peng Sheng-Kui | 8h | 8h | 320 | 320 |
| 691 | 1.8.2 | **QA & Bug Fixing (QA Generate Bug Report by 9:30 AM everyday)** |  | 29d | 2009-10-19 A | 2009-11-27 A | 596 | 100% |  |  | 2464h | 2464h | 89,600 | 89,600 |
| 692 | 1.8.2.1 | **Cycle #1 (By End of Each Day: S1=0; S2<50; S3<150)** |  | 3d | 2009-10-19 A | 2009-10-22 A |  | 100% |  |  | 480h | 480h | 19,200 | 19,200 |
| 693 | 1.8.2.1.1 | Iteration I Build Drop #1 (Without E2E Support, Without Group Settings) | milestone | 0d | 2009-10-19 A | 2009-10-19 A |  | 100% |  |  |  |  |  |  |
| 694 | 1.8.2.1.2 | **QA** |  | 3d | 2009-10-20 A | 2009-10-22 A |  | 100% |  |  | 216h | 216h | 8,640 | 8,640 |
| 695 | 1.8.2.1.2.1 | **QA Testing Cycle 1** |  | 3d | 2009-10-20 A | 2009-10-22 A | 693 | 100% |  |  | 144h | 144h | 5,760 | 5,760 |
| 696 | 1.8.2.1.2.1.1 | UI-HelpDesk(only Search, DeviceInstance Management, DeviceUser Management) |  | 3d | 2009-10-20 A | 2009-10-22 A |  | 100% |  | Gao Hang; Chen Xiu-Qiong | 48h | 48h | 1,920 | 1,920 |
| 697 | 1.8.2.1.2.1.2 | UI-DeviceGroups(only Group tree) |  | 3d | 2009-10-20 A | 2009-10-22 A | 696 | 100% |  | Liu Qing-Bo; Wang Rui | 48h | 48h | 1,920 | 1,920 |
| 698 | 1.8.2.1.2.1.3 | UI-System Administration |  | 3d | 2009-10-20 A | 2009-10-22 A | 697 | 100% |  | Sun Lei; Dong Ying-Ying | 48h | 48h | 1,920 | 1,920 |
| 699 | 1.8.2.1.2.2 | Iteration I - Cycle 1 - QA Build Testing Report | milestone | 0d | 2009-10-22 A | 2009-10-22 A | 695 | 100% |  | Li Ming |  |  |  |  |
| 700 | 1.8.2.1.2.3 | Verify and move UI Related bugs from the trunk |  | 3d | 2009-10-20 A | 2009-10-22 A | 693 | 100% |  | Chen Guo-Na; Wang Ji-Zhong | 48h | 48h | 1,920 | 1,920 |
| 701 | 1.8.2.1.2.4 | UI Performance testing |  | 3d | 2009-10-20 A | 2009-10-22 A |  | 100% |  | Xu Yan | 24h | 24h | 960 | 960 |
| 702 | 1.8.2.1.3 | **DEV** |  | 3d | 2009-10-20 A | 2009-10-22 A |  | 100% |  |  | 264h | 264h | 10,560 | 10,560 |
| 703 | 1.8.2.1.3.1 | Bug Fixing |  | 3d | 2009-10-20 A | 2009-10-22 A |  | 100% | start no earlier than 2009-10-19 | Zhang Zhi-Yu; Hu Guang-Zhi; Liu Zhi-Qiang; Fan Bin; Liao Qin-Qin; Li Da-Peng; Chen Luo-Jie; Tang Wen-Hua; Chen Yong-Lin; Xue Jun; Singh Anand [50%]; Wang Xiu-Feng [50%] | 264h | 264h | 10,560 | 10,560 |

| ID | WBS | Task | Type | Duration | Start | Finish | Predecessors | Complete | Constraint | Resources | Work | Actual work | Cost | Actual cost |
| --- | --- | --- | --- | --- | --- | --- | --- | --- | --- | --- | --- | --- | --- | --- |
| 704 | 1.8.2.2 | **Cycle #1+ (By End of Each Day: S1=0; S2<10; S3<100)** |  | 4d | 2009-10-22 A | 2009-10-28 A |  | 100% |  |  | 416h | 416h | 15,360 | 15,360 |
| 705 | 1.8.2.2.1 | Iteration I Build Drop #1+ (Adds Group Setttings on top of Drop #1 except for WiFi and Validation) | milestone | 0d | 2009-10-22 A | 2009-10-22 A | 692 | 100% |  |  |  |  |  |  |
| 706 | 1.8.2.2.2 | **QA** |  | 4d | 2009-10-23 A | 2009-10-28 A | 705 | 100% |  |  | 384h | 384h | 15,360 | 15,360 |
| 707 | 1.8.2.2.2.1 | Verify and move UI Related bugs from the trunk(100) |  | 2d | 2009-10-23 A | 2009-10-26 A |  | 100% |  | Gao Hang; Chen Xiu-Qiong; Liu Qing-Bo; Wang Rui; Sun Lei; Dong Ying-Ying; Chen Guo-Na; Wang Ji-Zhong | 128h | 128h | 5,120 | 5,120 |
| 708 | 1.8.2.2.2.2 | Ad-hoc testing |  | 4d | 2009-10-23 A | 2009-10-28 A |  | 100% |  | Gao Hang; Chen Xiu-Qiong; Liu Qing-Bo; Wang Rui; Sun Lei; Dong Ying-Ying; Chen Guo-Na; Wang Ji-Zhong | 256h | 256h | 10,240 | 10,240 |
| 709 | 1.8.2.2.3 | DEV Bug Fixing |  | 4d | 2009-10-23 A | 2009-10-28 A | 705 | 100% |  |  | 32h | 32h |  |  |
| 710 | 1.8.2.3 | **Cycle #2 (By End of Each Day: S1=0; S2<10; S3<100)** |  | 7d | 2009-10-28 A | 2009-11-06 A |  | 100% |  |  | 528h | 528h | 19,200 | 19,200 |
| 711 | 1.8.2.3.1 | Iteration I Build Drop #2 (Complete Iteration I Scope) | milestone | 0d | 2009-10-28 A | 2009-10-28 A | 704 | 100% |  |  |  |  |  |  |
| 712 | 1.8.2.3.2 | **QA** |  | 7d | 2009-10-29 A | 2009-11-06 A |  | 100% |  |  | 488h | 488h | 19,200 | 19,200 |
| 713 | 1.8.2.3.2.1 | **QA Testing Cycle 2** |  | 7d | 2009-10-29 A | 2009-11-06 A |  | 100% |  |  | 488h | 488h | 19,200 | 19,200 |
| 714 | 1.8.2.3.2.1.1 | Entry Validation of the Build (FC; No Blocking Issues) |  | 1d | 2009-10-29 A | 2009-10-29 A | 711 | 100% |  |  | 8h | 8h |  |  |
| 715 | 1.8.2.3.2.1.2 | **QA Testing (By End of Each Day: S1=0; S2<10; S3<100)** |  | 4d | 2009-10-29 A | 2009-11-03 A | 711 | 100% |  |  | 256h | 256h | 10,240 | 10,240 |
| 716 | 1.8.2.3.2.1.2.1 | UI-HelpDesk(only Search, DeviceInstance Management, DeviceUser Management) |  | 4d | 2009-10-29 A | 2009-11-03 A |  | 100% |  | Gao Hang; Chen Xiu-Qiong | 64h | 64h | 2,560 | 2,560 |
| 717 | 1.8.2.3.2.1.2.2 | UI-DeviceGroups(only Group tree, WindowsMobile MMA platform) |  | 4d | 2009-10-29 A | 2009-11-03 A |  | 100% |  | Liu Qing-Bo; Wang Rui | 64h | 64h | 2,560 | 2,560 |
| 718 | 1.8.2.3.2.1.2.3 | UI-System Administration |  | 4d | 2009-10-29 A | 2009-11-03 A |  | 100% |  | Sun Lei; Dong Ying-Ying | 64h | 64h | 2,560 | 2,560 |
| 719 | 1.8.2.3.2.1.2.4 | E2E-Windows Mobile MMA Sanity Testing |  | 4d | 2009-10-29 A | 2009-11-03 A |  | 100% |  | Chen Guo-Na; Wang Ji-Zhong | 64h | 64h | 2,560 | 2,560 |
| 720 | 1.8.2.3.2.1.3 | Webservice API manual testing |  | 4d | 2009-10-29 A | 2009-11-03 A | 711 | 100% |  | Xu Yan | 32h | 32h | 1,280 | 1,280 |
| 721 | 1.8.2.3.2.1.4 | Iteration I - Cycle 2 - QA Build Testing Report | milestone | 0d | 2009-11-03 A | 2009-11-03 A | 715 | 100% |  | Li Ming; Xu Yan |  |  |  |  |
| 722 | 1.8.2.3.2.1.5 | Release Candidate Build (S1 = 0; S2 < 10; S3 <100) | milestone | 0d | 2009-11-03 A | 2009-11-03 A | 721 | 100% |  |  |  |  |  |  |
| 723 | 1.8.2.3.2.1.6 | Bug Verification (CODE FREEZE) |  | 3d | 2009-11-04 A | 2009-11-06 A | 722 | 100% |  | Gao Hang; Chen Xiu-Qiong; Liu Qing-Bo; Wang Rui; Sun Lei; Dong Ying-Ying; Chen Guo-Na; Wang Ji-Zhong | 192h | 192h | 7,680 | 7,680 |
| 724 | 1.8.2.3.3 | **DEV** |  | 5d | 2009-10-29 A | 2009-11-04 A |  | 100% |  |  | 40h | 40h |  |  |
| 725 | 1.8.2.3.3.1 | Bug Fixing |  | 5d | 2009-10-29 A | 2009-11-04 A | 711 | 100% |  |  | 40h | 40h |  |  |
| 726 | 1.8.2.4 | **Cycle #3 (By End of Each Day: S1=?; S2<?; S3<?)** |  | 5d | 2009-11-06 A | 2009-11-12 A |  | 100% |  |  | 344h | 344h | 11,840 | 11,840 |
| 727 | 1.8.2.4.1 | Iteration I Build Drop #3 (Complete Iteration I Scope) | milestone | 0d | 2009-11-09 A | 2009-11-09 A |  | 100% | start no earlier than 2009-11-09 |  |  |  |  |  |

Notes:
- 711: 1.Early engagement of QA to test daily builds and report issues / 2. DEC clean up all the blocking issues reported by QA in the same day
- 714: 1.QA needs to provide a validation report / 2.Exit Criteria: / �100% Requirements (Features) coverage - Feature Complete / � No blocking issue
- 715: By end of each day(From Oct 30th through Nov 6th) (QA will generate Bug report by 9:00 AM next morning): / �Zero active S1 bug/ �Active S2 bug count is less than 10/ � Active S3 bug count is less than 100
- 722: �QA provide a quality report / �Quality Criteria: / �Zero active S1 bug / �Active S2 bug count is less than 10 / � Active S3 bug count is less than 100
- 727: 1.Early engagement of QA to test daily builds and report issues / 2. DEC clean up all the blocking issues reported by QA in the same day

| ID | WBS | Task | Type | Duration | Start | Finish | Predecessors | Complete | Constraint | Resources | Work | Actual work | Cost | Actual cost |
| --- | --- | --- | --- | --- | --- | --- | --- | --- | --- | --- | --- | --- | --- | --- |
| 728 | 1.8.2.4.2 | **QA** |  | 5d | 2009-11-06 A | 2009-11-12 A |  | 100% |  |  | 304h | 304h | 11,840 | 11,840 |
| 729 | 1.8.2.4.2.1 | **QA Testing Cycle 3 - Full Regression** |  | 5d | 2009-11-06 A | 2009-11-12 A |  | 100% |  |  | 304h | 304h | 11,840 | 11,840 |
| 730 | 1.8.2.4.2.1.1 | Entry Validation of the Build (FC; No Blocking Issues) |  | 1d | 2009-11-06 A | 2009-11-06 A |  | 100% | start no earlier than 2009-11-06 |  | 8h | 8h |  |  |
| 731 | 1.8.2.4.2.1.2 | **QA Testing (By End of Each Day: S1=?; S2<?; S3<?)** |  | 4d | 2009-11-09 A | 2009-11-12 A | 730 | 100% |  |  | 256h | 256h | 10,240 | 10,240 |
| 732 | 1.8.2.4.2.1.2.1 | UI-HelpDesk(only Search, DeviceInstance Management, DeviceUser Management) |  | 4d | 2009-11-09 A | 2009-11-12 A |  | 100% |  | Gao Hang; Chen Xiu-Qiong | 64h | 64h | 2,560 | 2,560 |
| 733 | 1.8.2.4.2.1.2.2 | UI-DeviceGroups(only Group tree, WindowsMobile MMA platform) |  | 4d | 2009-11-09 A | 2009-11-12 A |  | 100% |  | Liu Qing-Bo; Wang Rui | 64h | 64h | 2,560 | 2,560 |
| 734 | 1.8.2.4.2.1.2.3 | UI-System Administration |  | 4d | 2009-11-09 A | 2009-11-12 A |  | 100% |  | Sun Lei; Dong Ying-Ying | 64h | 64h | 2,560 | 2,560 |
| 735 | 1.8.2.4.2.1.2.4 | E2E-Windows Mobile MMA Sanity Testing |  | 4d | 2009-11-09 A | 2009-11-12 A |  | 100% |  | Chen Guo-Na; Wang Ji-Zhong | 64h | 64h | 2,560 | 2,560 |
| 736 | 1.8.2.4.2.1.3 | Webservice API manual testing |  | 5d | 2009-11-06 A | 2009-11-12 A |  | 100% | start no earlier than 2009-11-06 | Xu Yan | 40h | 40h | 1,600 | 1,600 |
| 737 | 1.8.2.4.2.1.4 | Iteration I - Cycle 3 - QA Build Testing Report | milestone | 0d | 2009-11-12 A | 2009-11-12 A | 731 | 100% |  | Li Ming; Xu Yan |  |  |  |  |
| 738 | 1.8.2.4.3 | **DEV** |  | 5d | 2009-11-06 A | 2009-11-12 A |  | 100% |  |  | 40h | 40h |  |  |
| 739 | 1.8.2.4.3.1 | Bug Fixing |  | 5d | 2009-11-06 A | 2009-11-12 A |  | 100% | start no earlier than 2009-11-06 |  | 40h | 40h |  |  |
| 740 | 1.8.2.5 | **Cycle #4 (By End of Each Day: S1=?; S2<?; S3<?)** |  | 4d | 2009-11-12 A | 2009-11-18 A | 726 | 100% |  |  | 264h | 264h | 8,960 | 8,960 |
| 741 | 1.8.2.5.1 | Iteration I Build Drop #4 (Complete Iteration I Scope) | milestone | 0d | 2009-11-12 A | 2009-11-12 A |  | 100% | start no earlier than 2009-11-09 |  |  |  |  |  |
| 742 | 1.8.2.5.2 | **QA** |  | 4d | 2009-11-13 A | 2009-11-18 A |  | 100% |  |  | 232h | 232h | 8,960 | 8,960 |
| 743 | 1.8.2.5.2.1 | **QA Testing Cycle 4 - MAT** |  | 4d | 2009-11-13 A | 2009-11-18 A |  | 100% |  |  | 232h | 232h | 8,960 | 8,960 |
| 744 | 1.8.2.5.2.1.1 | Entry Validation of the Build (FC; No Blocking Issues) |  | 1d | 2009-11-13 A | 2009-11-13 A |  | 100% | start no earlier than 2009-11-06 |  | 8h | 8h |  |  |
| 745 | 1.8.2.5.2.1.2 | **QA Testing (By End of Each Day: S1=?; S2<?; S3<?)** |  | 3d | 2009-11-16 A | 2009-11-18 A | 744 | 100% |  |  | 192h | 192h | 7,680 | 7,680 |
| 746 | 1.8.2.5.2.1.2.1 | UI-HelpDesk(only Search, DeviceInstance Management, DeviceUser Management) |  | 3d | 2009-11-16 A | 2009-11-18 A |  | 100% |  | Gao Hang; Chen Xiu-Qiong | 48h | 48h | 1,920 | 1,920 |
| 747 | 1.8.2.5.2.1.2.2 | UI-DeviceGroups(only Group tree, WindowsMobile MMA platform) |  | 3d | 2009-11-16 A | 2009-11-18 A |  | 100% |  | Liu Qing-Bo; Wang Rui | 48h | 48h | 1,920 | 1,920 |
| 748 | 1.8.2.5.2.1.2.3 | UI-System Administration |  | 3d | 2009-11-16 A | 2009-11-18 A |  | 100% |  | Sun Lei; Dong Ying-Ying | 48h | 48h | 1,920 | 1,920 |
| 749 | 1.8.2.5.2.1.2.4 | E2E-Windows Mobile MMA Sanity Testing |  | 3d | 2009-11-16 A | 2009-11-18 A |  | 100% |  | Chen Guo-Na; Wang Ji-Zhong | 48h | 48h | 1,920 | 1,920 |
| 750 | 1.8.2.5.2.1.3 | Webservice API manual testing |  | 4d | 2009-11-13 A | 2009-11-18 A | 741 | 100% |  | Xu Yan | 32h | 32h | 1,280 | 1,280 |
| 751 | 1.8.2.5.2.1.4 | Iteration I - Cycle 4 - QA Build Testing Report | milestone | 0d | 2009-11-18 A | 2009-11-18 A | 745 | 100% |  | Li Ming; Xu Yan |  |  |  |  |

Notes:
- 730: 1.QA needs to provide a validation report / 2.Exit Criteria: / �100% Requirements (Features) coverage - Feature Complete / � No blocking issue
- 731: By end of each day(From Oct 30th through Nov 6th) (QA will generate Bug report by 9:00 AM next morning): / �Zero active S1 bug/ �Active S2 bug count is less than 10/ � Active S3 bug count is less than 100
- 741: 1.Early engagement of QA to test daily builds and report issues / 2. DEC clean up all the blocking issues reported by QA in the same day
- 744: 1.QA needs to provide a validation report / 2.Exit Criteria: / �100% Requirements (Features) coverage - Feature Complete / � No blocking issue
- 745: By end of each day(From Oct 30th through Nov 6th) (QA will generate Bug report by 9:00 AM next morning): / �Zero active S1 bug/ �Active S2 bug count is less than 10/ � Active S3 bug count is less than 100

| ID | WBS | Task | Type | Duration | Start | Finish | Predecessors | Complete | Constraint | Resources | Work | Actual work | Cost | Actual cost |
| --- | --- | --- | --- | --- | --- | --- | --- | --- | --- | --- | --- | --- | --- | --- |
| 752 | 1.8.2.5.3 | **DEV** |  | 4d | 2009-11-13 A | 2009-11-18 A |  | 100% |  |  | 32h | 32h |  |  |
| 753 | 1.8.2.5.3.1 | Bug Fixing |  | 4d | 2009-11-13 A | 2009-11-18 A |  | 100% | start no earlier than 2009-11-06 |  | 32h | 32h |  |  |
| 754 | 1.8.2.6 | **Cycle #5 (By End of Each Day: S1=?; S2<?; S3<?)** |  | 5d | 2009-11-18 A | 2009-11-25 A | 740 | 100% |  |  | 344h | 344h | 11,840 | 11,840 |
| 755 | 1.8.2.6.1 | Iteration I Build Drop #5 (Complete Iteration I Scope) | milestone | 0d | 2009-11-18 A | 2009-11-18 A |  | 100% | start no earlier than 2009-11-09 |  |  |  |  |  |
| 756 | 1.8.2.6.2 | **QA** |  | 5d | 2009-11-19 A | 2009-11-25 A | 755 | 100% |  |  | 304h | 304h | 11,840 | 11,840 |
| 757 | 1.8.2.6.2.1 | **QA Testing Cycle 5 - Full Regression** |  | 5d | 2009-11-19 A | 2009-11-25 A |  | 100% |  |  | 304h | 304h | 11,840 | 11,840 |
| 758 | 1.8.2.6.2.1.1 | Entry Validation of the Build (FC; No Blocking Issues) |  | 1d | 2009-11-19 A | 2009-11-19 A |  | 100% | start no earlier than 2009-11-06 |  | 8h | 8h |  |  |
| 759 | 1.8.2.6.2.1.2 | **QA Testing (By End of Each Day: S1=?; S2<?; S3<?)** |  | 4d | 2009-11-20 A | 2009-11-25 A | 758 | 100% |  |  | 256h | 256h | 10,240 | 10,240 |
| 760 | 1.8.2.6.2.1.2.1 | UI-HelpDesk(only Search, DeviceInstance Management, DeviceUser Management) |  | 4d | 2009-11-20 A | 2009-11-25 A |  | 100% |  | Gao Hang; Chen Xiu-Qiong | 64h | 64h | 2,560 | 2,560 |
| 761 | 1.8.2.6.2.1.2.2 | UI-DeviceGroups(only Group tree, WindowsMobile MMA platform) |  | 4d | 2009-11-20 A | 2009-11-25 A |  | 100% |  | Liu Qing-Bo; Wang Rui | 64h | 64h | 2,560 | 2,560 |
| 762 | 1.8.2.6.2.1.2.3 | UI-System Administration |  | 4d | 2009-11-20 A | 2009-11-25 A |  | 100% |  | Sun Lei; Dong Ying-Ying | 64h | 64h | 2,560 | 2,560 |
| 763 | 1.8.2.6.2.1.2.4 | E2E-Windows Mobile MMA Sanity Testing |  | 4d | 2009-11-20 A | 2009-11-25 A |  | 100% |  | Chen Guo-Na; Wang Ji-Zhong | 64h | 64h | 2,560 | 2,560 |
| 764 | 1.8.2.6.2.1.3 | Webservice API manual testing |  | 5d | 2009-11-19 A | 2009-11-25 A |  | 100% |  | Xu Yan | 40h | 40h | 1,600 | 1,600 |
| 765 | 1.8.2.6.2.1.4 | Iteration I - Cycle 5 - QA Build Testing Report | milestone | 0d | 2009-11-25 A | 2009-11-25 A | 759 | 100% |  | Li Ming; Xu Yan |  |  |  |  |
| 766 | 1.8.2.6.3 | **DEV** |  | 5d | 2009-11-19 A | 2009-11-25 A |  | 100% |  |  | 40h | 40h |  |  |
| 767 | 1.8.2.6.3.1 | Bug Fixing |  | 5d | 2009-11-19 A | 2009-11-25 A |  | 100% | start no earlier than 2009-11-06 |  | 40h | 40h |  |  |
| 768 | 1.8.2.7 | **Cycle #6 (By End of Each Day: S1=?; S2<?; S3<?)** |  | 2d | 2009-11-25 A | 2009-11-27 A | 754 | 100% |  |  | 88h | 88h | 3,200 | 3,200 |
| 769 | 1.8.2.7.1 | Iteration I Build Drop #6 (Complete Iteration I Scope) | milestone | 0d | 2009-11-25 A | 2009-11-25 A |  | 100% | start no earlier than 2009-11-09 |  |  |  |  |  |
| 770 | 1.8.2.7.2 | **QA** |  | 2d | 2009-11-26 A | 2009-11-27 A | 769 | 100% |  |  | 88h | 88h | 3,200 | 3,200 |
| 771 | 1.8.2.7.2.1 | **QA Testing Cycle 6 - Sanity** |  | 2d | 2009-11-26 A | 2009-11-27 A |  | 100% |  |  | 88h | 88h | 3,200 | 3,200 |
| 772 | 1.8.2.7.2.1.1 | Entry Validation of the Build (FC; No Blocking Issues) |  | 1d | 2009-11-26 A | 2009-11-26 A |  | 100% | start no earlier than 2009-11-06 |  | 8h | 8h |  |  |
| 773 | 1.8.2.7.2.1.2 | **QA Testing (By End of Each Day: S1=?; S2<?; S3<?)** |  | 1d | 2009-11-27 A | 2009-11-27 A | 772 | 100% |  |  | 64h | 64h | 2,560 | 2,560 |
| 774 | 1.8.2.7.2.1.2.1 | UI-HelpDesk(only Search, DeviceInstance Management, DeviceUser Management) |  | 1d | 2009-11-27 A | 2009-11-27 A |  | 100% |  | Gao Hang; Chen Xiu-Qiong | 16h | 16h | 640 | 640 |
| 775 | 1.8.2.7.2.1.2.2 | UI-DeviceGroups(only Group tree, WindowsMobile MMA platform) |  | 1d | 2009-11-27 A | 2009-11-27 A |  | 100% |  | Liu Qing-Bo; Wang Rui | 16h | 16h | 640 | 640 |
| 776 | 1.8.2.7.2.1.2.3 | UI-System Administration |  | 1d | 2009-11-27 A | 2009-11-27 A |  | 100% |  | Sun Lei; Dong Ying-Ying | 16h | 16h | 640 | 640 |
| 777 | 1.8.2.7.2.1.2.4 | E2E-Windows Mobile MMA Sanity Testing |  | 1d | 2009-11-27 A | 2009-11-27 A |  | 100% |  | Chen Guo-Na; Wang Ji-Zhong | 16h | 16h | 640 | 640 |
| 778 | 1.8.2.7.2.1.3 | Webservice API manual testing |  | 2d | 2009-11-26 A | 2009-11-27 A |  | 100% |  | Xu Yan | 16h | 16h | 640 | 640 |
| 779 | 1.8.2.7.2.1.4 | Iteration I - Cycle 6 - QA Build Testing Report | milestone | 0d | 2009-11-27 A | 2009-11-27 A | 773 | 100% |  | Li Ming; Xu Yan |  |  |  |  |

Notes:
- 755: 1.Early engagement of QA to test daily builds and report issues / 2. DEC clean up all the blocking issues reported by QA in the same day
- 758: 1.QA needs to provide a validation report / 2.Exit Criteria: / �100% Requirements (Features) coverage - Feature Complete / � No blocking issue
- 759: By end of each day(From Oct 30th through Nov 6th) (QA will generate Bug report by 9:00 AM next morning): / �Zero active S1 bug/ �Active S2 bug count is less than 10/ � Active S3 bug count is less than 100
- 769: 1.Early engagement of QA to test daily builds and report issues / 2. DEC clean up all the blocking issues reported by QA in the same day
- 772: 1.QA needs to provide a validation report / 2.Exit Criteria: / �100% Requirements (Features) coverage - Feature Complete / � No blocking issue
- 773: By end of each day(From Oct 30th through Nov 6th) (QA will generate Bug report by 9:00 AM next morning): / �Zero active S1 bug/ �Active S2 bug count is less than 10/ � Active S3 bug count is less than 100

| ID | WBS | Task | Type | Duration | Start | Finish | Predecessors | Complete | Remaining | Total slack | Constraint | Resources | Work | Actual work | Cost | Actual cost |
| --- | --- | --- | --- | --- | --- | --- | --- | --- | --- | --- | --- | --- | --- | --- | --- | --- |
| 780 | 1.8.2.7.3 | **DEV - CODE FREEZE** |  | 0d | 2009-11-25 A | 2009-11-25 A |  | 100% |  |  |  |  |  |  |  |  |
| 781 | 1.8.2.7.3.1 | Bug Fixing | milestone | 0d | 2009-11-25 A | 2009-11-25 A |  | 100% |  |  | start no earlier than 2009-11-06 |  |  |  |  |  |
| 782 | 1.8.3 | New UI Phase I Readiness | milestone | 0d | 2009-11-06 | 2009-11-06 | 712 |  |  | 213d |  |  |  |  |  |  |
| 783 | 1.8.4 | Scope Verification for both of Iteration I & II | milestone | 0d | 2009-11-06 A | 2009-11-06 A | 782 | 100% |  |  |  | Li Rick |  |  |  |  |
| 784 | 1.8.5 | New UI Phase I Release (S1 = 0; S2 < 10; S3 <100) | milestone | 0d | 2009-11-06 | 2009-11-06 | 783 |  |  | 213d |  |  |  |  |  |  |
| 785 | 1.9 | **Iteration II - Implementation** |  | 65d? | 2009-10-09 A | 2010-01-08 |  | 97% | 1.9d? | 0d |  |  | 8820.3h | 8748.3h | 307,372 | 304,492 |
| 786 | 1.9.1 | **Development** |  | 65d? | 2009-10-09 A | 2010-01-08 |  | 97% | 1.9d? | 0d |  |  | 8820.3h | 8748.3h | 307,372 | 304,492 |
| 787 | 1.9.1.1 | **Sprint I** |  | 47d | 2009-10-09 A | 2009-12-11 |  | 99% | 0d | 18d |  |  | 2251.2h | 2251.2h | 86,208 | 86,208 |
| 788 | 1.9.1.1.1 | **DEV** |  | 47d | 2009-10-09 A | 2009-12-11 |  | 99% | 0d | 18d |  |  | 1123.2h | 1123.2h | 43,328 | 43,328 |
| 789 | 1.9.1.1.1.1 | **NewUI DEV** |  | 11d | 2009-11-13 A | 2009-11-27 |  | 99% | 0d | 28d |  |  | 232h | 232h | 9,280 | 9,280 |
| 790 | 1.9.1.1.1.1.1 | New UI Dev start | milestone | 0d | 2009-11-13 | 2009-11-13 |  |  |  | 39d | start no earlier than 2009-11-13 |  |  |  |  |  |
| 791 | 1.9.1.1.1.1.2 | **Device Group Iteration 2 (Bulk)** |  | 11d | 2009-11-13 A | 2009-11-27 A |  | 100% |  |  |  |  | 232h | 232h | 9,280 | 9,280 |
| 792 | 1.9.1.1.1.1.2.1 | Mockup prepare & lock down |  | 6d | 2009-11-13 A | 2009-11-20 A | 790 | 100% |  |  |  | Li Da-Peng; Ma Zhi-Hui; Chen Luo-Jie | 144h | 144h | 5,760 | 5,760 |
| 793 | 1.9.1.1.1.1.2.2 | ReqID (778) - Device Groups > Root > Enforce Group setting |  | 2d | 2009-11-13 A | 2009-11-16 A | 790 | 100% |  |  | start no earlier than 2009-11-02 | Chen Yong-Lin | 16h | 16h | 640 | 640 |
| 794 | 1.9.1.1.1.1.2.3 | ReqID (779) - Device Groups > Root > Enforce Group setting>Advanced |  | 3d | 2009-11-17 A | 2009-11-19 A | 793 | 100% |  |  |  | Chen Yong-Lin | 24h | 24h | 960 | 960 |
| 795 | 1.9.1.1.1.1.2.4 | View All Jobs |  | 6d | 2009-11-20 A | 2009-11-27 A | 794 | 100% |  |  |  | Chen Yong-Lin | 48h | 48h | 1,920 | 1,920 |
| 796 | 1.9.1.1.1.2 | **Merge to Trunk** |  | 8d | 2009-12-02 A | 2009-12-11 |  | 99% | 0d | 18d |  |  | 64h | 64h | 2,560 | 2,560 |
| 797 | 1.9.1.1.1.2.1 | Effort estimation |  | 2d | 2009-12-02 A | 2009-12-03 A |  | 100% |  |  | start no earlier than 2009-12-02 | Dong Jin-Peng | 16h | 16h | 640 | 640 |
| 798 | 1.9.1.1.1.2.2 | **Merge and test in private working space** |  | 4d | 2009-12-04 A | 2009-12-09 A | 797 | 100% |  |  |  |  | 32h | 32h | 1,280 | 1,280 |
| 799 | 1.9.1.1.1.2.2.1 | Resolve conflicts and investigate different files |  | 3d | 2009-12-04 A | 2009-12-08 A |  | 100% |  |  |  | Dong Jin-Peng | 24h | 24h | 960 | 960 |
| 800 | 1.9.1.1.1.2.2.2 | Sanity Test validation |  | 1d | 2009-12-09 A | 2009-12-09 A | 799 | 100% |  |  |  | DEV team | 8h | 8h | 320 | 320 |
| 801 | 1.9.1.1.1.2.3 | SVN Check-in to trunk |  | 1d | 2009-12-10 A | 2009-12-10 A | 798 | 100% |  |  |  | Dong Jin-Peng | 8h | 8h | 320 | 320 |
| 802 | 1.9.1.1.1.2.4 | Second round merge of the DELTA between run first round merge and check-in |  | 1d | 2009-12-11 A | 2009-12-11 A | 801 | 100% |  |  |  | Dong Jin-Peng | 8h | 8h | 320 | 320 |
| 803 | 1.9.1.1.1.2.5 | Post-merge sanity test (together with Sprint III Sanity Test) | milestone | 0d | 2009-12-11 | 2009-12-11 | 802 |  |  | 18d |  |  |  |  |  |  |

Notes:
- 784: �Review the final Test Report provided by QA / �Exit Criteria / �Zero active S1 bug / �Active S2 bug count is less than 10 / � Active S3 bug count is less than 100

| ID | WBS | Task | Type | Duration | Start | Finish | Predecessors | Complete | Constraint | Resources | Work | Actual work | Cost | Actual cost |
| --- | --- | --- | --- | --- | --- | --- | --- | --- | --- | --- | --- | --- | --- | --- |
| 804 | 1.9.1.1.1.3 | **Policy Group** |  | 6d | 2009-11-13 A | 2009-11-20 A |  | 100% |  |  | 96h | 96h | 3,840 | 3,840 |
| 805 | 1.9.1.1.1.3.1 | Symbian |  | 6d | 2009-11-13 A | 2009-11-20 A | 790 | 100% |  | Tang Wen-Hua; Xue Jun | 96h | 96h | 3,840 | 3,840 |
| 806 | 1.9.1.1.1.4 | **IOP - DEVICE ADAPTOR ON MMC4.6** |  | 27d | 2009-10-09 A | 2009-11-13 A |  | 100% |  |  | 80h | 80h | 3,200 | 3,200 |
| 807 | 1.9.1.1.1.4.1 | Symbian S60 Adaptor |  | 5d | 2009-11-09 A | 2009-11-13 A |  | 100% | start no earlier than 2009-11-09 | Gong Zhi | 40h | 40h | 1,600 | 1,600 |
| 808 | 1.9.1.1.1.4.2 | Symbian S40 Adaptor |  | 5d | 2009-10-09 A | 2009-10-14 A |  | 100% | start no earlier than 2009-10-09 | Zhang PengFei | 40h | 40h | 1,600 | 1,600 |
| 809 | 1.9.1.1.1.5 | IOP Integration - Symbian |  | 3d | 2009-12-01 A | 2009-12-03 A | 804, 806 | 100% | start no earlier than 2009-12-01 |  | 24h | 24h |  |  |
| 810 | 1.9.1.1.1.6 | **SmartView V2.0** |  | 30d | 2009-10-19 A | 2009-11-27 A |  | 100% |  |  | 600h | 600h | 24,000 | 24,000 |
| 811 | 1.9.1.1.1.6.1 | **Performance Framework** |  | 30d | 2009-10-19 A | 2009-11-27 A |  | 100% |  | Zhang PengFei; Gong Zhi [50%] | 600h | 600h | 24,000 | 24,000 |
| 812 | 1.9.1.1.1.6.1.1 | Review design |  | 2d | 2009-10-19 A | 2009-10-20 A |  | 100% | start no earlier than 2009-10-19 | Wang Xiu-Feng [50%]; Singh Anand [50%] | 16h | 16h | 640 | 640 |
| 813 | 1.9.1.1.1.6.1.2 | Implementation |  | 28d | 2009-10-21 A | 2009-11-27 A | 812 | 100% | finish no earlier than 2009-09-30 | Singh Anand | 224h | 224h | 8,960 | 8,960 |
| 814 | 1.9.1.1.1.7 | Installer update - Remove Fusion Console & DMConsole |  | 2d | 2009-11-23 A | 2009-11-24 A |  | 100% | start no earlier than 2009-11-23 | Liao Qin-Qin [70%] | 11.2h | 11.2h | 448 | 448 |
| 815 | 1.9.1.1.1.8 | System Integration & Sanity Test - DEV |  | 2d | 2009-11-30 A | 2009-12-01 A | 789, 814 | 100% |  |  | 16h | 16h |  |  |
| 816 | 1.9.1.1.2 | Drop to QA - Sprint I (From Trunk) | milestone | 0d | 2009-12-01 A | 2009-12-01 A | 815 | 100% |  | Peng Sheng-Kui |  |  |  |  |
| 817 | 1.9.1.1.3 | **Bug Fixing & QA** |  | 8d | 2009-12-01 A | 2009-12-11 A | 816 | 100% |  |  | 1128h | 1128h | 42,880 | 42,880 |
| 818 | 1.9.1.1.3.1 | DEV Bug Fixing |  | 6d | 2009-12-02 A | 2009-12-09 A |  | 100% |  | Dong Jin-Peng; Li Jia; Lei Juan; Wang Jia; Zhu Zhen-Xing; Zhong Zi-Long; Su Chun-Bo; Singh Anand [50%] | 360h | 360h | 14,400 | 14,400 |
| 819 | 1.9.1.1.3.2 | **QA Testing - MAT** |  | 6d | 2009-12-01 A | 2009-12-09 A |  | 100% |  |  | 576h | 576h | 20,800 | 20,800 |
| 820 | 1.9.1.1.3.2.1 | [ReqID 547]GUI mode Installer |  | 0.5d | 2009-12-02 A | 2009-12-02 A |  | 100% |  | Li Shuang | 4h | 4h | 160 | 160 |
| 821 | 1.9.1.1.3.2.2 | [ReqID 628]New UI-HelpDesk(only Search, DeviceInstance Management, DeviceUser Management) |  | 5d | 2009-12-03 A | 2009-12-09 A | 820 | 100% |  | Li Shuang | 40h | 40h | 1,600 | 1,600 |
| 822 | 1.9.1.1.3.2.3 | [ReqID 629]New UI-DeviceGroups(only Group tree, Enforce Group Settings, WindowsMobile MMA platform, Symbian platform, View All Jobs) |  | 6d | 2009-12-02 A | 2009-12-09 A |  | 100% |  | Chen Xiu-Qiong; Wang Ji-Zhong | 96h | 96h | 3,840 | 3,840 |
| 823 | 1.9.1.1.3.2.4 | [ReqID 630]New UI-System Administration |  | 4d | 2009-12-02 A | 2009-12-07 A |  | 100% |  | Liu Qing-Bo | 32h | 32h | 1,280 | 1,280 |
| 824 | 1.9.1.1.3.2.5 | [ReqID 637]New UI-Login/Logout |  | 0.5d | 2009-12-08 A | 2009-12-08 A | 823 | 100% |  | Liu Qing-Bo | 4h | 4h | 160 | 160 |
| 825 | 1.9.1.1.3.2.6 | [ReqID 765]Common Requirement | milestone | 0d | 2009-12-01 A | 2009-12-01 A |  | 100% |  | Gao Hang; Chen Xiu-Qiong; Li Shuang; Sun Lei; Liu Qing-Bo; Wang Ji-Zhong; Chen Guo-Na; Geng Cheng; Wu Li-Rong; Dong Ying-Ying; Yu Jian-Lan; Li Yue-Hong; Wang Rui |  |  |  |  |
| 826 | 1.9.1.1.3.2.7 | [ReqID 542]Improve Workflow Engine design | milestone | 0d | 2009-12-01 A | 2009-12-01 A |  | 100% |  | Gao Hang; Chen Xiu-Qiong; Li Shuang; Sun Lei; Liu Qing-Bo; Wang Ji-Zhong; Chen Guo-Na; Geng Cheng; Wu Li-Rong; Dong Ying-Ying; Yu Jian-Lan; Li Yue-Hong; Wang Rui |  |  |  |  |
| 827 | 1.9.1.1.3.2.8 | [ReqID 543]DM operation Management | milestone | 0d | 2009-12-01 A | 2009-12-01 A |  | 100% |  | Gao Hang; Chen Xiu-Qiong; Li Shuang; Sun Lei; Liu Qing-Bo; Wang Ji-Zhong; Chen Guo-Na; Geng Cheng; Wu Li-Rong; Dong Ying-Ying; Yu Jian-Lan; Li Yue-Hong; Wang Rui |  |  |  |  |
| 828 | 1.9.1.1.3.2.9 | Others inherited from MMC4.5 |  | 1d | 2009-12-08 A | 2009-12-09 A | 824 | 100% |  | Liu Qing-Bo | 8h | 8h | 320 | 320 |
| 829 | 1.9.1.1.3.2.10 | E2E-Windows Mobile MMA Devices Sanity Testing |  | 6d | 2009-12-02 A | 2009-12-09 A |  | 100% |  | Wang Rui | 48h | 48h | 1,920 | 1,920 |
| 830 | 1.9.1.1.3.2.11 | E2E-Symbian Devices Full Testing |  | 6d | 2009-12-02 A | 2009-12-09 A |  | 100% |  | Sun Lei; Geng Cheng; Wu Li-Rong | 144h | 144h | 5,760 | 5,760 |
| 831 | 1.9.1.1.3.2.12 | E2E-Bulk-Enforce Group Settings |  | 6d | 2009-12-02 A | 2009-12-09 A |  | 100% |  | Dong Ying-Ying; Chen Guo-Na | 96h | 96h | 3,840 | 3,840 |

| ID | WBS | Task | Type | Duration | Start | Finish | Predecessors | Complete | Remaining | Total slack | Constraint | Resources | Work | Actual work | Cost | Actual cost |
| --- | --- | --- | --- | --- | --- | --- | --- | --- | --- | --- | --- | --- | --- | --- | --- | --- |
| 832 | 1.9.1.1.3.2.13 | **Webservice API manual testing** |  | 6d | 2009-12-02 A | 2009-12-09 A |  | 100% |  |  |  | Xu Yan [50%] | 80h | 80h | 960 | 960 |
| 833 | 1.9.1.1.3.2.13.1 | [ReqID 447]Add Integration |  | 2d | 2009-12-02 A | 2009-12-03 A |  | 100% |  |  |  |  | 16h | 16h |  |  |
| 834 | 1.9.1.1.3.2.13.2 | [ReqID 636]New WS API Testing | milestone | 0d | 2009-12-03 A | 2009-12-03 A | 833 | 100% |  |  |  |  |  |  |  |  |
| 835 | 1.9.1.1.3.2.13.3 | Others Inherited from MMC4.5 |  | 3d | 2009-12-07 A | 2009-12-09 A | 834 | 100% |  |  |  |  | 40h | 40h |  |  |
| 836 | 1.9.1.1.3.2.14 | [ReqID 1105]New UI Performance |  | 3d | 2009-12-02 A | 2009-12-04 A |  | 100% |  |  |  | Xu Yan [50%] | 12h | 12h | 480 | 480 |
| 837 | 1.9.1.1.3.2.15 | [ReqID 317]E2E Performance testing(Enforce Group Settings) |  | 3d | 2009-12-07 A | 2009-12-09 A | 836 | 100% |  |  |  | Xu Yan [50%] | 12h | 12h | 480 | 480 |
| 838 | 1.9.1.1.3.3 | Sanity Result Compare (QA&DEV) |  | 2d | 2009-12-02 A | 2009-12-03 A |  | 100% |  |  |  | Li Ming | 16h | 16h | 640 | 640 |
| 839 | 1.9.1.1.3.4 | QA Report - MAT | milestone | 0d | 2009-12-09 A | 2009-12-09 A | 819 | 100% |  |  |  | Li Ming |  |  |  |  |
| 840 | 1.9.1.1.3.5 | QA Testing - Sanity |  | 2d | 2009-12-10 A | 2009-12-11 A | 819 | 100% |  |  |  | Gao Hang; Chen Xiu-Qiong; Li Shuang; Sun Lei; Liu Qing-Bo; Wang Ji-Zhong; Chen Guo-Na; Geng Cheng; Wu Li-Rong; Li Yue-Hong; Yu Jian-Lan | 176h | 176h | 7,040 | 7,040 |
| 841 | 1.9.1.1.3.6 | QA Report - Sanity | milestone | 0d | 2009-12-11 A | 2009-12-11 A | 840 | 100% |  |  |  | Li Ming |  |  |  |  |
| 842 | 1.9.1.1.4 | Sprint I Release | milestone | 0d | 2009-12-11 | 2009-12-11 | 841 |  |  | 18d |  |  |  |  |  |  |
| 843 | 1.9.1.2 | **Sprint II** |  | 33d | 2009-11-09 A | 2009-12-21 |  | 97% | 1.11d | 10d |  |  | 2504h | 2504h | 59,840 | 59,840 |
| 844 | 1.9.1.2.1 | **DEV** |  | 27d | 2009-11-09 A | 2009-12-13 |  | 88% | 3.38d | 16d |  |  | 544h | 544h | 21,760 | 21,760 |
| 845 | 1.9.1.2.1.1 | **NewUI DEV** |  | 16d | 2009-11-20 A | 2009-12-11 A |  | 100% |  |  |  |  | 296h | 296h | 11,840 | 11,840 |
| 846 | 1.9.1.2.1.1.1 | Global/Local Setting CR Implementation |  | 7d | 2009-11-20 A | 2009-11-30 A |  | 100% |  |  | start no earlier than 2009-11-20 | Tan Xin | 56h | 56h | 2,240 | 2,240 |
| 847 | 1.9.1.2.1.1.2 | **Device Group Iteration 2 (Bulk)** |  | 15d | 2009-11-23 A | 2009-12-11 A |  | 100% |  |  |  |  | 240h | 240h | 9,600 | 9,600 |
| 848 | 1.9.1.2.1.1.2.1 | **ReqID (948) Create One Time Job** |  | 15d | 2009-11-23 A | 2009-12-11 A |  | 100% |  |  |  |  | 240h | 240h | 9,600 | 9,600 |
| 849 | 1.9.1.2.1.1.2.1.1 | Common Main Page |  | 1d | 2009-11-23 A | 2009-11-23 A | 792 | 100% |  |  |  | Li Da-Peng | 8h | 8h | 320 | 320 |
| 850 | 1.9.1.2.1.1.2.1.2 | Bootstrap |  | 3d | 2009-11-23 A | 2009-11-25 A | 792 | 100% |  |  |  | Chen Luo-Jie | 24h | 24h | 960 | 960 |
| 851 | 1.9.1.2.1.1.2.1.3 | Profile Main |  | 4d | 2009-11-24 A | 2009-11-27 A | 849 | 100% |  |  |  | Li Da-Peng | 32h | 32h | 1,280 | 1,280 |
| 852 | 1.9.1.2.1.1.2.1.4 | Profile View |  | 2d | 2009-11-30 A | 2009-12-01 A | 851 | 100% |  |  |  | Li Da-Peng | 16h | 16h | 640 | 640 |
| 853 | 1.9.1.2.1.1.2.1.5 | Profile Next |  | 1d | 2009-12-02 A | 2009-12-02 A | 852 | 100% |  |  |  | Li Da-Peng | 8h | 8h | 320 | 320 |
| 854 | 1.9.1.2.1.1.2.1.6 | Application Management Main |  | 3d | 2009-11-23 A | 2009-11-25 A | 792 | 100% |  |  |  | Ma Zhi-Hui | 24h | 24h | 960 | 960 |
| 855 | 1.9.1.2.1.1.2.1.7 | Application Management View |  | 2d | 2009-11-26 A | 2009-11-27 A | 854 | 100% |  |  |  | Ma Zhi-Hui | 16h | 16h | 640 | 640 |
| 856 | 1.9.1.2.1.1.2.1.8 | Application Management Next |  | 2d | 2009-11-30 A | 2009-12-01 A | 855 | 100% |  |  |  | Ma Zhi-Hui | 16h | 16h | 640 | 640 |
| 857 | 1.9.1.2.1.1.2.1.9 | Enforce Settings Main |  | 3d | 2009-12-02 A | 2009-12-04 A | 861 | 100% |  |  |  | Chen Luo-Jie | 24h | 24h | 960 | 960 |
| 858 | 1.9.1.2.1.1.2.1.10 | Enforce Settings View |  | 2d | 2009-12-07 A | 2009-12-08 A | 857 | 100% |  |  |  | Chen Luo-Jie | 16h | 16h | 640 | 640 |
| 859 | 1.9.1.2.1.1.2.1.11 | Enforce Settings next |  | 3d | 2009-12-09 A | 2009-12-11 A | 858 | 100% |  |  |  | Chen Luo-Jie | 24h | 24h | 960 | 960 |
| 860 | 1.9.1.2.1.1.2.1.12 | SMS Provisioning Main |  | 2d | 2009-11-26 A | 2009-11-27 A | 850 | 100% |  |  |  | Chen Luo-Jie | 16h | 16h | 640 | 640 |
| 861 | 1.9.1.2.1.1.2.1.13 | SMS Provisioning Next |  | 2d | 2009-11-30 A | 2009-12-01 A | 860 | 100% |  |  |  | Chen Luo-Jie | 16h | 16h | 640 | 640 |

| ID | WBS | Task | Type | Duration | Start | Finish | Predecessors | Complete | Remaining | Total slack | Free slack | Constraint | Resources | Work | Actual work | Cost | Actual cost |
| --- | --- | --- | --- | --- | --- | --- | --- | --- | --- | --- | --- | --- | --- | --- | --- | --- | --- |
| 862 | 1.9.1.2.1.2 | **Policy Group** |  | 5d | 2009-11-23 A | 2009-11-27 A |  | 100% |  |  |  |  |  | 80h | 80h | 3,200 | 3,200 |
| 863 | 1.9.1.2.1.2.1 | Sony Ericsson |  | 4d | 2009-11-23 A | 2009-11-26 A | 805 | 100% |  |  |  |  | Tang Wen-Hua; Xue Jun | 64h | 64h | 2,560 | 2,560 |
| 864 | 1.9.1.2.1.2.2 | P2K |  | 1d | 2009-11-27 A | 2009-11-27 A | 863 | 100% |  |  |  |  | Tang Wen-Hua; Xue Jun | 16h | 16h | 640 | 640 |
| 865 | 1.9.1.2.1.3 | **IOP - DEVICE ADAPTOR ON MMC4.6** |  | 15d | 2009-11-09 A | 2009-11-27 A |  | 100% |  |  |  |  |  | 136h | 136h | 5,440 | 5,440 |
| 866 | 1.9.1.2.1.3.1 | Sony Ericsson Prorietary Adaptor |  | 5d | 2009-11-16 A | 2009-11-20 A | 807 | 100% |  |  |  | start no earlier than 2009-11-16 | Liu Yu | 40h | 40h | 1,600 | 1,600 |
| 867 | 1.9.1.2.1.3.2 | Window Native DM Adaptor |  | 7d | 2009-11-09 A | 2009-11-17 A |  | 100% |  |  |  | finish no earlier than 2009-11-17 | Zhao Wen-Xiu | 56h | 56h | 2,240 | 2,240 |
| 868 | 1.9.1.2.1.3.3 | P2K Adaptor |  | 5d | 2009-11-23 A | 2009-11-27 A | 866 | 100% |  |  |  | start no earlier than 2009-10-09 | Liu Yu | 40h | 40h | 1,600 | 1,600 |
| 869 | 1.9.1.2.1.4 | MMC 4.5.3 Ericsson ER IOP part merge |  | 3d | 2009-11-30 A | 2009-12-02 A | 865 | 100% |  |  |  | start no earlier than 2009-11-30 | Gong Zhi | 24h | 24h | 960 | 960 |
| 870 | 1.9.1.2.1.5 | IOP Integration - Sony Ericsson |  | 7d | 2009-12-03 | 2009-12-11 | 862, 869 |  |  | 16d | 0d | start no earlier than 2009-12-03 |  |  |  |  |  |
| 871 | 1.9.1.2.1.6 | Installer Update |  | 1d | 2009-12-08 A | 2009-12-08 A |  | 100% |  |  |  | start no earlier than 2009-12-08 | Liao Qin-Qin | 8h | 8h | 320 | 320 |
| 872 | 1.9.1.2.1.7 | System Integration & Sanity Test - DEV |  | 2d | 2009-12-12 | 2009-12-13 | 845, 870 |  |  | 16d |  |  |  |  |  |  |  |
| 873 | 1.9.1.2.2 | Drop to QA - Sprint II (From Trunk) | milestone | 0d | 2009-12-14 A | 2009-12-14 A | 872 | 100% |  |  |  |  | Peng Sheng-Kui |  |  |  |  |
| 874 | 1.9.1.2.3 | **Bug Fixing & QA** |  | 6d | 2009-12-14 A | 2009-12-21 | 873 | 99% | 0d | 10d |  |  |  | 1960h | 1960h | 38,080 | 38,080 |
| 875 | 1.9.1.2.3.1 | DEV Bug Fixing |  | 6d | 2009-12-14 A | 2009-12-21 A |  | 100% |  |  |  |  | Dong Jin-Peng; Li Jia; Liao Xue-Feng; Lei Juan; Wang Jia [50%]; Zhu Zhen-Xing; Su Chun-Bo; Singh Anand [50%] | 336h | 336h | 13,440 | 13,440 |
| 876 | 1.9.1.2.3.2 | **Performance Tuning** |  | 6d | 2009-12-14 A | 2009-12-21 A |  | 100% |  |  |  |  |  | 72h | 72h | 2,880 | 2,880 |
| 877 | 1.9.1.2.3.2.1 | UI |  | 6d | 2009-12-14 A | 2009-12-21 A |  | 100% |  |  |  |  | Zhong Zi-Long | 48h | 48h | 1,920 | 1,920 |
| 878 | 1.9.1.2.3.2.2 | E2E |  | 6d | 2009-12-14 A | 2009-12-21 A |  | 100% |  |  |  |  | Wang Jia [50%] | 24h | 24h | 960 | 960 |
| 879 | 1.9.1.2.3.3 | **QA Testing** |  | 6d | 2009-12-14 A | 2009-12-21 |  | 99% | 0d | 10d |  |  |  | 1536h | 1536h | 21,120 | 21,120 |
| 880 | 1.9.1.2.3.3.1 | [ReqID 628]New UI-HelpDesk |  | 6d | 2009-12-14 A | 2009-12-21 A |  | 100% |  |  |  |  | Li Shuang | 48h | 48h | 1,920 | 1,920 |
| 881 | 1.9.1.2.3.3.2 | **[ReqID 629]New UI-DeviceGroups** |  | 6d | 2009-12-14 A | 2009-12-21 A |  | 100% |  |  |  |  | Chen Xiu-Qiong; Liu Qing-Bo | 576h | 576h | 3,840 | 3,840 |
| 882 | 1.9.1.2.3.3.2.1 | Group Tree |  | 6d | 2009-12-14 A | 2009-12-21 A |  | 100% |  |  |  |  |  | 48h | 48h |  |  |
| 883 | 1.9.1.2.3.3.2.2 | Enforce Group Settings |  | 6d | 2009-12-14 A | 2009-12-21 A |  | 100% |  |  |  |  |  | 48h | 48h |  |  |
| 884 | 1.9.1.2.3.3.2.3 | WindowsMobile MMA platform |  | 6d | 2009-12-14 A | 2009-12-21 A |  | 100% |  |  |  |  |  | 48h | 48h |  |  |
| 885 | 1.9.1.2.3.3.2.4 | Symbian platform |  | 6d | 2009-12-14 A | 2009-12-21 A |  | 100% |  |  |  |  |  | 48h | 48h |  |  |
| 886 | 1.9.1.2.3.3.2.5 | Sony Ericsson platform |  | 6d | 2009-12-14 A | 2009-12-21 A |  | 100% |  |  |  |  |  | 48h | 48h |  |  |
| 887 | 1.9.1.2.3.3.2.6 | CDMA platform |  | 6d | 2009-12-14 A | 2009-12-21 A |  | 100% |  |  |  |  |  | 48h | 48h |  |  |
| 888 | 1.9.1.2.3.3.2.7 | View All Jobs |  | 6d | 2009-12-14 A | 2009-12-21 A |  | 100% |  |  |  |  |  | 48h | 48h |  |  |
| 889 | 1.9.1.2.3.3.2.8 | Bulk Bootstrap |  | 6d | 2009-12-14 A | 2009-12-21 A |  | 100% |  |  |  |  |  | 48h | 48h |  |  |
| 890 | 1.9.1.2.3.3.2.9 | Bulk Profile |  | 6d | 2009-12-14 A | 2009-12-21 A |  | 100% |  |  |  |  |  | 48h | 48h |  |  |
| 891 | 1.9.1.2.3.3.2.10 | Bulk Application |  | 6d | 2009-12-14 A | 2009-12-21 A |  | 100% |  |  |  |  |  | 48h | 48h |  |  |
| 892 | 1.9.1.2.3.3.3 | [ReqID 630]New UI-System Administration |  | 6d | 2009-12-14 A | 2009-12-21 A |  | 100% |  |  |  |  | Wang Rui | 48h | 48h | 1,920 | 1,920 |

| ID | WBS | Task | Type | Duration | Start | Finish | Predecessors | Complete | Remaining | Total slack | Resources | Work | Actual work | Cost | Actual cost |
| --- | --- | --- | --- | --- | --- | --- | --- | --- | --- | --- | --- | --- | --- | --- | --- |
| 893 | 1.9.1.2.3.3.4 | **[ReqID 631]New UI-Reporting** |  | 6d | 2009-12-14 A | 2009-12-21 A |  | 100% |  |  | Sun Lei [50%] | 456h | 456h | 960 | 960 |
| 894 | 1.9.1.2.3.3.4.1 | ReqID (769) - Application Usage |  | 6d | 2009-12-14 A | 2009-12-21 A |  | 100% |  |  |  | 48h | 48h |  |  |
| 895 | 1.9.1.2.3.3.4.2 | ReqID (714) - Automated Check-Ups |  | 6d | 2009-12-14 A | 2009-12-21 A |  | 100% |  |  |  | 48h | 48h |  |  |
| 896 | 1.9.1.2.3.3.4.3 | Device Issue Details |  | 6d | 2009-12-14 A | 2009-12-21 A |  | 100% |  |  |  | 48h | 48h |  |  |
| 897 | 1.9.1.2.3.3.4.4 | Device List |  | 6d | 2009-12-14 A | 2009-12-21 A |  | 100% |  |  |  | 48h | 48h |  |  |
| 898 | 1.9.1.2.3.3.4.5 | Device User List |  | 6d | 2009-12-14 A | 2009-12-21 A |  | 100% |  |  |  | 48h | 48h |  |  |
| 899 | 1.9.1.2.3.3.4.6 | Devices by Manufacture |  | 6d | 2009-12-14 A | 2009-12-21 A |  | 100% |  |  |  | 48h | 48h |  |  |
| 900 | 1.9.1.2.3.3.4.7 | ReqID (717) - Devices By Model |  | 6d | 2009-12-14 A | 2009-12-21 A |  | 100% |  |  |  | 48h | 48h |  |  |
| 901 | 1.9.1.2.3.3.4.8 | Total Transactions |  | 6d | 2009-12-14 A | 2009-12-21 A |  | 100% |  |  |  | 48h | 48h |  |  |
| 902 | 1.9.1.2.3.3.4.9 | Recurring Report |  | 6d | 2009-12-14 A | 2009-12-21 A |  | 100% |  |  |  | 48h | 48h |  |  |
| 903 | 1.9.1.2.3.3.5 | E2E-Windows Mobile MMA Devices Sanity Testing |  | 6d | 2009-12-14 A | 2009-12-21 A |  | 100% |  |  | Dong Ying-Ying [50%]; Wang Ji-Zhong [50%] | 48h | 48h | 1,920 | 1,920 |
| 904 | 1.9.1.2.3.3.6 | E2E-Symbian Devices Full Testing |  | 6d | 2009-12-14 A | 2009-12-21 A |  | 100% |  |  | Chen Guo-Na | 48h | 48h | 1,920 | 1,920 |
| 905 | 1.9.1.2.3.3.7 | **E2E-Sony Ericsson Devices Full Testing** |  | 6d | 2009-12-14 A | 2009-12-21 A |  | 100% |  |  | Wang Ji-Zhong [50%]; Dong Ying-Ying [50%] | 88h | 88h | 1,600 | 1,600 |
| 906 | 1.9.1.2.3.3.7.1 | [ReqID 767]Ericsson Enhancement requirements |  | 4d | 2009-12-14 A | 2009-12-17 A |  | 100% |  |  |  | 32h | 32h |  |  |
| 907 | 1.9.1.2.3.3.7.2 | Sony Ericsson devices parameters setting |  | 2d | 2009-12-18 A | 2009-12-21 A | 906 | 100% |  |  |  | 16h | 16h |  |  |
| 908 | 1.9.1.2.3.3.8 | E2E-[ReqID 491]Support of OMA-DM LAWMO Specification |  | 1d | 2009-12-14 A | 2009-12-14 A |  | 100% |  |  | Geng Cheng | 8h | 8h | 320 | 320 |
| 909 | 1.9.1.2.3.3.9 | E2E-CDMA Devices Full Testing |  | 6d | 2009-12-14 A | 2009-12-21 A |  | 100% |  |  | Geng Cheng | 48h | 48h | 1,920 | 1,920 |
| 910 | 1.9.1.2.3.3.10 | E2E-Bulk-Enforce Group Settings, Bootstrap, Profile, Application |  | 6d | 2009-12-14 A | 2009-12-21 A |  | 100% |  |  | Wu Li-Rong | 48h | 48h | 1,920 | 1,920 |
| 911 | 1.9.1.2.3.3.11 | MMC 4.5.3 Ericsson ER IOP part |  | 6d | 2009-12-14 A | 2009-12-21 A |  | 100% |  |  | Sun Lei [50%] | 24h | 24h | 960 | 960 |
| 912 | 1.9.1.2.3.3.12 | **Webservice API manual testing** |  | 6d | 2009-12-14 A | 2009-12-21 |  | 99% | 0d | 10d | Xu Yan [50%] | 72h | 72h | 960 | 960 |
| 913 | 1.9.1.2.3.3.12.1 | [ReqID 447]Add Integration |  | 1d | 2009-12-14 A | 2009-12-14 A |  | 100% |  |  |  | 8h | 8h |  |  |
| 914 | 1.9.1.2.3.3.12.2 | [ReqID 636]New WS API Testing | milestone | 0d | 2009-12-14 | 2009-12-14 | 913 |  |  | 15d |  |  |  |  |  |
| 915 | 1.9.1.2.3.3.12.3 | Others Inherited from MMC4.5 |  | 5d | 2009-12-15 A | 2009-12-21 A | 914 | 100% |  |  |  | 40h | 40h |  |  |
| 916 | 1.9.1.2.3.3.13 | [ReqID 1105]New UI Performance |  | 3d | 2009-12-14 A | 2009-12-16 A |  | 100% |  |  | Xu Yan [50%] | 12h | 12h | 480 | 480 |
| 917 | 1.9.1.2.3.3.14 | [ReqID 317]E2E Performance testing(Enforce Group Settings, Bootstrap, Profile, Application) |  | 3d | 2009-12-17 A | 2009-12-21 A | 916 | 100% |  |  | Xu Yan [50%] | 12h | 12h | 480 | 480 |
| 918 | 1.9.1.2.3.4 | Sanity Result Compare (QA&DEV) |  | 2d | 2009-12-14 A | 2009-12-15 A |  | 100% |  |  | Li Ming | 16h | 16h | 640 | 640 |
| 919 | 1.9.1.2.3.5 | QA Report - Sprint II | milestone | 0d | 2009-12-21 A | 2009-12-21 A | 879 | 100% |  |  | Li Ming |  |  |  |  |
| 920 | 1.9.1.2.4 | Sprint II Release | milestone | 0d | 2009-12-21 | 2009-12-21 | 919 |  |  | 10d |  |  |  |  |  |

| ID | WBS | Task | Duration | Start | Finish | Predecessors | Complete | Remaining | Total slack | Constraint | Resources | Work | Actual work | Cost | Actual cost |
| --- | --- | --- | --- | --- | --- | --- | --- | --- | --- | --- | --- | --- | --- | --- | --- |
| 921 | 1.9.1.3 | **Sprint III** | 43d? | 2009-11-09 A | 2010-01-08 |  | 96% | 1.73d? | 0d |  |  | 4065.1h | 3993.1h | 161,324 | 158,444 |
| 922 | 1.9.1.3.1 | **DEV** | 33d? | 2009-11-09 A | 2009-12-21 |  | 99% | 0.22d? | 10d |  |  | 1197.1h | 1197.1h | 47,884 | 47,884 |
| 923 | 1.9.1.3.1.1 | **IOP** | 28d | 2009-11-09 A | 2009-12-14 A |  | 100% |  |  |  |  | 55.5h | 55.5h | 2,220 | 2,220 |
| 924 | 1.9.1.3.1.1.1 | **DEVICE ADAPTOR ON MMC 4.6** | 28d | 2009-11-09 A | 2009-12-14 A |  | 100% |  |  |  |  | 55.5h | 55.5h | 2,220 | 2,220 |
| 925 | 1.9.1.3.1.1.1.1 | CDMA Adaptor | 5d | 2009-12-10 A | 2009-12-14 A | 863 | 100% |  |  | start no earlier than 2009-12-10 | Zhao WenXiu [60%] | 24h | 24h | 960 | 960 |
| 926 | 1.9.1.3.1.1.1.2 | BlackBerry Adaptor | 5d | 2009-12-10 A | 2009-12-14 A | 927 | 100% |  |  | start no earlier than 2009-12-10 | Zhang Peng-Fei [60%] | 24h | 24h | 960 | 960 |
| 927 | 1.9.1.3.1.1.1.3 | Symbian UIQ Adaptor | 5d | 2009-11-09 A | 2009-11-13 A |  | 100% |  |  | finish no earlier than 2009-11-18 | Zhang Peng-Fei [18.8%] | 7.5h | 7.5h | 300 | 300 |
| 928 | 1.9.1.3.1.2 | **NewUI DEV** | 26d? | 2009-11-13 A | 2009-12-16 |  | 99% | 0.28d? | 13d |  |  | 885.6h | 885.6h | 35,424 | 35,424 |
| 929 | 1.9.1.3.1.2.1 | Dynamically add/remove of components in basic view | 1d? | 2009-12-14 | 2009-12-14 |  |  |  | 15d | start no earlier than 2009-12-14 |  |  |  |  |  |
| 930 | 1.9.1.3.1.2.2 | ReqID (655) - Edit User Setting | 5d | 2009-12-07 A | 2009-12-11 A |  | 100% |  |  |  | Wang Xiu-Feng | 40h | 40h | 1,600 | 1,600 |
| 931 | 1.9.1.3.1.2.3 | View Group Setting | 5d | 2009-12-12 A | 2009-12-16 A | 930 | 100% |  |  | start no earlier than 2009-12-07 | Wang Xiu-Feng | 40h | 40h | 1,600 | 1,600 |
| 932 | 1.9.1.3.1.2.4 | **Policy Group Iteration 2** | 3d | 2009-12-14 A | 2009-12-16 A |  | 100% |  |  |  |  | 176h | 176h | 7,040 | 7,040 |
| 933 | 1.9.1.3.1.2.4.1 | Nokia S40 | 2d | 2009-12-14 A | 2009-12-15 A |  | 100% |  |  |  | Tang Wen-Hua; Xue Jun | 32h | 32h | 1,280 | 1,280 |
| 934 | 1.9.1.3.1.2.4.2 | Windows Mobile Native | 2d | 2009-12-14 A | 2009-12-15 A | 933 | 100% |  |  |  | Tang Wen-Hua; Xue Jun | 32h | 32h | 1,280 | 1,280 |
| 935 | 1.9.1.3.1.2.4.3 | BlackBerry | 1d | 2009-12-14 A | 2009-12-14 A | 934 | 100% |  |  |  | Tang Wen-Hua; Xue Jun | 16h | 16h | 640 | 640 |
| 936 | 1.9.1.3.1.2.4.4 | Symbian UIQ | 3d | 2009-12-14 A | 2009-12-16 A | 937 | 100% |  |  |  | Tang Wen-Hua; Xue Jun | 48h | 48h | 1,920 | 1,920 |
| 937 | 1.9.1.3.1.2.4.5 | CDMA | 3d | 2009-12-14 A | 2009-12-16 A |  | 100% |  |  |  | Tang Wen-Hua; Xue Jun | 48h | 48h | 1,920 | 1,920 |
| 938 | 1.9.1.3.1.2.5 | **Device Group Iteration 2 (Bulk) (The ReqIDs should be updated according to mockup)** | 25d | 2009-11-13 A | 2009-12-15 A | 790 | 100% |  |  |  |  | 629.6h | 629.6h | 25,184 | 25,184 |
| 939 | 1.9.1.3.1.2.5.1 | ReqID(946) Creating Recurring Plan | 2d | 2009-11-30 A | 2009-12-01 A | 795 | 100% |  |  |  | Chen Yong-Lin | 16h | 16h | 640 | 640 |
| 940 | 1.9.1.3.1.2.5.2 | **ReqID (947) Viewing Recurring Plans** | 12d | 2009-12-02 A | 2009-12-15 A | 861 | 100% |  |  |  |  | 80h | 80h | 3,200 | 3,200 |
| 941 | 1.9.1.3.1.2.5.2.1 | Main Page | 2d | 2009-12-02 A | 2009-12-03 A |  | 100% |  |  |  | Chen Yong-Lin | 16h | 16h | 640 | 640 |
| 942 | 1.9.1.3.1.2.5.2.2 | Click Instance | 6d | 2009-12-04 A | 2009-12-11 A | 941 | 100% |  |  |  | Chen Yong-Lin | 48h | 48h | 1,920 | 1,920 |
| 943 | 1.9.1.3.1.2.5.2.3 | Edit/Delete | 2d | 2009-12-14 A | 2009-12-15 A | 942 | 100% |  |  |  | Chen Yong-Lin | 16h | 16h | 640 | 640 |
| 944 | 1.9.1.3.1.2.5.3 | **ReqID (948) Create One Time Job** | 7d | 2009-12-03 A | 2009-12-11 A |  | 100% |  |  |  |  | 56h | 56h | 2,240 | 2,240 |
| 945 | 1.9.1.3.1.2.5.3.1 | Firmware Update Main | 4d | 2009-12-03 A | 2009-12-08 A | 853 | 100% |  |  |  | Li Da-Peng | 32h | 32h | 1,280 | 1,280 |
| 946 | 1.9.1.3.1.2.5.3.2 | Firmware Update View | 2d | 2009-12-09 A | 2009-12-10 A | 945 | 100% |  |  |  | Li Da-Peng | 16h | 16h | 640 | 640 |
| 947 | 1.9.1.3.1.2.5.3.3 | Firmware Update Next | 1d | 2009-12-11 A | 2009-12-11 A | 946 | 100% |  |  |  | Li Da-Peng | 8h | 8h | 320 | 320 |
| 948 | 1.9.1.3.1.2.5.4 | Client Initiated Jobs | 3d | 2009-12-02 A | 2009-12-04 A | 856 | 100% |  |  |  | Chen Yong-Lin | 24h | 24h | 960 | 960 |

| ID | WBS | Task | Duration | Start | Finish | Predecessors | Complete | Constraint | Resources | Work | Actual work | Cost | Actual cost |
| --- | --- | --- | --- | --- | --- | --- | --- | --- | --- | --- | --- | --- | --- |
| 949 | 1.9.1.3.1.2.5.5 | **Reporting** | 24d | 2009-11-13 A | 2009-12-14 A |  | 100% |  |  | 453.6h | 453.6h | 18,144 | 18,144 |
| 950 | 1.9.1.3.1.2.5.5.1 | Design & Requirement Validation | 11d | 2009-11-13 A | 2009-11-27 A | 790 | 100% |  | Fan Bin [30%]; Zhang Zhi-Yu [30%]; Liao Qin-Qin [30%]; Ma Zhi-Hui [30%] | 105.6h | 105.6h | 4,224 | 4,224 |
| 951 | 1.9.1.3.1.2.5.5.2 | ReqID (769) - Application Usage | 2d | 2009-11-30 A | 2009-12-01 A | 950 | 100% |  | Liu Zhi-Qiang | 16h | 16h | 640 | 640 |
| 952 | 1.9.1.3.1.2.5.5.3 | ReqID (714) - Automated Check-Ups | 2d | 2009-12-02 A | 2009-12-03 A | 951 | 100% |  | Liu Zhi-Qiang | 16h | 16h | 640 | 640 |
| 953 | 1.9.1.3.1.2.5.5.4 | Device Issue Details | 2d | 2009-11-30 A | 2009-12-04 A | 952 | 100% |  | Liu Zhi-Qiang | 16h | 16h | 640 | 640 |
| 954 | 1.9.1.3.1.2.5.5.5 | Device List | 2d | 2009-11-30 A | 2009-12-04 A | 953 | 100% |  | Liu Zhi-Qiang | 16h | 16h | 640 | 640 |
| 955 | 1.9.1.3.1.2.5.5.6 | Device User List | 2d | 2009-12-02 A | 2009-12-07 A | 954 | 100% |  | Liu Zhi-Qiang | 16h | 16h | 640 | 640 |
| 956 | 1.9.1.3.1.2.5.5.7 | Devices by Manufacture | 2d | 2009-11-30 A | 2009-12-01 A | 950 | 100% |  | Liao Xue-Feng | 16h | 16h | 640 | 640 |
| 957 | 1.9.1.3.1.2.5.5.8 | ReqID (717) - Devices By Model | 2d | 2009-12-02 A | 2009-12-03 A | 956 | 100% |  | Liao Xue-Feng | 16h | 16h | 640 | 640 |
| 958 | 1.9.1.3.1.2.5.5.9 | Total Transactions | 2d | 2009-12-02 A | 2009-12-04 A | 957 | 100% |  | Liao Xue-Feng | 16h | 16h | 640 | 640 |
| 959 | 1.9.1.3.1.2.5.5.10 | Recurring Report | 5d | 2009-12-04 A | 2009-12-10 A | 958 | 100% |  | Liao Xue-Feng; Chen Luo-Jie | 60h | 60h | 2,400 | 2,400 |
| 960 | 1.9.1.3.1.2.5.5.11 | ReqID (713) - Device Status | 2d | 2009-12-04 A | 2009-12-07 A | 955 | 100% |  | Liu Zhi-Qiang | 16h | 16h | 640 | 640 |
| 961 | 1.9.1.3.1.2.5.5.12 | Device User Transactions | 2d | 2009-12-04 A | 2009-12-08 A | 960 | 100% |  | Liu Zhi-Qiang | 16h | 16h | 640 | 640 |
| 962 | 1.9.1.3.1.2.5.5.13 | Device Added | 2d | 2009-12-04 A | 2009-12-08 A | 961 | 100% |  | Liu Zhi-Qiang | 16h | 16h | 640 | 640 |
| 963 | 1.9.1.3.1.2.5.5.14 | ReqID (718) - Devices By Device Platform | 2d | 2009-12-04 A | 2009-12-09 A | 962 | 100% |  | Liu Zhi-Qiang | 16h | 16h | 640 | 640 |
| 964 | 1.9.1.3.1.2.5.5.15 | System User Activity | 2d | 2009-12-09 A | 2009-12-10 A | 963 | 100% |  | Liu Zhi-Qiang | 16h | 16h | 640 | 640 |
| 965 | 1.9.1.3.1.2.5.5.16 | Transaction Types | 2d | 2009-12-08 A | 2009-12-11 A | 964 | 100% |  | Liu Zhi-Qiang | 16h | 16h | 640 | 640 |
| 966 | 1.9.1.3.1.2.5.5.17 | **Dashboard Report** | 4d | 2009-12-11 A | 2009-12-14 A | 790 | 100% |  |  | 64h | 64h | 2,560 | 2,560 |
| 967 | 1.9.1.3.1.2.5.5.17.1 | Implementation | 4d | 2009-12-11 A | 2009-12-14 A | 959 | 100% |  | Liao Xue-Feng; Chen Yong-Lin | 64h | 64h | 2,560 | 2,560 |
| 968 | 1.9.1.3.1.3 | **IOP Integration - Symbian UIQ/Nokia S40/Windows Mobile Native/BlackBerry (P2K-SprintII)/CDMA** | 5d | 2009-12-14 A | 2009-12-18 A |  | 100% |  |  | 152h | 152h | 6,080 | 6,080 |
| 969 | 1.9.1.3.1.3.1 | Symbian UIQ | 5d | 2009-12-14 A | 2009-12-18 A |  | 100% | start no earlier than 2009-12-14 | Zhang Peng-Fei | 40h | 40h | 1,600 | 1,600 |
| 970 | 1.9.1.3.1.3.2 | Nokia S40 | 3d | 2009-12-14 A | 2009-12-16 A |  | 100% | start no earlier than 2009-12-14 | Gong Zhi | 24h | 24h | 960 | 960 |
| 971 | 1.9.1.3.1.3.3 | Windows Mobile Native | 4d | 2009-12-14 A | 2009-12-17 A |  | 100% | start no earlier than 2009-12-14 | Zhao WenXiu | 32h | 32h | 1,280 | 1,280 |
| 972 | 1.9.1.3.1.3.4 | blackberry | 2d | 2009-12-17 A | 2009-12-18 A |  | 100% | start no earlier than 2009-12-17 | Fan Bin | 16h | 16h | 640 | 640 |
| 973 | 1.9.1.3.1.3.5 | CDMA | 5d | 2009-12-14 A | 2009-12-18 A |  | 100% | finish no earlier than 2009-12-18 | Zhang ZhiYu | 40h | 40h | 1,600 | 1,600 |

| ID | WBS | Task | Type | Duration | Start | Finish | Predecessors | Complete | Remaining | Total slack | Constraint | Resources | Work | Actual work | Cost | Actual cost |
| --- | --- | --- | --- | --- | --- | --- | --- | --- | --- | --- | --- | --- | --- | --- | --- | --- |
| 974 | 1.9.1.3.1.4 | **Flex Code Optimization** |  | 18d | 2009-11-23 A | 2009-12-14 A |  | 100% |  |  |  |  | 72h | 72h | 2,880 | 2,880 |
| 975 | 1.9.1.3.1.4.1 | **Memory Usage Optimization** |  | 9d | 2009-11-23 A | 2009-12-03 A |  | 100% |  |  |  |  | 36h | 36h | 1,440 | 1,440 |
| 976 | 1.9.1.3.1.4.1.1 | Flex Code Review |  | 4d | 2009-11-23 A | 2009-11-26 A |  | 100% |  |  | start no earlier than 2009-11-23 | Du Zeng-Qiang [50%] | 16h | 16h | 640 | 640 |
| 977 | 1.9.1.3.1.4.1.2 | Memory Leak Check and Fix |  | 5d | 2009-11-27 A | 2009-12-03 A | 976 | 100% |  |  |  | Du Zeng-Qiang [50%] | 20h | 20h | 800 | 800 |
| 978 | 1.9.1.3.1.4.2 | **Flex Performance Enhancement** |  | 9d | 2009-12-04 A | 2009-12-14 A | 977 | 100% |  |  |  |  | 36h | 36h | 1,440 | 1,440 |
| 979 | 1.9.1.3.1.4.2.1 | Profiling of Performance Data |  | 4d | 2009-12-04 A | 2009-12-09 A |  | 100% |  |  |  | Du Zeng-Qiang [50%] | 16h | 16h | 640 | 640 |
| 980 | 1.9.1.3.1.4.2.2 | Ehance Rateplan for Performance |  | 5d | 2009-12-10 A | 2009-12-14 A | 979 | 100% |  |  |  | Du Zeng-Qiang [50%] | 20h | 20h | 800 | 800 |
| 981 | 1.9.1.3.1.5 | Installer Update |  | 1d | 2009-12-16 A | 2009-12-16 A |  | 100% |  |  | start no earlier than 2009-12-16 | Liao Qin-Qin | 8h | 8h | 320 | 320 |
| 982 | 1.9.1.3.1.6 | Integration Test & Sanity - DEV |  | 3d | 2009-12-17 A | 2009-12-21 A | 932, 938, 974 | 100% |  |  | start no earlier than 2009-12-17 | DEV | 24h | 24h | 960 | 960 |
| 983 | 1.9.1.3.2 | Drop for QA - Sprint III (From Trunk) | milestone | 0d | 2009-12-21 A | 2009-12-21 A | 982 | 100% |  |  |  | Peng Sheng-Kui |  |  |  |  |
| 984 | 1.9.1.3.3 | **Bug Fixing & QA** |  | 10d? | 2009-12-22 A | 2010-01-08 | 983 | 91% | 0.9d? | 0d |  |  | 2868h | 2796h | 113,440 | 110,560 |
| 985 | 1.9.1.3.3.1 | **QA** |  | 10d? | 2009-12-22 A | 2010-01-08 |  | 87% | 1.28d? | 0d |  |  | 1148h | 1076h | 44,640 | 41,760 |
| 986 | 1.9.1.3.3.1.1 | **Management** |  | 6.5d | 2009-12-22 A | 2009-12-30 A |  | 100% |  |  |  | Gao Hang; Chen Guo-Na; Geng Cheng | 156h | 156h | 6,240 | 6,240 |
| 987 | 1.9.1.3.3.1.1.1 | [ReqID 547]GUI mode Installer |  | 0.3d | 2009-12-22 A | 2009-12-22 A |  | 100% |  |  |  |  |  |  |  |  |
| 988 | 1.9.1.3.3.1.1.2 | [ReqID 451]Upgrade from previously deployed versions | milestone | 0d | 2009-12-22 A | 2009-12-22 A | 987 | 100% |  |  |  |  |  |  |  |  |
| 989 | 1.9.1.3.3.1.1.3 | [ReqID 546]Improved Error message |  | 0.1d | 2009-12-22 A | 2009-12-22 A | 988 | 100% |  |  |  |  |  |  |  |  |
| 990 | 1.9.1.3.3.1.1.4 | [ReqID 614]MMC Software Version information |  | 0.1d | 2009-12-22 A | 2009-12-22 A | 989 | 100% |  |  |  |  |  |  |  |  |
| 991 | 1.9.1.3.3.1.1.5 | [ReqID 628]New UI-HelpDesk |  | 1d | 2009-12-22 A | 2009-12-23 A | 990 | 100% |  |  |  |  |  |  |  |  |
| 992 | 1.9.1.3.3.1.1.6 | [ReqID 629]New UI-DeviceGroups |  | 1d | 2009-12-23 A | 2009-12-24 A | 991 | 100% |  |  |  |  |  |  |  |  |
| 993 | 1.9.1.3.3.1.1.7 | [ReqID 630]New UI-System Administration |  | 1d | 2009-12-24 A | 2009-12-25 A | 992 | 100% |  |  |  |  |  |  |  |  |
| 994 | 1.9.1.3.3.1.1.8 | [ReqID 631]New UI-Reporting |  | 1d | 2009-12-25 A | 2009-12-28 A | 993 | 100% |  |  |  |  |  |  |  |  |
| 995 | 1.9.1.3.3.1.1.9 | [ReqID 637]New UI-Login/Logout |  | 1d | 2009-12-28 A | 2009-12-29 A | 994 | 100% |  |  |  |  |  |  |  |  |
| 996 | 1.9.1.3.3.1.1.10 | [ReqID 765]Common Requirement | milestone | 0d | 2009-12-29 A | 2009-12-29 A | 995 | 100% |  |  |  |  |  |  |  |  |
| 997 | 1.9.1.3.3.1.1.11 | [ReqID 542]Improve Workflow Engine design | milestone | 0d | 2009-12-29 A | 2009-12-29 A | 996 | 100% |  |  |  |  |  |  |  |  |
| 998 | 1.9.1.3.3.1.1.12 | [ReqID 543]DM operation Management | milestone | 0d | 2009-12-29 A | 2009-12-29 A | 997 | 100% |  |  |  |  |  |  |  |  |
| 999 | 1.9.1.3.3.1.1.13 | Others inherited from MMC4.5 |  | 1d | 2009-12-29 A | 2009-12-30 A | 998 | 100% |  |  |  |  |  |  |  |  |
| 1000 | 1.9.1.3.3.1.2 | Bulk Engine |  | 3d | 2009-12-31 A | 2010-01-08 A | 999 | 100% |  |  |  | Gao Hang; Geng Cheng; Chen Guo-Na | 72h | 72h | 2,880 | 2,880 |
| 1001 | 1.9.1.3.3.1.3 | MMA Device Testing |  | 10d | 2009-12-22 A | 2010-01-08 A |  | 100% |  |  |  | He Jian-Liang; Wang Rui; Wang Ji-Zhong; Liu Qing-Bo | 320h | 320h | 12,800 | 12,800 |
| 1002 | 1.9.1.3.3.1.4 | MotoV9 Testing |  | 3d | 2009-12-22 A | 2009-12-24 A |  | 100% |  |  |  | Sun Lei; Wu Li-Rong | 48h | 48h | 1,920 | 1,920 |
| 1003 | 1.9.1.3.3.1.5 | Symbian Device Testing |  | 5d | 2009-12-22 A | 2009-12-28 A |  | 100% |  |  |  | Li Shuang; Chen Xiu-Qiong; Liu Zheng-Hua | 120h | 120h | 4,800 | 4,800 |
| 1004 | 1.9.1.3.3.1.6 | Windows Mobile Native Device Testing |  | 1d | 2009-12-29 A | 2009-12-29 A | 1003 | 100% |  |  |  | Li Shuang; Chen Xiu-Qiong; Liu Zheng-Hua | 24h | 24h | 960 | 960 |

| ID | WBS | Task | Type | Duration | Start | Finish | Predecessors | Complete | Remaining | Total slack | Free slack | Resources | Work | Actual work | Cost | Actual cost |
| --- | --- | --- | --- | --- | --- | --- | --- | --- | --- | --- | --- | --- | --- | --- | --- | --- |
| 1005 | 1.9.1.3.3.1.7 | **Sony Ericsson Device Testing** |  | 1d | 2009-12-30 A | 2009-12-30 A | 1004 | 100% |  |  |  | Li Shuang; Chen Xiu-Qiong; Liu Zheng-Hua | 32h | 32h | 960 | 960 |
| 1006 | 1.9.1.3.3.1.7.1 | [ReqID 767]Ericsson Enhancement requirements |  | 0.5d | 2009-12-30 A | 2009-12-30 A |  | 100% |  |  |  |  | 4h | 4h |  |  |
| 1007 | 1.9.1.3.3.1.7.2 | Sony Ericsson devices parameters setting |  | 0.5d | 2009-12-30 A | 2009-12-30 A | 1006 | 100% |  |  |  |  | 4h | 4h |  |  |
| 1008 | 1.9.1.3.3.1.8 | [ReqID 491]Support of OMA-DM LAWMO Specification |  | 2d | 2009-12-25 A | 2009-12-28 A | 1002 | 100% |  |  |  | Sun Lei; Wu Li-Rong | 32h | 32h | 1,280 | 1,280 |
| 1009 | 1.9.1.3.3.1.9 | CDMA Device Testing |  | 3d | 2009-12-29 A | 2009-12-31 A | 1008 | 100% |  |  |  | Sun Lei; Wu Li-Rong | 48h | 48h | 1,920 | 1,920 |
| 1010 | 1.9.1.3.3.1.10 | [ReqID 265]RIM BlackBerry Support |  | 3d | 2009-12-31 A | 2010-01-08 A | 1005 | 100% |  |  |  | Li Shuang; Chen Xiu-Qiong; Liu Zheng-Hua | 72h | 72h | 2,880 | 2,880 |
| 1011 | 1.9.1.3.3.1.11 | [ReqID 542]Improve Workflow Engine design |  | 2d | 2010-01-07 A | 2010-01-08 A | 1009 | 100% |  |  |  | Sun Lei; Wu Li-Rong | 32h | 32h | 1,280 | 1,280 |
| 1012 | 1.9.1.3.3.1.12 | **Webservice API manual testing** |  | 3d | 2009-12-22 A | 2009-12-24 |  | 99% | 0d | 7d |  | Xu Yan [50%] | 36h | 36h | 480 | 480 |
| 1013 | 1.9.1.3.3.1.12.1 | [ReqID 447]Add Integration |  | 0.5d | 2009-12-22 A | 2009-12-22 A |  | 100% |  |  |  |  | 4h | 4h |  |  |
| 1014 | 1.9.1.3.3.1.12.2 | [ReqID 636]New WS API Testing | milestone | 0d | 2009-12-22 | 2009-12-22 | 1013 |  |  | 9.5d |  |  |  |  |  |  |
| 1015 | 1.9.1.3.3.1.12.3 | Others Inherited from MMC4.5 |  | 2.5d | 2009-12-22 A | 2009-12-24 A | 1014 | 100% |  |  |  |  | 20h | 20h |  |  |
| 1016 | 1.9.1.3.3.1.13 | [ReqID 1105]New UI Performance |  | 3d | 2009-12-25 A | 2009-12-29 A | 1015 | 100% |  |  |  | Xu Yan [50%] | 12h | 12h | 480 | 480 |
| 1017 | 1.9.1.3.3.1.14 | [ReqID 317]E2E Performance testing |  | 4d | 2009-12-30 A | 2010-01-08 A | 1016 | 100% |  |  |  | Xu Yan [50%] | 16h | 16h | 640 | 640 |
| 1018 | 1.9.1.3.3.1.15 | Stability testing |  | 10d | 2009-12-22 A | 2010-01-08 A |  | 100% |  |  |  | Xu Yan [50%] | 40h | 40h | 1,600 | 1,600 |
| 1019 | 1.9.1.3.3.1.16 | **[ReqID 632]SMSC Interface** |  | 9d? | 2009-12-22 | 2010-01-07 |  |  |  | 1d |  | PS | 72h |  | 2,880 |  |
| 1020 | 1.9.1.3.3.1.16.1 | [ReqID 635]Ericsson SMSC |  | 3d? | 2009-12-22 | 2009-12-24 |  |  |  | 1d | 0d |  |  |  |  |  |
| 1021 | 1.9.1.3.3.1.16.2 | [ReqID 633]Lucent Alcatel SMSC |  | 3d? | 2009-12-25 | 2009-12-29 | 1020 |  |  | 1d | 0d |  |  |  |  |  |
| 1022 | 1.9.1.3.3.1.16.3 | [ReqID 634]Sprint SMSC |  | 3d? | 2009-12-30 | 2010-01-07 | 1021 |  |  | 1d |  |  |  |  |  |  |
| 1023 | 1.9.1.3.3.1.17 | Sanity Result Compare (QA&DEV) |  | 2d | 2009-12-22 A | 2009-12-23 A |  | 100% |  |  |  | Li Ming | 16h | 16h | 640 | 640 |
| 1024 | 1.9.1.3.3.2 | QA Report - Sprint III | milestone | 0d | 2010-01-08 A | 2010-01-08 A | 985 | 100% |  |  |  | Li Ming |  |  |  |  |
| 1025 | 1.9.1.3.3.3 | **DEV** |  | 10d | 2009-12-22 A | 2010-01-08 A |  | 100% |  |  |  |  | 1720h | 1720h | 68,800 | 68,800 |
| 1026 | 1.9.1.3.3.3.1 | DEV Bug Fixing |  | 10d | 2009-12-22 A | 2010-01-08 A |  | 100% |  |  |  | Zhang Zhi-Yu; Hu Guang-Zhi; Liu Zhi-Qiang; Fan Bin; Liao Qin-Qin; Li Da-Peng; Chen Luo-Jie; Tang Wen-Hua; Chen Yong-Lin; Xue Jun; Singh Anand; Wang Jia [50%]; Zhu Zhen-Xing; Lei Juan; Liao Xue-Feng; Su Chun-Bo; Ma Zhi-Hui; Li Jia; Meng De-Jun; Wang Xiu-Feng; Du Zeng-Qiang [50%] | 1600h | 1600h | 64,000 | 64,000 |
| 1027 | 1.9.1.3.3.3.2 | **Performance Tuning** |  | 10d | 2009-12-22 A | 2010-01-08 A |  | 100% |  |  |  |  | 120h | 120h | 4,800 | 4,800 |
| 1028 | 1.9.1.3.3.3.2.1 | UI |  | 10d | 2009-12-22 A | 2010-01-08 A |  | 100% |  |  |  | Zhong Zi-Long | 80h | 80h | 3,200 | 3,200 |
| 1029 | 1.9.1.3.3.3.2.2 | E2E |  | 10d | 2009-12-22 A | 2010-01-08 A |  | 100% |  |  |  | Wang Jia [50%] | 40h | 40h | 1,600 | 1,600 |
| 1030 | 1.9.1.3.4 | Sprint III Release | milestone | 0d | 2010-01-08 | 2010-01-08 | 1024 |  |  | 0d |  |  |  |  |  |  |
| 1031 | 1.10 | Scope Verification - MMC4.6 | milestone | 0d | 2010-01-08 | 2010-01-08 | 786 |  |  | 0d |  | Li Rick |  |  |  |  |
| 1032 | 1.11 | M:Feature Complete (S1:0, S2:10, S3:100) - Failed to Hit FC | milestone | 0d | 2010-01-08 | 2010-01-08 | 1031 |  |  | 0d |  |  |  |  |  |  |

Notes:
- 1032: Failed to meet FC exit criteria, please refer to the QA report for FC. / Approved by both of Eddie and Jarek that we can proceed with bug fixing & Testing to hit the Alpha milestone.

| ID | WBS | Task | Type | Duration | Start | Finish | Predecessors | Complete | Remaining | Total slack | Free slack | Resources | Work | Actual work | Cost | Actual cost |
| --- | --- | --- | --- | --- | --- | --- | --- | --- | --- | --- | --- | --- | --- | --- | --- | --- |
| 1033 | 1.12 | **Full Integration Test 1** |  | 50d? | 2010-01-11 A | 2010-03-31 | 1032 | 39% | 30.71d? | 0d |  |  | 12233.6h | 5566.92h | 471,103.45 | 215,956.66 |
| 1034 | 1.12.1 | **Build Drop FI #1** |  | 7d? | 2010-01-11 A | 2010-01-19 |  | 90% | 0.71d? | 0d |  | Peng Sheng-Kui | 2036h | 1982.31h | 78,560 | 76,412.2 |
| 1035 | 1.12.1.1 | **QA** |  | 7d? | 2010-01-11 A | 2010-01-19 |  | 84% | 1.11d? | 0d |  |  | 748h | 700h | 27,040 | 25,120 |
| 1036 | 1.12.1.1.1 | **QA MAT Cycle 1** |  | 7d? | 2010-01-11 A | 2010-01-19 |  | 83% | 1.17d? | 0d |  |  | 732h | 684h | 26,400 | 24,480 |
| 1037 | 1.12.1.1.1.1 | **Management** |  | 6d | 2010-01-11 A | 2010-01-18 |  | 99% | 0d | 1d |  | Gao Hang; Chen Guo-Na; Geng Cheng | 192h | 192h | 5,760 | 5,760 |
| 1038 | 1.12.1.1.1.1.1 | [ReqID 547]GUI mode Installer |  | 0.5d | 2010-01-11 A | 2010-01-11 A |  | 100% |  |  |  |  | 4h | 4h |  |  |
| 1039 | 1.12.1.1.1.1.2 | [ReqID 546]Improved Error message |  | 0.1d | 2010-01-11 A | 2010-01-11 A | 1038 | 100% |  |  |  |  | 0.8h | 0.8h |  |  |
| 1040 | 1.12.1.1.1.1.3 | [ReqID 614]MMC Software Version information |  | 0.1d | 2010-01-11 A | 2010-01-11 A | 1039 | 100% |  |  |  |  | 0.8h | 0.8h |  |  |
| 1041 | 1.12.1.1.1.1.4 | [ReqID 628]New UI-HelpDesk |  | 1d | 2010-01-11 A | 2010-01-12 A | 1040 | 100% |  |  |  |  | 8h | 8h |  |  |
| 1042 | 1.12.1.1.1.1.5 | [ReqID 629]New UI-DeviceGroups |  | 1d | 2010-01-12 A | 2010-01-13 A | 1041 | 100% |  |  |  |  | 8h | 8h |  |  |
| 1043 | 1.12.1.1.1.1.6 | [ReqID 630]New UI-System Administration |  | 1d | 2010-01-13 A | 2010-01-14 A | 1042 | 100% |  |  |  |  | 8h | 8h |  |  |
| 1044 | 1.12.1.1.1.1.7 | [ReqID 631]New UI-Reporting |  | 1d | 2010-01-14 A | 2010-01-15 A | 1043 | 100% |  |  |  |  | 8h | 8h |  |  |
| 1045 | 1.12.1.1.1.1.8 | [ReqID 637]New UI-Login/Logout |  | 0.3d | 2010-01-15 A | 2010-01-15 A | 1044 | 100% |  |  |  |  | 2.4h | 2.4h |  |  |
| 1046 | 1.12.1.1.1.1.9 | [ReqID 765]Common Requirement | milestone | 0d | 2010-01-15 | 2010-01-15 | 1045 |  |  | 2d | 0d |  |  |  |  |  |
| 1047 | 1.12.1.1.1.1.10 | [ReqID 542]Improve Workflow Engine design | milestone | 0d | 2010-01-15 | 2010-01-15 | 1046 |  |  | 2d | 0d |  |  |  |  |  |
| 1048 | 1.12.1.1.1.1.11 | [ReqID 543]DM operation Management | milestone | 0d | 2010-01-15 | 2010-01-15 | 1047 |  |  | 2d |  |  |  |  |  |  |
| 1049 | 1.12.1.1.1.1.12 | Others inherited from MMC4.5 |  | 1d | 2010-01-18 A | 2010-01-18 A | 1048 | 100% |  |  |  |  | 8h | 8h |  |  |
| 1050 | 1.12.1.1.1.2 | Bulk Engine |  | 1d | 2010-01-19 A | 2010-01-19 A | 1049 | 100% |  |  |  | Gao Hang; Geng Cheng; Chen Guo-Na | 24h | 24h | 960 | 960 |
| 1051 | 1.12.1.1.1.3 | MMA Device Testing |  | 7d | 2010-01-11 A | 2010-01-19 A |  | 100% |  |  |  | He Jian-Liang; Wang Rui; Wang Ji-Zhong; Liu Qing-Bo | 224h | 224h | 8,960 | 8,960 |
| 1052 | 1.12.1.1.1.4 | MotoV9 Testing |  | 1d | 2010-01-11 A | 2010-01-11 A |  | 100% |  |  |  | Sun Lei; Wu Li-Rong | 16h | 16h | 640 | 640 |
| 1053 | 1.12.1.1.1.5 | Symbian Device Testing |  | 3d | 2010-01-11 A | 2010-01-13 A |  | 100% |  |  |  | Li Shuang; Chen Xiu-Qiong; Liu Zheng-Hua | 72h | 72h | 2,880 | 2,880 |
| 1054 | 1.12.1.1.1.6 | Windows Mobile Native Device Testing |  | 1d | 2010-01-14 A | 2010-01-14 A | 1053 | 100% |  |  |  | Li Shuang; Chen Xiu-Qiong; Liu Zheng-Hua | 24h | 24h | 960 | 960 |
| 1055 | 1.12.1.1.1.7 | **Sony Ericsson Device Testing** |  | 1d | 2010-01-15 A | 2010-01-15 A | 1054 | 100% |  |  |  | Li Shuang; Chen Xiu-Qiong; Liu Zheng-Hua | 32h | 32h | 960 | 960 |
| 1056 | 1.12.1.1.1.7.1 | [ReqID 767]Ericsson Enhancement requirements |  | 0.5d | 2010-01-15 A | 2010-01-15 A |  | 100% |  |  |  |  | 4h | 4h |  |  |
| 1057 | 1.12.1.1.1.7.2 | Sony Ericsson devices parameters setting |  | 0.5d | 2010-01-15 A | 2010-01-15 A | 1056 | 100% |  |  |  |  | 4h | 4h |  |  |
| 1058 | 1.12.1.1.1.8 | [ReqID 491]Support of OMA-DM LAWMO Specification |  | 0.5d | 2010-01-12 A | 2010-01-12 A | 1052 | 100% |  |  |  | Sun Lei; Wu Li-Rong | 8h | 8h | 320 | 320 |
| 1059 | 1.12.1.1.1.9 | CDMA Device Testing |  | 1d | 2010-01-12 A | 2010-01-13 A | 1058 | 100% |  |  |  | Sun Lei; Wu Li-Rong | 16h | 16h | 640 | 640 |
| 1060 | 1.12.1.1.1.10 | [ReqID 265]RIM BlackBerry Support |  | 1d | 2010-01-18 A | 2010-01-18 A | 1055 | 100% |  |  |  | Li Shuang; Chen Xiu-Qiong; Liu Zheng-Hua | 24h | 24h | 960 | 960 |
| 1061 | 1.12.1.1.1.11 | [ReqID 542]Improve Workflow Engine design |  | 0.5d | 2010-01-19 A | 2010-01-19 A | 1060 | 100% |  |  |  | Sun Lei; Wu Li-Rong | 8h | 8h | 320 | 320 |

| ID | WBS | Task | Type | Duration | Start | Finish | Predecessors | Complete | Remaining | Total slack | Free slack | Constraint | Resources | Work | Actual work | Cost | Actual cost |
| --- | --- | --- | --- | --- | --- | --- | --- | --- | --- | --- | --- | --- | --- | --- | --- | --- | --- |
| 1062 | 1.12.1.1.1.12 | **Webservice API manual testing** |  | 2d | 2010-01-11 A | 2010-01-12 |  | 99% | 0d | 5d |  |  | Xu Yan [50%] | 24h | 24h | 320 | 320 |
| 1063 | 1.12.1.1.1.12.1 | [ReqID 447]Add Integration |  | 0.3d | 2010-01-11 A | 2010-01-11 A |  | 100% |  |  |  | start no earlier than 2010-01-11 |  | 2.4h | 2.4h |  |  |
| 1064 | 1.12.1.1.1.12.2 | [ReqID 636]New WS API Testing | milestone | 0d | 2010-01-11 | 2010-01-11 | 1063 |  |  | 6.7d |  |  |  |  |  |  |  |
| 1065 | 1.12.1.1.1.12.3 | Others Inherited from MMC4.5 |  | 1.7d | 2010-01-11 A | 2010-01-12 A | 1064 | 100% |  |  |  |  |  | 13.6h | 13.6h |  |  |
| 1066 | 1.12.1.1.1.13 | [ReqID 1105]New UI Performance |  | 3d | 2010-01-13 A | 2010-01-15 A | 1065 | 100% |  |  |  |  | Xu Yan [50%] | 12h | 12h | 480 | 480 |
| 1067 | 1.12.1.1.1.14 | [ReqID 317]E2E Performance testing |  | 2d | 2010-01-18 A | 2010-01-19 A | 1066 | 100% |  |  |  |  | Xu Yan [50%] | 8h | 8h | 320 | 320 |
| 1068 | 1.12.1.1.1.15 | **[ReqID 632]SMSC Interface** |  | 6d? | 2010-01-11 | 2010-01-18 |  |  |  | 1d |  |  | PS | 48h |  | 1,920 |  |
| 1069 | 1.12.1.1.1.15.1 | [ReqID 635]Ericsson SMSC |  | 2d? | 2010-01-11 | 2010-01-12 |  |  |  | 1d | 0d |  |  |  |  |  |  |
| 1070 | 1.12.1.1.1.15.2 | [ReqID 633]Lucent Alcatel SMSC |  | 2d? | 2010-01-13 | 2010-01-14 | 1069 |  |  | 1d | 0d |  |  |  |  |  |  |
| 1071 | 1.12.1.1.1.15.3 | [ReqID 634]Sprint SMSC |  | 2d? | 2010-01-15 | 2010-01-18 | 1070 |  |  | 1d |  |  |  |  |  |  |  |
| 1072 | 1.12.1.1.2 | Sanity Result Compare (QA&DEV) |  | 2d | 2010-01-11 A | 2010-01-12 A |  | 100% |  |  |  |  | Li Ming | 16h | 16h | 640 | 640 |
| 1073 | 1.12.1.1.3 | QA Report - MAT Cycle 1 | milestone | 0d | 2010-01-19 | 2010-01-19 | 1036 |  |  | 0d |  |  | Li Ming; Yang Jing; Xu Yan |  |  |  |  |
| 1074 | 1.12.1.2 | **DEV** |  | 7d | 2010-01-11 A | 2010-01-19 A |  | 100% |  |  |  |  |  | 1232h | 1232h | 49,280 | 49,280 |
| 1075 | 1.12.1.2.1 | Bug Fixing |  | 7d | 2010-01-11 A | 2010-01-19 A |  | 100% |  |  |  |  | Zhang Zhi-Yu; Hu Guang-Zhi; Liu Zhi-Qiang; Fan Bin; Liao Qin-Qin; Li Da-Peng; Chen Luo-Jie; Tang Wen-Hua; Chen Yong-Lin; Xue Jun; Singh Anand [50%]; Wang Jia; Zhu Zhen-Xing; Lei Juan; Liao Xue-Feng; Su Chun-Bo; Ma Zhi-Hui; Li Jia; Zhong Zi-Long; Meng De-Jun; Wang Xiu-Feng | 1148h | 1148h | 45,920 | 45,920 |
| 1076 | 1.12.1.2.2 | **Performance Tuning** |  | 7d | 2010-01-11 A | 2010-01-19 A |  | 100% |  |  |  |  |  | 84h | 84h | 3,360 | 3,360 |
| 1077 | 1.12.1.2.2.1 | UI |  | 7d | 2010-01-11 A | 2010-01-19 A |  | 100% |  |  |  |  | Zhong Zi-Long | 56h | 56h | 2,240 | 2,240 |
| 1078 | 1.12.1.2.2.2 | E2E |  | 7d | 2010-01-11 A | 2010-01-19 A |  | 100% |  |  |  |  | Wang Jia [50%] | 28h | 28h | 1,120 | 1,120 |
| 1079 | 1.12.2 | **Build Drop FI #2** |  | 11d? | 2010-01-19 A | 2010-02-03 | 1034 | 92% | 0.93d? | 0d |  |  |  | 3134.27h | 3062.27h | 121,530.67 | 118,650.67 |
| 1080 | 1.12.2.1 | **QA** |  | 11d? | 2010-01-19 A | 2010-02-03 |  | 88% | 1.32d? | 0d |  |  |  | 1210.27h | 1138.27h | 44,570.67 | 41,690.67 |
| 1081 | 1.12.2.1.1 | Build Drop FI #2 - 1 | milestone | 0d | 2010-01-19 A | 2010-01-19 A |  | 100% |  |  |  |  | Peng Sheng-Kui |  |  |  |  |
| 1082 | 1.12.2.1.2 | Build Drop FI #2 - 2 | milestone | 0d | 2010-01-26 A | 2010-01-26 A |  | 100% |  |  |  | start no earlier than 2010-01-26 | Peng Sheng-Kui |  |  |  |  |
| 1083 | 1.12.2.1.3 | **QA Full Regression Cycle 2** |  | 11d? | 2010-01-20 A | 2010-02-03 |  | 88% | 1.36d? | 0d |  |  |  | 1194.27h | 1122.27h | 43,930.67 | 41,050.67 |
| 1084 | 1.12.2.1.3.1 | **Management** |  | 8d | 2010-01-20 A | 2010-01-29 |  | 99% | 0d | 3d |  |  | Gao Hang; Chen Guo-Na; Geng Cheng | 256h | 256h | 7,680 | 7,680 |
| 1085 | 1.12.2.1.3.1.1 | [ReqID 547]GUI mode Installer |  | 0.8d | 2010-01-20 A | 2010-01-20 A |  | 100% |  |  |  |  |  | 6.4h | 6.4h |  |  |
| 1086 | 1.12.2.1.3.1.2 | [ReqID 451]Upgrade from previously deployed versions | milestone | 0d | 2010-01-20 | 2010-01-20 | 1085 |  |  | 10.2d |  |  |  |  |  |  |  |
| 1087 | 1.12.2.1.3.1.3 | [ReqID 546]Improved Error message |  | 0.1d | 2010-01-20 A | 2010-01-20 A | 1086 | 100% |  |  |  |  |  | 0.8h | 0.8h |  |  |
| 1088 | 1.12.2.1.3.1.4 | [ReqID 614]MMC Software Version information |  | 0.1d | 2010-01-20 A | 2010-01-20 A | 1087 | 100% |  |  |  |  |  | 0.8h | 0.8h |  |  |
| 1089 | 1.12.2.1.3.1.5 | [ReqID 628]New UI-HelpDesk |  | 1d | 2010-01-21 A | 2010-01-21 A | 1088 | 100% |  |  |  |  |  | 8h | 8h |  |  |
| 1090 | 1.12.2.1.3.1.6 | [ReqID 629]New UI-DeviceGroups |  | 1.5d | 2010-01-22 A | 2010-01-25 A | 1089 | 100% |  |  |  |  |  | 12h | 12h |  |  |
| 1091 | 1.12.2.1.3.1.7 | [ReqID 630]New UI-System Administration |  | 1d | 2010-01-25 A | 2010-01-26 A | 1090 | 100% |  |  |  |  |  | 8h | 8h |  |  |
| 1092 | 1.12.2.1.3.1.8 | [ReqID 631]New UI-Reporting |  | 1d | 2010-01-26 A | 2010-01-27 A | 1091 | 100% |  |  |  |  |  | 8h | 8h |  |  |
| 1093 | 1.12.2.1.3.1.9 | [ReqID 637]New UI-Login/Logout |  | 1d | 2010-01-27 A | 2010-01-28 A | 1092 | 100% |  |  |  |  |  | 8h | 8h |  |  |
| 1094 | 1.12.2.1.3.1.10 | [ReqID 765]Common Requirement | milestone | 0d | 2010-01-28 | 2010-01-28 | 1093 |  |  | 4.5d | 0d |  |  |  |  |  |  |
| 1095 | 1.12.2.1.3.1.11 | [ReqID 542]Improve Workflow Engine design | milestone | 0d | 2010-01-28 | 2010-01-28 | 1094 |  |  | 4.5d | 0d |  |  |  |  |  |  |
| 1096 | 1.12.2.1.3.1.12 | [ReqID 543]DM operation Management | milestone | 0d | 2010-01-28 | 2010-01-28 | 1095 |  |  | 4.5d |  |  |  |  |  |  |  |
| 1097 | 1.12.2.1.3.1.13 | Others inherited from MMC4.5 |  | 1.5d | 2010-01-28 A | 2010-01-29 A | 1096 | 100% |  |  |  |  |  | 12h | 12h |  |  |
| 1098 | 1.12.2.1.3.2 | Bulk Engine |  | 3d | 2010-01-29 A | 2010-02-03 A | 1097 | 100% |  |  |  |  | Gao Hang; Geng Cheng; Chen Guo-Na | 72h | 72h | 2,880 | 2,880 |
| 1099 | 1.12.2.1.3.3 | MMA Device Testing |  | 11d | 2010-01-20 A | 2010-02-03 A |  | 100% |  |  |  |  | Dong Ying-Ying; Wang Ji-Zhong; Yu Jian-Lan | 256h | 256h | 10,240 | 10,240 |
| 1100 | 1.12.2.1.3.4 | MotoV9 Testing |  | 3d | 2010-01-20 A | 2010-01-22 A |  | 100% |  |  |  |  | Sun Lei; Wu Li-Rong | 48h | 48h | 1,920 | 1,920 |
| 1101 | 1.12.2.1.3.5 | Symbian Device Testing |  | 7d | 2010-01-20 A | 2010-01-28 A |  | 100% |  |  |  |  | Li Shuang; Chen Xiu-Qiong; Liu Qiong-Bo | 164.27h | 164.27h | 6,570.67 | 6,570.67 |
| 1102 | 1.12.2.1.3.6 | Windows Mobile Native Device Testing |  | 1d | 2010-01-29 A | 2010-01-29 A | 1101 | 100% |  |  |  |  | Li Shuang; Chen Xiu-Qiong; Liu Qiong-Bo | 23.47h | 23.47h | 938.67 | 938.67 |

| ID | WBS | Task | Type | Duration | Start | Finish | Predecessors | Complete | Remaining | Total slack | Free slack | Resources | Work | Actual work | Cost | Actual cost |
| --- | --- | --- | --- | --- | --- | --- | --- | --- | --- | --- | --- | --- | --- | --- | --- | --- |
| 1103 | 1.12.2.1.3.7 | **Sony Ericsson Device Testing** |  | 1d | 2010-02-01 A | 2010-02-01 A | 1102 | 100% |  |  |  | Li Shuang; Chen Xiu-Qiong; Liu Qiong-Bo | 31.07h | 31.07h | 922.67 | 922.67 |
| 1104 | 1.12.2.1.3.7.1 | [ReqID 767]Ericsson Enhancement requirements |  | 0.5d | 2010-02-01 A | 2010-02-01 A |  | 100% |  |  |  |  | 4h | 4h |  |  |
| 1105 | 1.12.2.1.3.7.2 | Sony Ericsson devices parameters setting |  | 0.5d | 2010-02-01 A | 2010-02-01 A | 1104 | 100% |  |  |  |  | 4h | 4h |  |  |
| 1106 | 1.12.2.1.3.8 | [ReqID 491]Support of OMA-DM LAWMO Specification |  | 2d | 2010-01-25 A | 2010-01-26 A | 1100 | 100% |  |  |  | Sun Lei; Wu Li-Rong | 32h | 32h | 1,280 | 1,280 |
| 1107 | 1.12.2.1.3.9 | CDMA Device Testing |  | 4d | 2010-01-27 A | 2010-02-01 A | 1106 | 100% |  |  |  | Sun Lei; Wu Li-Rong | 64h | 64h | 2,560 | 2,560 |
| 1108 | 1.12.2.1.3.10 | [ReqID 265]RIM BlackBerry Support |  | 2d | 2010-02-02 A | 2010-02-03 A | 1103 | 100% |  |  |  | Li Shuang; Chen Xiu-Qiong; Liu Qiong-Bo | 39.47h | 39.47h | 1,578.67 | 1,578.67 |
| 1109 | 1.12.2.1.3.11 | [ReqID 542]Improve Workflow Engine design |  | 2d | 2010-02-01 A | 2010-02-03 A | 1107 | 100% |  |  |  | Sun Lei; Wu Li-Rong | 32h | 32h | 1,280 | 1,280 |
| 1110 | 1.12.2.1.3.12 | **Webservice API manual testing** |  | 3d | 2010-01-20 A | 2010-01-22 |  | 99% | 0d | 8d |  | Xu Yan [50%] | 36h | 36h | 480 | 480 |
| 1111 | 1.12.2.1.3.12.1 | [ReqID 447]Add Integration |  | 1d | 2010-01-20 A | 2010-01-20 A |  | 100% |  |  |  |  | 8h | 8h |  |  |
| 1112 | 1.12.2.1.3.12.2 | [ReqID 636]New WS API Testing | milestone | 0d | 2010-01-20 | 2010-01-20 | 1111 |  |  | 10d |  |  |  |  |  |  |
| 1113 | 1.12.2.1.3.12.3 | Others Inherited from MMC4.5 |  | 2d | 2010-01-21 A | 2010-01-22 A | 1112 | 100% |  |  |  |  | 16h | 16h |  |  |
| 1114 | 1.12.2.1.3.13 | [ReqID 1105]New UI Performance |  | 3d | 2010-01-25 A | 2010-01-27 A | 1113 | 100% |  |  |  | Xu Yan [50%] | 12h | 12h | 480 | 480 |
| 1115 | 1.12.2.1.3.14 | [ReqID 317]E2E Performance testing |  | 4d | 2010-01-28 A | 2010-02-02 A | 1114 | 100% |  |  |  | Xu Yan [50%] | 16h | 16h | 640 | 640 |
| 1116 | 1.12.2.1.3.15 | Stability testing |  | 10d | 2010-01-20 A | 2010-02-02 A |  | 100% |  |  |  | Xu Yan [50%] | 40h | 40h | 1,600 | 1,600 |
| 1117 | 1.12.2.1.3.16 | **[ReqID 632]SMSC Interface** |  | 9d? | 2010-01-20 | 2010-02-01 |  |  |  | 2d |  | PS | 72h |  | 2,880 |  |
| 1118 | 1.12.2.1.3.16.1 | [ReqID 635]Ericsson SMSC |  | 3d? | 2010-01-20 | 2010-01-22 |  |  |  | 2d | 0d |  |  |  |  |  |
| 1119 | 1.12.2.1.3.16.2 | [ReqID 633]Lucent Alcatel SMSC |  | 3d? | 2010-01-25 | 2010-01-27 | 1118 |  |  | 2d | 0d |  |  |  |  |  |
| 1120 | 1.12.2.1.3.16.3 | [ReqID 634]Sprint SMSC |  | 3d? | 2010-01-28 | 2010-02-01 | 1119 |  |  | 2d |  |  |  |  |  |  |
| 1121 | 1.12.2.1.4 | Sanity Result Compare (QA&DEV) |  | 2d | 2010-01-20 A | 2010-01-21 A |  | 100% |  |  |  | Li Ming | 16h | 16h | 640 | 640 |
| 1122 | 1.12.2.1.5 | QA Report - Full Regression Cycle 2 | milestone | 0d | 2010-02-03 A | 2010-02-03 A | 1083 | 100% |  |  |  | Li Ming; Liu Ying; Xu Yan |  |  |  |  |
| 1123 | 1.12.2.2 | **DEV** |  | 11d | 2010-01-20 A | 2010-02-03 A |  | 100% |  |  |  |  | 1924h | 1924h | 76,960 | 76,960 |
| 1124 | 1.12.2.2.1 | Bug Fixing |  | 11d | 2010-01-20 A | 2010-02-03 A |  | 100% |  |  |  | Zhang Zhi-Yu; Hu Guang-Zhi; Liu Zhi-Qiang; Fan Bin; Liao Qin-Qin; Li Da-Peng; Chen Luo-Jie; Tang Wen-Hua; Chen Yong-Lin; Xue Jun; Singh Anand [50%]; Wang Jia; Zhu Zhen-Xing; Lei Juan; Liao Xue-Feng; Su Chun-Bo; Ma Zhi-Hui; Li Jia; Zhong Zi-Long; Meng De-Jun; Wang Xiu-Feng | 1804h | 1804h | 72,160 | 72,160 |
| 1125 | 1.12.2.2.2 | **Performance Tuning** |  | 10d | 2010-01-20 A | 2010-02-02 A |  | 100% |  |  |  |  | 120h | 120h | 4,800 | 4,800 |
| 1126 | 1.12.2.2.2.1 | UI |  | 10d | 2010-01-20 A | 2010-02-02 A |  | 100% |  |  |  | Zhong Zi-Long | 80h | 80h | 3,200 | 3,200 |
| 1127 | 1.12.2.2.2.2 | E2E |  | 10d | 2010-01-20 A | 2010-02-02 A |  | 100% |  |  |  | Wang Jia [50%] | 40h | 40h | 1,600 | 1,600 |

| ID | WBS | Task | Type | Duration | Start | Finish | Predecessors | Complete | Remaining | Total slack | Resources | Work | Actual work | Cost | Actual cost |
| --- | --- | --- | --- | --- | --- | --- | --- | --- | --- | --- | --- | --- | --- | --- | --- |
| 1128 | 1.12.3 | **Build Drop FI #3** |  | 3d | 2010-02-04 A | 2010-02-08 | 1079 | 49% | 1.52d | 0d |  | 659.07h | 329.54h | 26,362.84 | 13,181.79 |
| 1129 | 1.12.3.1 | **QA** |  | 3d | 2010-02-04 A | 2010-02-08 |  | 50% | 1.5d | 0d |  | 288h | 144h | 11,520 | 5,760 |
| 1130 | 1.12.3.1.1 | **QA Sanity Cycle 3** |  | 3d | 2010-02-04 A | 2010-02-08 | 1125 | 50% | 1.5d | 0d |  | 288h | 144h | 11,520 | 5,760 |
| 1131 | 1.12.3.1.1.1 | Sanity Testing |  | 3d | 2010-02-04 A | 2010-02-08 |  | 50% | 1.5d | 0d | Li Yue-Hong; Chen Xiu-Qiong; Li Shuang; Sun Lei; Liu Qing-Bo; Wang Ji-Zhong; Chen Guo-Na; Geng Cheng; Yu Jian-Lan; Dong Ying-Ying; Wu Li-Rong; Gao Hang | 288h | 144h | 11,520 | 5,760 |
| 1132 | 1.12.3.1.2 | QA Report - Sanity Cycle 3 | milestone | 0d | 2010-02-08 | 2010-02-08 | 1130 |  |  | 0d | Li Ming; Liu Ying; Xu Yan |  |  |  |  |
| 1133 | 1.12.3.2 | **DEV** |  | 3d | 2010-02-04 A | 2010-02-08 |  | 49% | 1.53d | 0d |  | 371.07h | 185.54h | 14,842.84 | 7,421.79 |
| 1134 | 1.12.3.2.1 | Bug Fixing |  | 3d | 2010-02-04 A | 2010-02-08 |  | 49% | 1.53d | 0d | Zhang Zhi-Yu; Liu Zhi-Qiang; Li Da-Peng; Chen Luo-Jie; Tang Wen-Hua; Chen Yong-Lin; Xue Jun; Singh Anand; Wang Jia; Zhu Zhen-Xing; Lei Juan; Liao Xue-Feng; Ma Zhi-Hui; Li Jia; Zhong Zi-Long [80%]; Meng De-Jun | 371.07h | 185.54h | 14,842.84 | 7,421.79 |
| 1135 | 1.12.4 | **Build Drop FI #4** |  | 8d? | 2010-02-09 | 2010-03-02 | 1128 |  |  | 0d |  | 1977.25h |  | 73,969.97 |  |
| 1136 | 1.12.4.1 | **QA** |  | 8d? | 2010-02-09 | 2010-03-02 |  |  |  | 0d |  | 972h |  | 33,760 |  |
| 1137 | 1.12.4.1.1 | **QA MAT Cycle 4** |  | 8d? | 2010-02-09 | 2010-03-02 |  |  |  | 0d |  | 948h |  | 32,800 |  |
| 1138 | 1.12.4.1.1.1 | **Management** |  | 8d? | 2010-02-09 | 2010-03-02 |  |  |  | 0d | Gao Hang; Chen Guo-Na; Geng Cheng | 948h |  | 32,800 |  |
| 1139 | 1.12.4.1.1.1.1 | [ReqID 547]GUI mode Installer |  | 0.5d | 2010-02-09 | 2010-02-09 |  |  |  | 0d |  | 8h |  |  |  |
| 1140 | 1.12.4.1.1.1.2 | [ReqID 546]Improved Error message |  | 0.1d | 2010-02-09 | 2010-02-09 | 1139 |  |  | 0d |  | 0.8h |  |  |  |
| 1141 | 1.12.4.1.1.1.3 | [ReqID 614]MMC Software Version information |  | 0.1d | 2010-02-09 | 2010-02-09 | 1140 |  |  | 0d |  | 0.8h |  |  |  |
| 1142 | 1.12.4.1.1.1.4 | [ReqID 628]New UI-HelpDesk |  | 1d | 2010-02-09 | 2010-02-10 | 1141 |  |  | 0d |  | 8h |  |  |  |
| 1143 | 1.12.4.1.1.1.5 | [ReqID 629]New UI-DeviceGroups |  | 1.5d | 2010-02-10 | 2010-02-24 | 1142 |  |  | 0d |  | 12h |  |  |  |
| 1144 | 1.12.4.1.1.1.6 | [ReqID 630]New UI-System Administration |  | 1d | 2010-02-24 | 2010-02-25 | 1143 |  |  | 0d |  | 8h |  |  |  |
| 1145 | 1.12.4.1.1.1.7 | [ReqID 631]New UI-Reporting |  | 1d | 2010-02-25 | 2010-02-26 | 1144 |  |  | 0d |  | 8h |  |  |  |
| 1146 | 1.12.4.1.1.1.8 | [ReqID 637]New UI-Login/Logout |  | 0.3d | 2010-02-26 | 2010-02-26 | 1145 |  |  | 0d |  | 2.4h |  |  |  |
| 1147 | 1.12.4.1.1.1.9 | [ReqID 765]Common Requirement | milestone | 0d | 2010-02-26 | 2010-02-26 | 1146 |  |  | 0d |  |  |  |  |  |
| 1148 | 1.12.4.1.1.1.10 | [ReqID 542]Improve Workflow Engine design | milestone | 0d | 2010-02-26 | 2010-02-26 | 1147 |  |  | 0d |  |  |  |  |  |
| 1149 | 1.12.4.1.1.1.11 | [ReqID 543]DM operation Management | milestone | 0d | 2010-02-26 | 2010-02-26 | 1148 |  |  | 0d |  |  |  |  |  |
| 1150 | 1.12.4.1.1.1.12 | Others inherited from MMC4.5 |  | 1d | 2010-02-26 | 2010-03-01 | 1149 |  |  | 0d |  | 8h |  |  |  |
| 1151 | 1.12.4.1.1.1.13 | Bulk Engine |  | 0.5d | 2010-03-01 | 2010-03-01 | 1150 |  |  | 0d | Gao Hang; Geng Cheng; Chen Guo-Na | 12h |  | 480 |  |
| 1152 | 1.12.4.1.1.1.14 | MMA Device Testing |  | 8d | 2010-02-09 | 2010-03-02 |  |  |  | 0d | Dong Ying-Ying; Yu Jian-Lan; Liu Qing-Bo; Li Yue-Hong | 256h |  | 10,240 |  |
| 1153 | 1.12.4.1.1.1.15 | MotoV9 Testing |  | 1d | 2010-03-02 | 2010-03-02 | 1151 |  |  | 0d | Geng Cheng; Gao Hang; Chen Guo-Na | 24h |  | 960 |  |
| 1154 | 1.12.4.1.1.1.16 | Symbian Device Testing |  | 5d | 2010-02-09 | 2010-02-25 |  |  |  | 0d | Li Shuang; Chen Xiu-Qiong | 80h |  | 3,200 |  |
| 1155 | 1.12.4.1.1.1.17 | Windows Mobile Native Device Testing |  | 2d | 2010-02-09 | 2010-02-10 |  |  |  | 0d | Wu Li-Rong; Sun Lei | 32h |  | 1,280 |  |

| ID | WBS | Task | Type | Duration | Start | Finish | Predecessors | Total slack | Free slack | Constraint | Resources | Work | Cost |
| --- | --- | --- | --- | --- | --- | --- | --- | --- | --- | --- | --- | --- | --- |
| 1156 | 1.12.4.1.1.1.18 | **Sony Ericsson Device Testing** |  | 2d | 2010-02-26 | 2010-03-01 | 1154 | 0d |  |  | Li Shuang; Chen Xiu-Qiong | 40h | 1,280 |
| 1157 | 1.12.4.1.1.1.18.1 | [ReqID 767]Ericsson Enhancement requirements |  | 1d | 2010-02-26 | 2010-02-26 |  | 0d |  |  |  | 4h |  |
| 1158 | 1.12.4.1.1.1.18.2 | Sony Ericsson devices parameters setting |  | 1d | 2010-03-01 | 2010-03-01 | 1157 | 0d |  |  |  | 4h |  |
| 1159 | 1.12.4.1.1.1.19 | [ReqID 491]Support of OMA-DM LAWMO Specification |  | 1d | 2010-02-11 | 2010-02-11 | 1155 | 0d |  |  | Sun Lei; Wu Li-Rong | 16h | 640 |
| 1160 | 1.12.4.1.1.1.20 | CDMA Device Testing |  | 3d | 2010-02-24 | 2010-02-26 | 1159 | 0d |  |  | Sun Lei; Wu Li-Rong | 48h | 1,920 |
| 1161 | 1.12.4.1.1.1.21 | [ReqID 265]RIM BlackBerry Support |  | 2d | 2010-03-01 | 2010-03-02 | 1160 | 0d |  |  | Wu Li-Rong; Sun Lei | 32h | 1,280 |
| 1162 | 1.12.4.1.1.1.22 | [ReqID 542]Improve Workflow Engine design |  | 1d | 2010-03-02 | 2010-03-02 | 1156 | 0d |  |  | Chen Xiu-Qiong; Li Shuang | 16h | 640 |
| 1163 | 1.12.4.1.1.1.23 | **Webservice API manual testing** |  | 3d | 2010-02-09 | 2010-02-11 |  | 0d |  |  | Xu Yan [50%] | 28h | 480 |
| 1164 | 1.12.4.1.1.1.23.1 | [ReqID 447]Add Integration |  | 0.5d | 2010-02-09 | 2010-02-09 |  | 0d |  | start no earlier than 2010-01-11 |  | 2.4h |  |
| 1165 | 1.12.4.1.1.1.23.2 | [ReqID 636]New WS API Testing |  | 0.8d | 2010-02-09 | 2010-02-10 | 1164 | 0d |  |  |  |  |  |
| 1166 | 1.12.4.1.1.1.23.3 | Others Inherited from MMC4.5 |  | 1.7d | 2010-02-10 | 2010-02-11 | 1165 | 0d |  |  |  | 13.6h |  |
| 1167 | 1.12.4.1.1.1.24 | [ReqID 1105]New UI Performance |  | 3d | 2010-02-24 | 2010-02-26 | 1166 | 0d |  |  | Xu Yan [50%] | 12h | 480 |
| 1168 | 1.12.4.1.1.1.25 | [ReqID 317]E2E Performance testing |  | 2d | 2010-03-01 | 2010-03-02 | 1167 | 0d |  |  | Xu Yan [50%] | 8h | 320 |
| 1169 | 1.12.4.1.1.1.26 | **[ReqID 632]SMSC Interface** |  | 6d? | 2010-02-09 | 2010-02-26 |  | 2d |  |  | PS | 96h | 1,920 |
| 1170 | 1.12.4.1.1.1.26.1 | [ReqID 635]Ericsson SMSC |  | 2d? | 2010-02-09 | 2010-02-10 |  | 2d | 0d |  |  | 16h |  |
| 1171 | 1.12.4.1.1.1.26.2 | [ReqID 633]Lucent Alcatel SMSC |  | 2d? | 2010-02-11 | 2010-02-24 | 1170 | 2d | 0d |  |  | 16h |  |
| 1172 | 1.12.4.1.1.1.26.3 | [ReqID 634]Sprint SMSC |  | 2d? | 2010-02-25 | 2010-02-26 | 1171 | 2d |  |  |  | 16h |  |
| 1173 | 1.12.4.1.2 | Sanity Result Compare (QA&DEV) |  | 3d | 2010-02-09 | 2010-02-11 |  | 5d |  |  | Li Ming | 24h | 960 |
| 1174 | 1.12.4.1.3 | QA Report - MAT Cycle 4 | milestone | 0d | 2010-03-02 | 2010-03-02 | 1137 | 0d |  |  | Li Ming; Liu Ying; Xu Yan |  |  |
| 1175 | 1.12.4.2 | **DEV** |  | 8d | 2010-02-09 | 2010-03-02 |  | 0d |  |  |  | 1005.25h | 40,209.97 |
| 1176 | 1.12.4.2.1 | Bug Fixing |  | 8d | 2010-02-09 | 2010-03-02 |  | 0d |  |  | Zhang Zhi-Yu; Liu Zhi-Qiang; Li Da-Peng; Tang Wen-Hua; Chen Yong-Lin; Xue Jun; Singh Anand; Wang Jia; Zhu Zhen-Xing; Lei Juan; Liao Xue-Feng; Ma Zhi-Hui; Li Jia; Zhong Zi-Long [80%]; Meng De-Jun | 928.45h | 37,137.97 |
| 1177 | 1.12.4.2.2 | **Performance Tuning** |  | 8d | 2010-02-09 | 2010-03-02 |  | 0d |  |  |  | 76.8h | 3,072 |
| 1178 | 1.12.4.2.2.1 | UI |  | 8d | 2010-02-09 | 2010-03-02 |  | 0d |  |  | Zhong Zi-Long [20%] | 12.8h | 512 |
| 1179 | 1.12.4.2.2.2 | E2E |  | 8d | 2010-02-09 | 2010-03-02 |  | 0d |  |  | Shanker Oruganti Uma | 64h | 2,560 |

| ID | WBS | Task | Type | Duration | Start | Finish | Predecessors | Total slack | Free slack | Constraint | Resources | Work | Cost |
| --- | --- | --- | --- | --- | --- | --- | --- | --- | --- | --- | --- | --- | --- |
| 1180 | 1.12.5 | **Build Drop FI #5** |  | 2d | 2010-03-03 | 2010-03-04 | 1135 | 0d |  |  |  | 428.8h | 17,152 |
| 1181 | 1.12.5.1 | **QA** |  | 2d | 2010-03-03 | 2010-03-04 |  | 0d |  |  |  | 192h | 7,680 |
| 1182 | 1.12.5.1.1 | **QA Sanity Cycle 5** |  | 2d | 2010-03-03 | 2010-03-04 |  | 0d |  |  |  | 192h | 7,680 |
| 1183 | 1.12.5.1.1.1 | Sanity Testing |  | 2d | 2010-03-03 | 2010-03-04 |  | 0d |  |  | Gao Hang; Chen Xiu-Qiong; Li Shuang; Sun Lei; Liu Qing-Bo; Li Yue-Hong; Chen Guo-Na; Geng Cheng; Yu Jian-Lan; Dong Ying-Ying; Wu Li-Rong; Wang Ji-Zhong | 192h | 7,680 |
| 1184 | 1.12.5.1.2 | QA Report - Sanity Cycle 5 | milestone | 0d | 2010-03-04 | 2010-03-04 | 1182 | 0d |  |  | Li Ming; Liu Ying; Xu Yan |  |  |
| 1185 | 1.12.5.2 | **DEV** |  | 2d | 2010-03-03 | 2010-03-04 |  | 0d |  |  |  | 236.8h | 9,472 |
| 1186 | 1.12.5.2.1 | Bug Fixing |  | 2d | 2010-03-03 | 2010-03-04 |  | 0d |  |  | Zhang Zhi-Yu; Liu Zhi-Qiang; Li Da-Peng; Tang Wen-Hua; Chen Yong-Lin; Xue Jun; Singh Anand; Wang Jia; Zhu Zhen-Xing; Lei Juan; Liao Xue-Feng; Ma Zhi-Hui; Li Jia; Zhong Zi-Long [80%]; Meng De-Jun | 236.8h | 9,472 |
| 1187 | 1.12.6 | **Build Drop FI #6** |  | 11d? | 2010-03-04 | 2010-03-19 | 1180 | 0d |  |  |  | 2499h | 93,559.98 |
| 1188 | 1.12.6.1 | Build Drop FI #5 - 1 | milestone | 0d | 2010-03-04 | 2010-03-04 |  | 11d |  |  | Peng Sheng-Kui |  |  |
| 1189 | 1.12.6.2 | Build Drop FI #5 - 2 | milestone | 0d | 2010-03-10 | 2010-03-10 |  | 8d |  | start no earlier than 2010-03-10 | Peng Sheng-Kui |  |  |
| 1190 | 1.12.6.3 | **QA** |  | 11d? | 2010-03-04 | 2010-03-19 |  | 0d |  |  |  | 1133.71h | 38,948.53 |
| 1191 | 1.12.6.3.1 | **QA Full Regression Cycle 6** |  | 11d? | 2010-03-04 | 2010-03-19 |  | 0d |  |  |  | 1109.71h | 37,988.53 |
| 1192 | 1.12.6.3.1.1 | **Management** |  | 8d | 2010-03-05 | 2010-03-16 |  | 0d |  |  | Gao Hang; Chen Guo-Na; Geng Cheng | 248h | 7,680 |
| 1193 | 1.12.6.3.1.1.1 | [ReqID 547]GUI mode Installer |  | 1d | 2010-03-05 | 2010-03-05 |  | 0d |  |  |  | 6.4h |  |
| 1194 | 1.12.6.3.1.1.2 | [ReqID 451]Upgrade from previously deployed versions | milestone | 0d | 2010-03-05 | 2010-03-05 | 1193 | 0d |  |  |  |  |  |
| 1195 | 1.12.6.3.1.1.3 | [ReqID 546]Improved Error message |  | 0.1d | 2010-03-08 | 2010-03-08 | 1194 | 0d |  |  |  | 0.8h |  |
| 1196 | 1.12.6.3.1.1.4 | [ReqID 614]MMC Software Version information |  | 0.1d | 2010-03-08 | 2010-03-08 | 1195 | 0d |  |  |  | 0.8h |  |
| 1197 | 1.12.6.3.1.1.5 | [ReqID 628]New UI-HelpDesk |  | 1.3d | 2010-03-08 | 2010-03-09 | 1196 | 0d |  |  |  | 8h |  |
| 1198 | 1.12.6.3.1.1.6 | [ReqID 629]New UI-DeviceGroups |  | 1.5d | 2010-03-09 | 2010-03-10 | 1197 | 0d |  |  |  | 8h |  |
| 1199 | 1.12.6.3.1.1.7 | [ReqID 630]New UI-System Administration |  | 1d | 2010-03-11 | 2010-03-11 | 1198 | 0d |  |  |  | 8h |  |
| 1200 | 1.12.6.3.1.1.8 | [ReqID 631]New UI-Reporting |  | 1d | 2010-03-12 | 2010-03-12 | 1199 | 0d |  |  |  | 8h |  |
| 1201 | 1.12.6.3.1.1.9 | [ReqID 637]New UI-Login/Logout |  | 1d | 2010-03-15 | 2010-03-15 | 1200 | 0d |  |  |  | 8h |  |
| 1202 | 1.12.6.3.1.1.10 | [ReqID 765]Common Requirement | milestone | 0d | 2010-03-15 | 2010-03-15 | 1201 | 0d |  |  |  |  |  |
| 1203 | 1.12.6.3.1.1.11 | [ReqID 542]Improve Workflow Engine design | milestone | 0d | 2010-03-15 | 2010-03-15 | 1202 | 0d |  |  |  |  |  |
| 1204 | 1.12.6.3.1.1.12 | [ReqID 543]DM operation Management | milestone | 0d | 2010-03-15 | 2010-03-15 | 1203 | 0d |  |  |  |  |  |
| 1205 | 1.12.6.3.1.1.13 | Others inherited from MMC4.5 |  | 1d | 2010-03-16 | 2010-03-16 | 1204 | 0d |  |  |  | 8h |  |
| 1206 | 1.12.6.3.1.2 | Bulk Engine |  | 2d | 2010-03-17 | 2010-03-18 | 1205 | 0d |  |  | Gao Hang; Geng Cheng; Chen Guo-Na | 48h | 1,920 |
| 1207 | 1.12.6.3.1.3 | MMA Device Testing |  | 6.86d | 2010-03-04 | 2010-03-19 |  | 0d |  |  | Dong Ying-Ying; Li Yue-Hong; Liu Qing-Bo; Yu Jian-Lan | 109.71h | 4,388.53 |
| 1208 | 1.12.6.3.1.4 | MotoV9 Testing |  | 1d | 2010-03-19 | 2010-03-19 | 1206 | 0d |  |  | Chen Guo-Na; Gao Hang; Geng Cheng | 24h | 960 |
| 1209 | 1.12.6.3.1.5 | Symbian Device Testing |  | 6d | 2010-03-05 | 2010-03-12 |  | 1d | 0d |  | Li Shuang; Chen Xiu-Qiong; Wang Ji-Zhong | 144h | 5,760 |
| 1210 | 1.12.6.3.1.6 | Windows Mobile Native Device Testing |  | 3d | 2010-03-05 | 2010-03-09 |  | 0d |  |  | Sun Lei; Wu Li-Rong | 48h | 1,920 |

| ID | WBS | Task | Type | Duration | Start | Finish | Predecessors | Total slack | Free slack | Resources | Work | Cost |
| --- | --- | --- | --- | --- | --- | --- | --- | --- | --- | --- | --- | --- |
| 1211 | 1.12.6.3.1.7 | **Sony Ericsson Device Testing** |  | 2d | 2010-03-15 | 2010-03-16 | 1209 | 1d | 0d | Li Shuang; Chen Xiu-Qiong; Wang Ji-Zhong | 56h | 1,920 |
| 1212 | 1.12.6.3.1.7.1 | [ReqID 767]Ericsson Enhancement requirements |  | 1d | 2010-03-15 | 2010-03-15 |  | 1d | 0d |  | 4h |  |
| 1213 | 1.12.6.3.1.7.2 | Sony Ericsson devices parameters setting |  | 1d | 2010-03-16 | 2010-03-16 | 1212 | 1d |  |  | 4h |  |
| 1214 | 1.12.6.3.1.8 | [ReqID 491]Support of OMA-DM LAWMO Specification |  | 2d | 2010-03-10 | 2010-03-11 | 1210 | 0d |  | Sun Lei; Wu Li-Rong | 32h | 1,280 |
| 1215 | 1.12.6.3.1.9 | CDMA Device Testing |  | 4d | 2010-03-12 | 2010-03-17 | 1214 | 0d |  | Sun Lei; Wu Li-Rong | 64h | 2,560 |
| 1216 | 1.12.6.3.1.10 | [ReqID 265]RIM BlackBerry Support |  | 2d | 2010-03-18 | 2010-03-19 | 1215 | 0d |  | Wu Li-Rong; Sun Lei | 32h | 1,280 |
| 1217 | 1.12.6.3.1.11 | [ReqID 542]Improve Workflow Engine design |  | 2d | 2010-03-17 | 2010-03-18 | 1211 | 1d |  | Chen Xiu-Qiong; Li Shuang; Wang Ji-Zhong | 48h | 1,920 |
| 1218 | 1.12.6.3.1.12 | **Webservice API manual testing** |  | 4d | 2010-03-05 | 2010-03-10 |  | 0d |  | Xu Yan [50%] | 40h | 640 |
| 1219 | 1.12.6.3.1.12.1 | [ReqID 447]Add Integration |  | 1d | 2010-03-05 | 2010-03-05 |  | 0d |  |  | 8h |  |
| 1220 | 1.12.6.3.1.12.2 | [ReqID 636]New WS API Testing |  | 1d | 2010-03-08 | 2010-03-08 | 1219 | 0d |  |  |  |  |
| 1221 | 1.12.6.3.1.12.3 | Others Inherited from MMC4.5 |  | 2d | 2010-03-09 | 2010-03-10 | 1220 | 0d |  |  | 16h |  |
| 1222 | 1.12.6.3.1.13 | [ReqID 1105]New UI Performance |  | 5d | 2010-03-11 | 2010-03-17 | 1221 | 0d |  | Xu Yan [50%] | 20h | 800 |
| 1223 | 1.12.6.3.1.14 | [ReqID 317]E2E Performance testing |  | 2d | 2010-03-18 | 2010-03-19 | 1222 | 0d |  | Xu Yan [50%] | 8h | 320 |
| 1224 | 1.12.6.3.1.15 | Stability testing |  | 11d | 2010-03-05 | 2010-03-19 |  | 0d |  | Xu Yan [50%] | 44h | 1,760 |
| 1225 | 1.12.6.3.1.16 | **[ReqID 632]SMSC Interface** |  | 9d? | 2010-03-05 | 2010-03-17 |  | 2d |  | PS | 144h | 2,880 |
| 1226 | 1.12.6.3.1.16.1 | [ReqID 635]Ericsson SMSC |  | 3d? | 2010-03-05 | 2010-03-09 |  | 2d | 0d |  | 24h |  |
| 1227 | 1.12.6.3.1.16.2 | [ReqID 633]Lucent Alcatel SMSC |  | 3d? | 2010-03-10 | 2010-03-12 | 1226 | 2d | 0d |  | 24h |  |
| 1228 | 1.12.6.3.1.16.3 | [ReqID 634]Sprint SMSC |  | 3d? | 2010-03-15 | 2010-03-17 | 1227 | 2d |  |  | 24h |  |
| 1229 | 1.12.6.3.2 | Sanity Result Compare (QA&DEV) |  | 3d | 2010-03-05 | 2010-03-09 |  | 8d |  | Li Ming | 24h | 960 |
| 1230 | 1.12.6.3.3 | QA Report - Full Regression Cycle 6 | milestone | 0d | 2010-03-19 | 2010-03-19 | 1191 | 0d |  | Li Ming; Liu Ying; Xu Yan |  |  |
| 1231 | 1.12.6.4 | **DEV** |  | 11d | 2010-03-05 | 2010-03-19 |  | 0d |  |  | 1365.29h | 54,611.45 |
| 1232 | 1.12.6.4.1 | Bug Fixing |  | 11d | 2010-03-05 | 2010-03-19 |  | 0d |  | Zhang Zhi-Yu; Liu Zhi-Qiang; Li Da-Peng; Tang Wen-Hua; Chen Yong-Lin; Xue Jun; Singh Anand; Wang Jia; Zhu Zhen-Xing; Lei Juan; Liao Xue-Feng; Ma Zhi-Hui; Li Jia; Zhong Zi-Long [80%]; Meng De-Jun | 1259.69h | 50,387.45 |
| 1233 | 1.12.6.4.2 | **Performance Tuning** |  | 11d | 2010-03-05 | 2010-03-19 |  | 0d |  |  | 105.6h | 4,224 |
| 1234 | 1.12.6.4.2.1 | UI |  | 11d | 2010-03-05 | 2010-03-19 |  | 0d |  | Zhong Zi-Long [20%] | 17.6h | 704 |
| 1235 | 1.12.6.4.2.2 | E2E |  | 11d | 2010-03-05 | 2010-03-19 |  | 0d |  | Shanker Oruganti Uma | 88h | 3,520 |

| ID | WBS | Task | Type | Duration | Start | Finish | Predecessors | Complete | Remaining | Total slack | Free slack | Constraint | Resources | Work | Actual work | Cost | Actual cost |
| --- | --- | --- | --- | --- | --- | --- | --- | --- | --- | --- | --- | --- | --- | --- | --- | --- | --- |
| 1236 | 1.12.7 | **Build Drop FI #7** |  | 3d | 2010-03-22 | 2010-03-24 | 1187 |  |  | 0d |  |  |  | 643.2h |  | 25,728 |  |
| 1237 | 1.12.7.1 | **QA** |  | 3d | 2010-03-22 | 2010-03-24 |  |  |  | 0d |  |  |  | 288h |  | 11,520 |  |
| 1238 | 1.12.7.1.1 | **QA Sanity Cycle 7** |  | 3d | 2010-03-22 | 2010-03-24 |  |  |  | 0d |  |  |  | 288h |  | 11,520 |  |
| 1239 | 1.12.7.1.1.1 | Sanity Testing |  | 3d | 2010-03-22 | 2010-03-24 |  |  |  | 0d |  |  | Gao Hang; Chen Xiu-Qiong; Li Shuang; Sun Lei; Liu Qing-Bo; Li Yue-Hong; Chen Guo-Na; Geng Cheng; Yu Jian-Lan; Dong Ying-Ying; Wu Li-Rong; Wang Ji-Zhong | 288h |  | 11,520 |  |
| 1240 | 1.12.7.1.2 | QA Report - Sanity Cycle 7 | milestone | 0d | 2010-03-24 | 2010-03-24 | 1238 |  |  | 0d |  |  | Li Ming; Xu Yan; Liu Ying |  |  |  |  |
| 1241 | 1.12.7.2 | **DEV** |  | 3d | 2010-03-22 | 2010-03-24 |  |  |  | 0d |  |  |  | 355.2h |  | 14,208 |  |
| 1242 | 1.12.7.2.1 | Bug Fixing |  | 3d | 2010-03-22 | 2010-03-24 |  |  |  | 0d |  |  | Zhang Zhi-Yu; Liu Zhi-Qiang; Li Da-Peng; Tang Wen-Hua; Chen Yong-Lin; Xue Jun; Singh Anand; Wang Jia; Zhu Zhen-Xing; Lei Juan; Liao Xue-Feng; Ma Zhi-Hui; Li Jia; Zhong Zi-Long [80%]; Meng De-Jun | 355.2h |  | 14,208 |  |
| 1243 | 1.12.8 | **MMC 4.6 BACKWARD COMPATIBILITY DEVICES [ALPHA DEVICES]** |  | 20d? | 2010-01-12 A | 2010-02-08 |  | 26% | 14.87d? | 29d |  |  |  | 752h | 192.8h | 30,080 | 7,712 |
| 1244 | 1.12.8.1 | **Symbian S60** |  | 20d? | 2010-01-12 A | 2010-02-08 |  | 50% | 9.94d? | 29d |  |  |  | 256h | 128.8h | 10,240 | 5,152 |
| 1245 | 1.12.8.1.1 | **Symbian OS v9.1** |  | 14d | 2010-01-12 A | 2010-01-29 |  | 67% | 4.67d | 35d |  |  |  | 72h | 48h | 2,880 | 1,920 |
| 1246 | 1.12.8.1.1.1 | **Full Regression Testing** |  | 14d | 2010-01-12 A | 2010-01-29 |  | 80% | 2.8d | 35d |  |  |  | 40h | 32h | 1,600 | 1,280 |
| 1247 | 1.12.8.1.1.1.1 | **Nokia E61** |  | 14d | 2010-01-12 A | 2010-01-29 |  | 80% | 2.8d | 35d |  |  |  | 40h | 32h | 1,600 | 1,280 |
| 1248 | 1.12.8.1.1.1.1.1 | IOP QA Cycle I |  | 3d | 2010-01-12 A | 2010-01-14 A |  | 100% |  |  |  | finish no earlier than 2010-01-14 | Zhou WenPing | 24h | 24h | 960 | 960 |
| 1249 | 1.12.8.1.1.1.1.2 | IOP Dev Bug fix cycle |  | 1d | 2010-01-15 A | 2010-01-15 A | 1248 | 100% |  |  |  | finish no earlier than 2008-09-02 | Gong Zhi | 8h | 8h | 320 | 320 |
| 1250 | 1.12.8.1.1.1.1.3 | Bug verification [On Daily Build] |  | 1d | 2010-01-29 | 2010-01-29 |  |  |  | 37d |  | start no earlier than 2010-01-29 | Zhou WenPing | 8h |  | 320 |  |
| 1251 | 1.12.8.1.1.2 | **Santiy Testing** |  | 6d | 2010-01-19 A | 2010-01-26 |  | 50% | 3d | 32d |  |  |  | 32h | 16h | 1,280 | 640 |
| 1252 | 1.12.8.1.1.2.1 | Nokia E50 |  | 2d | 2010-01-19 A | 2010-01-20 A |  | 100% |  |  |  | start no earlier than 2010-01-19 | Zhou WenPing | 16h | 16h | 640 | 640 |
| 1253 | 1.12.8.1.1.2.2 | Nokia E65 |  | 2d | 2010-01-25 | 2010-01-26 |  |  |  | 34d | 0d | start no earlier than 2010-01-25 | Zhou WenPing | 16h |  | 640 |  |
| 1254 | 1.12.8.1.2 | **Symbian OS v9.2** |  | 18d? | 2010-01-12 A | 2010-02-04 |  | 36% | 11.45d? | 31d |  |  |  | 88h | 32h | 3,520 | 1,280 |
| 1255 | 1.12.8.1.2.1 | **Full Regression Testing** |  | 10d? | 2010-01-12 A | 2010-01-25 |  | 80% | 2d? | 39d |  |  |  | 40h | 32h | 1,600 | 1,280 |
| 1256 | 1.12.8.1.2.1.1 | **Nokia N95 8G** |  | 10d? | 2010-01-12 A | 2010-01-25 |  | 80% | 2d? | 39d |  |  |  | 40h | 32h | 1,600 | 1,280 |
| 1257 | 1.12.8.1.2.1.1.1 | IOP QA Cycle I |  | 3d | 2010-01-12 A | 2010-01-14 A |  | 100% |  |  |  | finish no earlier than 2010-01-14 | Lu Yue | 24h | 24h | 960 | 960 |
| 1258 | 1.12.8.1.2.1.1.2 | IOP Dev Bug fix cycle |  | 1d | 2010-01-18 A | 2010-01-18 A | 1257 | 100% |  |  |  | finish no earlier than 2008-09-02 | Gong Zhi | 8h | 8h | 320 | 320 |
| 1259 | 1.12.8.1.2.1.1.3 | Bug verification [On Daily Build] |  | 1d? | 2010-01-25 | 2010-01-25 |  |  |  | 41d |  | start no earlier than 2010-01-25 | Lu Yue | 8h |  | 320 |  |

| ID | WBS | Task | Duration | Start | Finish | Predecessors | Complete | Remaining | Total slack | Free slack | Constraint | Resources | Work | Actual work | Cost | Actual cost |
| --- | --- | --- | --- | --- | --- | --- | --- | --- | --- | --- | --- | --- | --- | --- | --- | --- |
| 1260 | 1.12.8.1.2.2 | **Santiy Testing** | 7d | 2010-01-27 | 2010-02-04 |  |  |  | 31d |  |  |  | 48h |  | 1,920 |  |
| 1261 | 1.12.8.1.2.2.1 | Nokia N95 | 2d | 2010-01-27 | 2010-01-28 | 1253 |  |  | 34d | 1d | start no earlier than 2010-01-25 | Zhou WenPing | 16h |  | 640 |  |
| 1262 | 1.12.8.1.2.2.2 | Nokia N82 | 2d | 2010-02-01 | 2010-02-02 | 1261 |  |  | 33d | 0d | start no earlier than 2010-02-01 | Zhou WenPing | 16h |  | 640 |  |
| 1263 | 1.12.8.1.2.2.3 | Nokia E90 | 2d | 2010-02-03 | 2010-02-04 | 1262 |  |  | 33d |  | start no earlier than 2010-01-27 | Zhou WenPing | 16h |  | 640 |  |
| 1264 | 1.12.8.1.3 | **Symbian OS v9.3** | 16d | 2010-01-18 A | 2010-02-08 |  | 57% | 6.86d | 29d |  |  |  | 56h | 32h | 2,240 | 1,280 |
| 1265 | 1.12.8.1.3.1 | **Full Regression Testing** | 11d | 2010-01-18 A | 2010-02-01 |  | 80% | 2.2d | 34d |  |  |  | 40h | 32h | 1,600 | 1,280 |
| 1266 | 1.12.8.1.3.1.1 | **Nokia N96** | 11d | 2010-01-18 A | 2010-02-01 |  | 80% | 2.2d | 34d |  |  |  | 40h | 32h | 1,600 | 1,280 |
| 1267 | 1.12.8.1.3.1.1.1 | IOP QA Cycle I | 3d | 2010-01-18 A | 2010-01-20 A |  | 100% |  |  |  | start no earlier than 2010-01-18 | Lu Yue | 24h | 24h | 960 | 960 |
| 1268 | 1.12.8.1.3.1.1.2 | IOP Dev Bug fix cycle | 1d | 2010-01-21 A | 2010-01-21 A | 1267 | 100% |  |  |  | start no earlier than 2010-01-21 | Gong Zhi | 8h | 8h | 320 | 320 |
| 1269 | 1.12.8.1.3.1.1.3 | Bug verification [On Daily Build] | 1d | 2010-02-01 | 2010-02-01 | 1268 |  |  | 36d |  | start no earlier than 2010-02-01 | Lu Yue | 8h |  | 320 |  |
| 1270 | 1.12.8.1.3.2 | **Santiy Testing** | 2d | 2010-02-05 | 2010-02-08 |  |  |  | 29d |  |  |  | 16h |  | 640 |  |
| 1271 | 1.12.8.1.3.2.1 | Nokia E52 | 2d | 2010-02-05 | 2010-02-08 |  |  |  | 31d |  | start no earlier than 2010-02-05 | Zhou WenPing | 16h |  | 640 |  |
| 1272 | 1.12.8.1.4 | **Symbian OS v9.4** | 8d | 2010-01-21 A | 2010-02-01 |  | 42% | 4.64d | 34d |  |  |  | 40h | 16.8h | 1,600 | 672 |
| 1273 | 1.12.8.1.4.1 | **Full Regression Testing** | 8d | 2010-01-21 A | 2010-02-01 |  | 42% | 4.64d | 34d |  |  |  | 40h | 16.8h | 1,600 | 672 |
| 1274 | 1.12.8.1.4.1.1 | **Nokia N97** | 8d | 2010-01-21 A | 2010-02-01 |  | 42% | 4.64d | 34d |  |  |  | 40h | 16.8h | 1,600 | 672 |
| 1275 | 1.12.8.1.4.1.1.1 | IOP QA Cycle I | 3d | 2010-01-21 A | 2010-01-25 |  | 70% | 0.9d | 39d | 0d | start no earlier than 2010-01-21 | Zhou WenPing | 24h | 16.8h | 960 | 672 |
| 1276 | 1.12.8.1.4.1.1.2 | IOP Dev Bug fix cycle | 1d | 2010-01-26 | 2010-01-26 | 1275 |  |  | 39d | 3d | finish no earlier than 2008-09-02 | Gong Zhi | 8h |  | 320 |  |
| 1277 | 1.12.8.1.4.1.1.3 | Bug verification [On Daily Build] | 1d | 2010-02-01 | 2010-02-01 | 1276 |  |  | 36d |  | start no earlier than 2010-01-30 | Zhou WenPing | 8h |  | 320 |  |
| 1278 | 1.12.8.2 | **Windows Mobile (MMA)** | 20d? | 2010-01-12 A | 2010-02-08 |  | 35% | 13.04d? | 29d |  |  |  | 184h | 64h | 7,360 | 2,560 |
| 1279 | 1.12.8.2.1 | **WM5** | 18d? | 2010-01-12 A | 2010-02-04 |  | 44% | 10d? | 31d |  |  |  | 72h | 32h | 2,880 | 1,280 |
| 1280 | 1.12.8.2.1.1 | **Full Regression Testing** | 10d? | 2010-01-12 A | 2010-01-25 |  | 80% | 2d? | 39d |  |  |  | 40h | 32h | 1,600 | 1,280 |
| 1281 | 1.12.8.2.1.1.1 | **HTC TyTN** | 10d? | 2010-01-12 A | 2010-01-25 |  | 80% | 2d? | 39d |  |  |  | 40h | 32h | 1,600 | 1,280 |
| 1282 | 1.12.8.2.1.1.1.1 | IOP QA Cycle I | 3d | 2010-01-12 A | 2010-01-14 A |  | 100% |  |  |  | start no earlier than 2010-01-12 | Li Bo | 24h | 24h | 960 | 960 |
| 1283 | 1.12.8.2.1.1.1.2 | IOP Dev Bug fix cycle | 1d | 2010-01-19 A | 2010-01-19 A | 1282 | 100% |  |  |  | finish no earlier than 2008-09-02 | Gong Zhi | 8h | 8h | 320 | 320 |
| 1284 | 1.12.8.2.1.1.1.3 | Bug verification [On Daily Build] | 1d? | 2010-01-25 | 2010-01-25 |  |  |  | 41d |  | start no earlier than 2010-01-25 | Li Bo | 8h |  | 320 |  |

| ID | WBS | Task | Duration | Start | Finish | Predecessors | Complete | Remaining | Total slack | Free slack | Constraint | Resources | Work | Actual work | Cost | Actual cost |
| --- | --- | --- | --- | --- | --- | --- | --- | --- | --- | --- | --- | --- | --- | --- | --- | --- |
| 1285 | 1.12.8.2.1.2 | **Santiy Testing** | 2d | 2010-02-03 | 2010-02-04 |  |  |  | 31d |  |  |  | 32h |  | 1,280 |  |
| 1286 | 1.12.8.2.1.2.1 | HTC XV6700(HTC Apache) | 2d | 2010-02-03 | 2010-02-04 |  |  |  | 33d |  | start no earlier than 2010-02-03 | Li Bo | 16h |  | 640 |  |
| 1287 | 1.12.8.2.1.2.2 | HTC S620 | 2d | 2010-02-03 | 2010-02-04 | 1298 |  |  | 33d |  | start no earlier than 2010-02-03 | Lu Yue | 16h |  | 640 |  |
| 1288 | 1.12.8.2.2 | **WM6** | 13d? | 2010-01-21 | 2010-02-08 |  |  |  | 29d |  |  |  | 56h |  | 2,240 |  |
| 1289 | 1.12.8.2.2.1 | **Full Regression Testing** | 8d? | 2010-01-21 | 2010-02-01 |  |  |  | 34d |  |  |  | 40h |  | 1,600 |  |
| 1290 | 1.12.8.2.2.1.1 | **HTC TyTN II** | 8d? | 2010-01-21 | 2010-02-01 |  |  |  | 34d |  |  |  | 40h |  | 1,600 |  |
| 1291 | 1.12.8.2.2.1.1.1 | IOP QA Cycle I | 3d | 2010-01-21 | 2010-01-25 |  |  |  | 39d | 0d | start no earlier than 2010-01-21 | Li Bo | 24h |  | 960 |  |
| 1292 | 1.12.8.2.2.1.1.2 | IOP Dev Bug fix cycle | 1d | 2010-01-26 | 2010-01-26 | 1291 |  |  | 39d | 3d | finish no earlier than 2008-09-02 | Sandy | 8h |  | 320 |  |
| 1293 | 1.12.8.2.2.1.1.3 | Bug verification [On Daily Build] | 1d? | 2010-02-01 | 2010-02-01 | 1292 |  |  | 36d |  | start no earlier than 2010-02-01 | Li Bo | 8h |  | 320 |  |
| 1294 | 1.12.8.2.2.2 | **Santiy Testing** | 2d | 2010-02-05 | 2010-02-08 |  |  |  | 29d |  |  |  | 16h |  | 640 |  |
| 1295 | 1.12.8.2.2.2.1 | HTC S710 | 2d | 2010-02-05 | 2010-02-08 |  |  |  | 31d |  | start no earlier than 2010-02-05 | Li Bo | 16h |  | 640 |  |
| 1296 | 1.12.8.2.3 | **WM6.1** | 16d | 2010-01-18 A | 2010-02-08 |  | 57% | 6.86d | 29d |  |  |  | 56h | 32h | 2,240 | 1,280 |
| 1297 | 1.12.8.2.3.1 | **Full Regression Testing** | 12d | 2010-01-18 A | 2010-02-02 |  | 80% | 2.4d | 31d |  |  |  | 40h | 32h | 1,600 | 1,280 |
| 1298 | 1.12.8.2.3.1.1 | **Motorola Q9h** | 12d | 2010-01-18 A | 2010-02-02 |  | 80% | 2.4d | 31d | 0d |  |  | 40h | 32h | 1,600 | 1,280 |
| 1299 | 1.12.8.2.3.1.1.1 | IOP QA Cycle I | 3d | 2010-01-18 A | 2010-01-20 A |  | 100% |  |  |  | start no earlier than 2010-01-18 | Li Bo | 24h | 24h | 960 | 960 |
| 1300 | 1.12.8.2.3.1.1.2 | IOP Dev Bug fix cycle | 1d | 2010-01-21 A | 2010-01-21 A | 1299 | 100% |  |  |  | finish no earlier than 2008-09-02 | Sandy | 8h | 8h | 320 | 320 |
| 1301 | 1.12.8.2.3.1.1.3 | Bug verification [On Daily Build] | 1d | 2010-02-02 | 2010-02-02 | 1300 |  |  | 33d |  | start no earlier than 2010-02-02 | Li Bo | 8h |  | 320 |  |
| 1302 | 1.12.8.2.3.2 | **Santiy Testing** | 2d | 2010-02-05 | 2010-02-08 |  |  |  | 29d |  |  |  | 16h |  | 640 |  |
| 1303 | 1.12.8.2.3.2.1 | HP Bell/Hound | 2d | 2010-02-05 | 2010-02-08 |  |  |  | 31d |  | start no earlier than 2010-02-05 | Lu Yue | 16h |  | 640 |  |
| 1304 | 1.12.8.3 | **Window Mobile (OMA DM)** | 16d? | 2010-01-12 | 2010-02-02 |  |  |  | 33d |  |  |  | 96h |  | 3,840 |  |
| 1305 | 1.12.8.3.1 | **WM6** | 15d? | 2010-01-12 | 2010-02-01 |  |  |  | 34d |  |  |  | 40h |  | 1,600 |  |
| 1306 | 1.12.8.3.1.1 | **Full Regression Testing** | 15d? | 2010-01-12 | 2010-02-01 |  |  |  | 34d |  |  |  | 40h |  | 1,600 |  |
| 1307 | 1.12.8.3.1.1.1 | **HTC Touch Pro** | 15d? | 2010-01-12 | 2010-02-01 |  |  |  | 34d |  |  |  | 40h |  | 1,600 |  |
| 1308 | 1.12.8.3.1.1.1.1 | IOP QA Cycle I | 3d | 2010-01-12 | 2010-01-14 |  |  |  | 45d | 0d | finish no earlier than 2010-01-14 | Fu XingQiong | 24h |  | 960 |  |
| 1309 | 1.12.8.3.1.1.1.2 | IOP Dev Bug fix cycle | 1d | 2010-01-15 | 2010-01-15 | 1308 |  |  | 47d |  | finish no earlier than 2008-09-02 | Sandy | 8h |  | 320 |  |
| 1310 | 1.12.8.3.1.1.1.3 | Bug verification [On Daily Build] | 1d? | 2010-02-01 | 2010-02-01 |  |  |  | 36d |  | start no earlier than 2010-02-01 | Fu XingQiong | 8h |  | 320 |  |

| ID | WBS | Task | Duration | Start | Finish | Predecessors | Total slack | Free slack | Constraint | Resources | Work | Cost |
| --- | --- | --- | --- | --- | --- | --- | --- | --- | --- | --- | --- | --- |
| 1311 | 1.12.8.3.2 | **WM6.1** | 11d? | 2010-01-19 | 2010-02-02 |  | 33d |  |  |  | 56h | 2,240 |
| 1312 | 1.12.8.3.2.1 | **Full Regression Testing** | 11d | 2010-01-19 | 2010-02-02 |  | 33d |  |  |  | 32h | 1,280 |
| 1313 | 1.12.8.3.2.1.1 | **HTC Rose** | 11d | 2010-01-19 | 2010-02-02 |  | 33d |  |  |  | 32h | 1,280 |
| 1314 | 1.12.8.3.2.1.1.1 | IOP QA Cycle I | 2d | 2010-01-19 | 2010-01-20 |  | 42d | 0d | start no earlier than 2010-01-19 | Fu XingQiong | 16h | 640 |
| 1315 | 1.12.8.3.2.1.1.2 | IOP Dev Bug fix cycle | 1d | 2010-01-21 | 2010-01-21 | 1314 | 42d | 7d | finish no earlier than 2008-09-02 | Sandy | 8h | 320 |
| 1316 | 1.12.8.3.2.1.1.3 | Bug verification [On Daily Build] | 1d | 2010-02-02 | 2010-02-02 | 1315 | 35d |  | start no earlier than 2010-02-02 | Fu XingQiong | 8h | 320 |
| 1317 | 1.12.8.3.2.2 | **Santiy Testing** | 3d? | 2010-01-22 | 2010-01-26 |  | 38d |  |  |  | 24h | 960 |
| 1318 | 1.12.8.3.2.2.1 | Sony Ericsson X1 | 1d | 2010-01-22 | 2010-01-22 |  | 40d | 0d | start no earlier than 2010-01-22 | Fu XingQiong | 8h | 320 |
| 1319 | 1.12.8.3.2.2.2 | HTC Touch Dual | 1d | 2010-01-25 | 2010-01-25 | 1318 | 40d | 0d | start no earlier than 2010-01-22 | Fu XingQiong | 8h | 320 |
| 1320 | 1.12.8.3.2.2.3 | Samsung GT-18000 Omnia 2 | 1d? | 2010-01-26 | 2010-01-26 | 1319 | 40d |  | start no earlier than 2010-01-25 | Fu XingQiong | 8h | 320 |
| 1321 | 1.12.8.4 | **Sony Ericsson** | 14d? | 2010-01-18 | 2010-02-04 |  | 31d |  |  |  | 160h | 6,400 |
| 1322 | 1.12.8.4.1 | **java platform 6** | 9d | 2010-01-21 | 2010-02-02 |  | 33d |  |  |  | 32h | 1,280 |
| 1323 | 1.12.8.4.1.1 | **Full Regression Testing** | 9d | 2010-01-21 | 2010-02-02 |  | 33d |  |  |  | 32h | 1,280 |
| 1324 | 1.12.8.4.1.1.1 | **Sony Ericsson W810i** | 9d | 2010-01-21 | 2010-02-02 |  | 33d |  |  |  | 32h | 1,280 |
| 1325 | 1.12.8.4.1.1.1.1 | IOP QA Cycle I | 2d | 2010-01-21 | 2010-01-22 |  | 40d | 0d | start no earlier than 2010-01-21 | Lu Yue | 16h | 640 |
| 1326 | 1.12.8.4.1.1.1.2 | IOP Dev Bug fix cycle | 1d | 2010-01-25 | 2010-01-25 | 1325 | 40d | 5d | finish no earlier than 2008-09-02 | Shirley | 8h | 320 |
| 1327 | 1.12.8.4.1.1.1.3 | Bug verification [On Daily Build] | 1d | 2010-02-02 | 2010-02-02 | 1326 | 35d |  | start no earlier than 2010-02-02 | Lu Yue | 8h | 320 |
| 1328 | 1.12.8.4.2 | **java platform 7** | 11d? | 2010-01-18 | 2010-02-01 |  | 34d |  |  |  | 64h | 2,560 |
| 1329 | 1.12.8.4.2.1 | **Full Regression Testing** | 8d | 2010-01-18 | 2010-01-27 |  | 37d |  |  |  | 32h | 1,280 |
| 1330 | 1.12.8.4.2.1.1 | **Sony Ericsson W880i** | 8d | 2010-01-18 | 2010-01-27 |  | 37d |  |  |  | 32h | 1,280 |
| 1331 | 1.12.8.4.2.1.1.1 | IOP QA Cycle I | 2d | 2010-01-18 | 2010-01-19 |  | 44d | 0d | start no earlier than 2010-01-18 | Yu QiuLian | 16h | 640 |
| 1332 | 1.12.8.4.2.1.1.2 | IOP Dev Bug fix cycle | 1d | 2010-01-20 | 2010-01-20 | 1331 | 44d |  | finish no earlier than 2008-09-02 | Shirley | 8h | 320 |
| 1333 | 1.12.8.4.2.1.1.3 | Bug verification [On Daily Build] | 1d | 2010-01-27 | 2010-01-27 |  | 39d |  | start no earlier than 2010-01-27 | Yu QiuLian | 8h | 320 |
| 1334 | 1.12.8.4.2.2 | **Santiy Testing** | 6d? | 2010-01-25 | 2010-02-01 |  | 34d |  |  |  | 32h | 1,280 |
| 1335 | 1.12.8.4.2.2.1 | Sony Ericsson K610i | 1d | 2010-01-25 | 2010-01-25 |  | 39d | 0d | start no earlier than 2010-01-23 | Yu QiuLian | 8h | 320 |
| 1336 | 1.12.8.4.2.2.2 | Sony Ericsson K770i | 1d? | 2010-01-26 | 2010-01-26 | 1335 | 39d | 0d | start no earlier than 2010-01-25 | Yu QiuLian | 8h | 320 |
| 1337 | 1.12.8.4.2.2.3 | Sony Ericsson W850i | 1d? | 2010-01-27 | 2010-01-27 | 1336 | 39d |  |  | Yu QiuLian | 8h | 320 |
| 1338 | 1.12.8.4.2.2.4 | Sony Ericsson K800i | 1d? | 2010-02-01 | 2010-02-01 |  | 33d | 0d | start no earlier than 2010-02-01 | Yu QiuLian | 8h | 320 |

| ID | WBS | Task | Duration | Start | Finish | Predecessors | Total slack | Free slack | Constraint | Resources | Work | Cost |
| --- | --- | --- | --- | --- | --- | --- | --- | --- | --- | --- | --- | --- |
| 1339 | 1.12.8.4.3 | **java platform 8** | 11d? | 2010-01-21 | 2010-02-04 |  | 31d |  |  |  | 64h | 2,560 |
| 1340 | 1.12.8.4.3.1 | **Full Regression Testing** | 7d? | 2010-01-21 | 2010-01-29 |  | 35d |  |  |  | 32h | 1,280 |
| 1341 | 1.12.8.4.3.1.1 | **Sony Ericsson K850i** | 7d? | 2010-01-21 | 2010-01-29 |  | 35d |  |  |  | 32h | 1,280 |
| 1342 | 1.12.8.4.3.1.1.1 | IOP QA Cycle I | 2d | 2010-01-21 | 2010-01-22 |  | 40d | 0d | start no earlier than 2010-01-21 | Yu QiuLian | 16h | 640 |
| 1343 | 1.12.8.4.3.1.1.2 | IOP Dev Bug fix cycle | 1d | 2010-01-25 | 2010-01-25 | 1342 | 40d | 3d | finish no earlier than 2008-09-02 | Shirley | 8h | 320 |
| 1344 | 1.12.8.4.3.1.1.3 | Bug verification [On Daily Build] | 1d? | 2010-01-29 | 2010-01-29 | 1343 | 37d |  | start no earlier than 2010-01-29 | Yu QiuLian | 8h | 320 |
| 1345 | 1.12.8.4.3.2 | **Santiy Testing** | 9d? | 2010-01-25 | 2010-02-04 |  | 31d |  |  |  | 32h | 1,280 |
| 1346 | 1.12.8.4.3.2.1 | Sony Ericsson W890i | 1d? | 2010-01-25 | 2010-01-25 |  | 41d |  | start no earlier than 2010-01-23 | Lu Yue | 8h | 320 |
| 1347 | 1.12.8.4.3.2.2 | Sony Ericsson W715 | 1d? | 2010-02-02 | 2010-02-02 | 1338 | 33d | 0d |  | Yu QiuLian | 8h | 320 |
| 1348 | 1.12.8.4.3.2.3 | Sony Ericsson C905 | 1d? | 2010-02-03 | 2010-02-03 | 1347 | 33d | 0d |  | Yu QiuLian | 8h | 320 |
| 1349 | 1.12.8.4.3.2.4 | Sony Ericsson W995 | 1d? | 2010-02-04 | 2010-02-04 | 1348 | 33d |  |  | Yu QiuLian | 8h | 320 |
| 1350 | 1.12.8.5 | **Nokia S40** | 4d | 2010-02-03 | 2010-02-08 |  | 29d |  |  |  | 40h | 1,600 |
| 1351 | 1.12.8.5.1 | **Nokia S40 5th Edition** | 4d | 2010-02-03 | 2010-02-08 |  | 29d |  |  |  | 40h | 1,600 |
| 1352 | 1.12.8.5.1.1 | **Full Regression Testing** | 3d | 2010-02-03 | 2010-02-05 |  | 30d |  |  |  | 24h | 960 |
| 1353 | 1.12.8.5.1.1.1 | **Nokia 6500 Slide** | 3d | 2010-02-03 | 2010-02-05 |  | 30d |  |  |  | 24h | 960 |
| 1354 | 1.12.8.5.1.1.1.1 | IOP QA Cycle I | 1d | 2010-02-03 | 2010-02-03 |  | 32d | 0d | start no earlier than 2010-02-03 | Fu XingQiong | 8h | 320 |
| 1355 | 1.12.8.5.1.1.1.2 | IOP Dev Bug fix cycle | 1d | 2010-02-04 | 2010-02-04 | 1354 | 32d | 0d | finish no earlier than 2008-09-02 | Gong Zhi | 8h | 320 |
| 1356 | 1.12.8.5.1.1.1.3 | Bug verification | 1d | 2010-02-05 | 2010-02-05 | 1355 | 32d |  | start no earlier than 2010-01-18 | Fu XingQiong | 8h | 320 |
| 1357 | 1.12.8.5.1.2 | **Santiy Testing** | 3d | 2010-02-04 | 2010-02-08 |  | 29d |  |  |  | 16h | 640 |
| 1358 | 1.12.8.5.1.2.1 | Nokia 6500 Classic | 1d | 2010-02-04 | 2010-02-04 |  | 32d | 1d | start no earlier than 2010-02-04 | Fu XingQiong | 8h | 320 |
| 1359 | 1.12.8.5.1.2.2 | Nokia 6300i | 1d | 2010-02-08 | 2010-02-08 | 1358 | 31d |  | start no earlier than 2010-02-08 | Fu XingQiong | 8h | 320 |
| 1360 | 1.12.8.6 | **BlackBerry** | 2d? | 2010-02-05 | 2010-02-08 |  | 29d |  |  |  | 16h | 640 |
| 1361 | 1.12.8.6.1 | **BlackBerry OS 4.5** | 2d? | 2010-02-05 | 2010-02-08 |  | 29d |  |  |  | 16h | 640 |
| 1362 | 1.12.8.6.1.1 | **Full Regression Testing** | 1d? | 2010-02-05 | 2010-02-05 |  | 29d |  |  |  | 8h | 320 |
| 1363 | 1.12.8.6.1.1.1 | 8800 | 1d? | 2010-02-05 | 2010-02-05 |  | 31d | 0d | start no earlier than 2010-02-05 | Yu QiuLian | 8h | 320 |

| ID | WBS | Task | Type | Duration | Start | Finish | Predecessors | Total slack | Constraint | Resources | Work | Cost |
| --- | --- | --- | --- | --- | --- | --- | --- | --- | --- | --- | --- | --- |
| 1364 | 1.12.8.6.1.2 | **Santiy Testing** |  | 1d? | 2010-02-08 | 2010-02-08 |  | 29d |  |  | 8h | 320 |
| 1365 | 1.12.8.6.1.2.1 | 8700 |  | 1d? | 2010-02-08 | 2010-02-08 | 1363 | 31d |  | Yu QiuLian | 8h | 320 |
| 1366 | 1.12.9 | QA Report - Integration Test 1 |  | 1d | 2010-03-25 | 2010-03-25 | 1236 | 0d |  | Li Ming; Liu Ying; Xu Yan | 24h | 960 |
| 1367 | 1.12.10 | QA Report Internal/External review |  | 2d | 2010-03-26 | 2010-03-29 | 1366 | 0d |  | QA; DEV; PM; PS; Marketing | 80h | 3,200 |
| 1368 | 1.12.11 | Alpha Readiness |  | 2d | 2010-03-30 | 2010-03-31 | 1367 | 0d |  |  |  |  |
| 1369 | 1.12.12 | Alpha Release | milestone | 0d | 2010-03-31 | 2010-03-31 | 1368 | 0d |  |  |  |  |
| 1370 | 1.13 | M: MMC Alpha Quality (S1:0, S2:10, S3:100) | milestone | 0d | 2010-03-31 | 2010-03-31 | 1033 | 0d |  |  |  |  |
| 1371 | 1.14 | **Full Integration Test 2** |  | 28d? | 2010-03-31 | 2010-05-14 | 1370 | 0d |  |  | 5319.49h | 201,259.43 |
| 1372 | 1.14.1 | **Build Drop FI #8** |  | 12d? | 2010-03-31 | 2010-04-19 | 1370 | 0d |  |  | 2619h | 98,359.98 |
| 1373 | 1.14.1.1 | Build Drop FI #8 - 1 | milestone | 0d | 2010-03-31 | 2010-03-31 |  | 12d |  | Peng Sheng-Kui |  |  |
| 1374 | 1.14.1.2 | Build Drop FI #8 - 2 | milestone | 0d | 2010-04-08 | 2010-04-08 |  | 8d | start no earlier than 2010-04-08 | Peng Sheng-Kui |  |  |
| 1375 | 1.14.1.3 | **QA** |  | 12d? | 2010-03-31 | 2010-04-19 |  | 0d |  |  | 1133.71h | 38,948.53 |
| 1376 | 1.14.1.3.1 | **QA Full Regression Cycle 8** |  | 12d? | 2010-03-31 | 2010-04-19 |  | 0d |  |  | 1109.71h | 37,988.53 |
| 1377 | 1.14.1.3.1.1 | **Management** |  | 9d | 2010-04-01 | 2010-04-14 |  | 0d |  | Gao Hang; Chen Guo-Na; Geng Cheng | 272h | 8,640 |
| 1378 | 1.14.1.3.1.1.1 | [ReqID 547]GUI mode Installer |  | 1d | 2010-04-01 | 2010-04-01 |  | 0d |  |  | 6.4h |  |
| 1379 | 1.14.1.3.1.1.2 | [ReqID 451]Upgrade from previously deployed versions | milestone | 0d | 2010-04-01 | 2010-04-01 | 1378 | 0d |  |  |  |  |
| 1380 | 1.14.1.3.1.1.3 | [ReqID 546]Improved Error message |  | 0.1d | 2010-04-02 | 2010-04-02 | 1379 | 0d |  |  | 0.8h |  |
| 1381 | 1.14.1.3.1.1.4 | [ReqID 614]MMC Software Version information |  | 0.1d | 2010-04-02 | 2010-04-02 | 1380 | 0d |  |  | 0.8h |  |
| 1382 | 1.14.1.3.1.1.5 | [ReqID 628]New UI-HelpDesk |  | 1.5d | 2010-04-02 | 2010-04-06 | 1381 | 0d |  |  | 8h |  |
| 1383 | 1.14.1.3.1.1.6 | [ReqID 629]New UI-DeviceGroups |  | 1.5d | 2010-04-06 | 2010-04-08 | 1382 | 0d |  |  | 8h |  |
| 1384 | 1.14.1.3.1.1.7 | [ReqID 630]New UI-System Administration |  | 1.5d | 2010-04-08 | 2010-04-09 | 1383 | 0d |  |  | 8h |  |
| 1385 | 1.14.1.3.1.1.8 | [ReqID 631]New UI-Reporting |  | 1.3d | 2010-04-09 | 2010-04-12 | 1384 | 0d |  |  | 8h |  |
| 1386 | 1.14.1.3.1.1.9 | [ReqID 637]New UI-Login/Logout |  | 1d | 2010-04-13 | 2010-04-13 | 1385 | 0d |  |  | 8h |  |
| 1387 | 1.14.1.3.1.1.10 | [ReqID 765]Common Requirement | milestone | 0d | 2010-04-13 | 2010-04-13 | 1386 | 0d |  |  |  |  |
| 1388 | 1.14.1.3.1.1.11 | [ReqID 542]Improve Workflow Engine design | milestone | 0d | 2010-04-13 | 2010-04-13 | 1387 | 0d |  |  |  |  |
| 1389 | 1.14.1.3.1.1.12 | [ReqID 543]DM operation Management | milestone | 0d | 2010-04-13 | 2010-04-13 | 1388 | 0d |  |  |  |  |
| 1390 | 1.14.1.3.1.1.13 | Others inherited from MMC4.5 |  | 1d | 2010-04-14 | 2010-04-14 | 1389 | 0d |  |  | 8h |  |
| 1391 | 1.14.1.3.1.2 | Bulk Engine |  | 2d | 2010-04-15 | 2010-04-16 | 1390 | 0d |  | Gao Hang; Geng Cheng; Chen Guo-Na | 48h | 1,920 |
| 1392 | 1.14.1.3.1.3 | MMA Device Testing |  | 6.86d | 2010-03-31 | 2010-04-19 |  | 0d |  | Dong Ying-Ying; Li Yue-Hong; Liu Qing-Bo; Yu Jian-Lan | 109.71h | 4,388.53 |
| 1393 | 1.14.1.3.1.4 | MotoV9 Testing |  | 1d | 2010-04-19 | 2010-04-19 | 1391 | 0d |  | Chen Guo-Na; Gao Hang; Geng Cheng | 24h | 960 |
| 1394 | 1.14.1.3.1.5 | Symbian Device Testing |  | 8d | 2010-04-01 | 2010-04-13 |  | 0d |  | Li Shuang; Chen Xiu-Qiong | 128h | 5,120 |
| 1395 | 1.14.1.3.1.6 | Windows Mobile Native Device Testing |  | 3d | 2010-04-01 | 2010-04-06 |  | 0d |  | Sun Lei; Wu Li-Rong | 48h | 1,920 |

Notes:
- 1370: a) Full Regression

| ID | WBS | Task | Type | Duration | Start | Finish | Predecessors | Total slack | Free slack | Resources | Work | Cost |
| --- | --- | --- | --- | --- | --- | --- | --- | --- | --- | --- | --- | --- |
| 1396 | 1.14.1.3.1.7 | **Sony Ericsson Device Testing** |  | 2d | 2010-04-14 | 2010-04-15 | 1394 | 0d |  | Li Shuang; Chen Xiu-Qiong | 40h | 1,280 |
| 1397 | 1.14.1.3.1.7.1 | [ReqID 767]Ericsson Enhancement requirements |  | 1d | 2010-04-14 | 2010-04-14 |  | 0d |  |  | 4h |  |
| 1398 | 1.14.1.3.1.7.2 | Sony Ericsson devices parameters setting |  | 1d | 2010-04-15 | 2010-04-15 | 1397 | 0d |  |  | 4h |  |
| 1399 | 1.14.1.3.1.8 | [ReqID 491]Support of OMA-DM LAWMO Specification |  | 2d | 2010-04-07 | 2010-04-08 | 1395 | 0d |  | Sun Lei; Wu Li-Rong | 32h | 1,280 |
| 1400 | 1.14.1.3.1.9 | CDMA Device Testing |  | 4d | 2010-04-09 | 2010-04-14 | 1399 | 0d |  | Sun Lei; Wu Li-Rong | 64h | 2,560 |
| 1401 | 1.14.1.3.1.10 | [ReqID 265]RIM BlackBerry Support |  | 3d | 2010-04-15 | 2010-04-19 | 1400 | 0d |  | Wu Li-Rong; Sun Lei | 48h | 1,920 |
| 1402 | 1.14.1.3.1.11 | [ReqID 542]Improve Workflow Engine design |  | 2d | 2010-04-16 | 2010-04-19 | 1396 | 0d |  | Chen Xiu-Qiong; Li Shuang | 32h | 1,280 |
| 1403 | 1.14.1.3.1.12 | **Webservice API manual testing** |  | 5d | 2010-04-01 | 2010-04-08 |  | 0d |  | Xu Yan [50%] | 44h | 800 |
| 1404 | 1.14.1.3.1.12.1 | [ReqID 447]Add Integration |  | 1d | 2010-04-01 | 2010-04-01 |  | 0d |  |  | 8h |  |
| 1405 | 1.14.1.3.1.12.2 | [ReqID 636]New WS API Testing |  | 1d | 2010-04-02 | 2010-04-02 | 1404 | 0d |  |  |  |  |
| 1406 | 1.14.1.3.1.12.3 | Others Inherited from MMC4.5 |  | 3d | 2010-04-06 | 2010-04-08 | 1405 | 0d |  |  | 16h |  |
| 1407 | 1.14.1.3.1.13 | [ReqID 1105]New UI Performance |  | 5d | 2010-04-09 | 2010-04-15 | 1406 | 0d |  | Xu Yan [50%] | 20h | 800 |
| 1408 | 1.14.1.3.1.14 | [ReqID 317]E2E Performance testing |  | 2d | 2010-04-16 | 2010-04-19 | 1407 | 0d |  | Xu Yan [50%] | 8h | 320 |
| 1409 | 1.14.1.3.1.15 | Stability testing |  | 12d | 2010-04-01 | 2010-04-19 |  | 0d |  | Xu Yan [50%] | 48h | 1,920 |
| 1410 | 1.14.1.3.1.16 | **[ReqID 632]SMSC Interface** |  | 9d? | 2010-04-01 | 2010-04-14 |  | 3d |  | PS | 144h | 2,880 |
| 1411 | 1.14.1.3.1.16.1 | [ReqID 635]Ericsson SMSC |  | 3d? | 2010-04-01 | 2010-04-06 |  | 3d | 0d |  | 24h |  |
| 1412 | 1.14.1.3.1.16.2 | [ReqID 633]Lucent Alcatel SMSC |  | 3d? | 2010-04-07 | 2010-04-09 | 1411 | 3d | 0d |  | 24h |  |
| 1413 | 1.14.1.3.1.16.3 | [ReqID 634]Sprint SMSC |  | 3d? | 2010-04-12 | 2010-04-14 | 1412 | 3d |  |  | 24h |  |
| 1414 | 1.14.1.3.2 | Sanity Result Compare (QA&DEV) |  | 3d | 2010-04-01 | 2010-04-06 |  | 9d |  | Li Ming | 24h | 960 |
| 1415 | 1.14.1.3.3 | QA Report - Full Regression Cycle 8 | milestone | 0d | 2010-04-19 | 2010-04-19 | 1376 | 0d |  | Li Ming; Liu Ying; Xu Yan |  |  |
| 1416 | 1.14.1.4 | **DEV** |  | 12d | 2010-04-01 | 2010-04-19 |  | 0d |  |  | 1485.29h | 59,411.45 |
| 1417 | 1.14.1.4.1 | Bug Fixing |  | 12d | 2010-04-01 | 2010-04-19 |  | 0d |  | Zhang Zhi-Yu; Liu Zhi-Qiang; Li Da-Peng; Tang Wen-Hua; Chen Yong-Lin; Xue Jun; Singh Anand; Wang Jia; Zhu Zhen-Xing; Lei Juan; Liao Xue-Feng; Ma Zhi-Hui; Li Jia; Zhong Zi-Long [80%]; Meng De-Jun | 1370.09h | 54,803.45 |
| 1418 | 1.14.1.4.2 | **Performance Tuning** |  | 12d | 2010-04-01 | 2010-04-19 |  | 0d |  |  | 115.2h | 4,608 |
| 1419 | 1.14.1.4.2.1 | UI |  | 12d | 2010-04-01 | 2010-04-19 |  | 0d |  | Zhong Zi-Long [20%] | 19.2h | 768 |
| 1420 | 1.14.1.4.2.2 | E2E |  | 12d | 2010-04-01 | 2010-04-19 |  | 0d |  | Shanker Oruganti Uma | 96h | 3,840 |

| ID | WBS | Task | Type | Duration | Start | Finish | Predecessors | Total slack | Resources | Work | Cost |
| --- | --- | --- | --- | --- | --- | --- | --- | --- | --- | --- | --- |
| 1421 | 1.14.2 | **Build Drop FI #9** |  | 8d? | 2010-04-20 | 2010-04-29 | 1372 | 0d |  | 1977.29h | 73,971.45 |
| 1422 | 1.14.2.1 | **QA** |  | 8d? | 2010-04-20 | 2010-04-29 |  | 0d |  | 972h | 33,760 |
| 1423 | 1.14.2.1.1 | **QA MAT Cycle 9** |  | 8d? | 2010-04-20 | 2010-04-29 |  | 0d |  | 948h | 32,800 |
| 1424 | 1.14.2.1.1.1 | **Management** |  | 8d? | 2010-04-20 | 2010-04-29 |  | 0d | Gao Hang; Chen Guo-Na; Geng Cheng | 948h | 32,800 |
| 1425 | 1.14.2.1.1.1.1 | [ReqID 547]GUI mode Installer |  | 0.5d | 2010-04-20 | 2010-04-20 |  | 0d |  | 8h |  |
| 1426 | 1.14.2.1.1.1.2 | [ReqID 546]Improved Error message |  | 0.1d | 2010-04-20 | 2010-04-20 | 1425 | 0d |  | 0.8h |  |
| 1427 | 1.14.2.1.1.1.3 | [ReqID 614]MMC Software Version information |  | 0.1d | 2010-04-20 | 2010-04-20 | 1426 | 0d |  | 0.8h |  |
| 1428 | 1.14.2.1.1.1.4 | [ReqID 628]New UI-HelpDesk |  | 1d | 2010-04-20 | 2010-04-21 | 1427 | 0d |  | 8h |  |
| 1429 | 1.14.2.1.1.1.5 | [ReqID 629]New UI-DeviceGroups |  | 1.5d | 2010-04-21 | 2010-04-23 | 1428 | 0d |  | 12h |  |
| 1430 | 1.14.2.1.1.1.6 | [ReqID 630]New UI-System Administration |  | 1d | 2010-04-23 | 2010-04-26 | 1429 | 0d |  | 8h |  |
| 1431 | 1.14.2.1.1.1.7 | [ReqID 631]New UI-Reporting |  | 1d | 2010-04-26 | 2010-04-27 | 1430 | 0d |  | 8h |  |
| 1432 | 1.14.2.1.1.1.8 | [ReqID 637]New UI-Login/Logout |  | 0.3d | 2010-04-27 | 2010-04-27 | 1431 | 0d |  | 2.4h |  |
| 1433 | 1.14.2.1.1.1.9 | [ReqID 765]Common Requirement | milestone | 0d | 2010-04-27 | 2010-04-27 | 1432 | 0d |  |  |  |
| 1434 | 1.14.2.1.1.1.10 | [ReqID 542]Improve Workflow Engine design | milestone | 0d | 2010-04-27 | 2010-04-27 | 1433 | 0d |  |  |  |
| 1435 | 1.14.2.1.1.1.11 | [ReqID 543]DM operation Management | milestone | 0d | 2010-04-27 | 2010-04-27 | 1434 | 0d |  |  |  |
| 1436 | 1.14.2.1.1.1.12 | Others inherited from MMC4.5 |  | 1d | 2010-04-27 | 2010-04-28 | 1435 | 0d |  | 8h |  |
| 1437 | 1.14.2.1.1.1.13 | Bulk Engine |  | 0.5d | 2010-04-28 | 2010-04-28 | 1436 | 0d | Gao Hang; Geng Cheng; Chen Guo-Na | 12h | 480 |
| 1438 | 1.14.2.1.1.1.14 | MMA Device Testing |  | 8d | 2010-04-20 | 2010-04-29 |  | 0d | Dong Ying-Ying; Yu Jian-Lan; Liu Qing-Bo; Li Yue-Hong | 256h | 10,240 |
| 1439 | 1.14.2.1.1.1.15 | MotoV9 Testing |  | 1d | 2010-04-29 | 2010-04-29 | 1437 | 0d | Geng Cheng; Gao Hang; Chen Guo-Na | 24h | 960 |
| 1440 | 1.14.2.1.1.1.16 | Symbian Device Testing |  | 5d | 2010-04-20 | 2010-04-26 |  | 0d | Li Shuang; Chen Xiu-Qiong | 80h | 3,200 |
| 1441 | 1.14.2.1.1.1.17 | Windows Mobile Native Device Testing |  | 2d | 2010-04-20 | 2010-04-21 |  | 0d | Wu Li-Rong; Sun Lei | 32h | 1,280 |
| 1442 | 1.14.2.1.1.1.18 | **Sony Ericsson Device Testing** |  | 2d | 2010-04-27 | 2010-04-28 | 1440 | 0d | Li Shuang; Chen Xiu-Qiong | 40h | 1,280 |
| 1443 | 1.14.2.1.1.1.18.1 | [ReqID 767]Ericsson Enhancement requirements |  | 1d | 2010-04-27 | 2010-04-27 |  | 0d |  | 4h |  |
| 1444 | 1.14.2.1.1.1.18.2 | Sony Ericsson devices parameters setting |  | 1d | 2010-04-28 | 2010-04-28 | 1443 | 0d |  | 4h |  |
| 1445 | 1.14.2.1.1.1.19 | [ReqID 491]Support of OMA-DM LAWMO Specification |  | 1d | 2010-04-22 | 2010-04-22 | 1441 | 0d | Sun Lei; Wu Li-Rong | 16h | 640 |
| 1446 | 1.14.2.1.1.1.20 | CDMA Device Testing |  | 3d | 2010-04-23 | 2010-04-27 | 1445 | 0d | Sun Lei; Wu Li-Rong | 48h | 1,920 |
| 1447 | 1.14.2.1.1.1.21 | [ReqID 265]RIM BlackBerry Support |  | 2d | 2010-04-28 | 2010-04-29 | 1446 | 0d | Wu Li-Rong; Sun Lei | 32h | 1,280 |
| 1448 | 1.14.2.1.1.1.22 | [ReqID 542]Improve Workflow Engine design |  | 1d | 2010-04-29 | 2010-04-29 | 1442 | 0d | Chen Xiu-Qiong; Li Shuang | 16h | 640 |

| ID | WBS | Task | Type | Duration | Start | Finish | Predecessors | Total slack | Free slack | Constraint | Resources | Work | Cost |
| --- | --- | --- | --- | --- | --- | --- | --- | --- | --- | --- | --- | --- | --- |
| 1449 | 1.14.2.1.1.1.23 | **Webservice API manual testing** |  | 3d | 2010-04-20 | 2010-04-22 |  | 0d |  |  | Xu Yan [50%] | 28h | 480 |
| 1450 | 1.14.2.1.1.1.23.1 | [ReqID 447]Add Integration |  | 0.5d | 2010-04-20 | 2010-04-20 |  | 0d |  | start no earlier than 2010-01-11 |  | 2.4h |  |
| 1451 | 1.14.2.1.1.1.23.2 | [ReqID 636]New WS API Testing |  | 0.8d | 2010-04-20 | 2010-04-21 | 1450 | 0d |  |  |  |  |  |
| 1452 | 1.14.2.1.1.1.23.3 | Others Inherited from MMC4.5 |  | 1.7d | 2010-04-21 | 2010-04-22 | 1451 | 0d |  |  |  | 13.6h |  |
| 1453 | 1.14.2.1.1.1.24 | [ReqID 1105]New UI Performance |  | 3d | 2010-04-23 | 2010-04-27 | 1452 | 0d |  |  | Xu Yan [50%] | 12h | 480 |
| 1454 | 1.14.2.1.1.1.25 | [ReqID 317]E2E Performance testing |  | 2d | 2010-04-28 | 2010-04-29 | 1453 | 0d |  |  | Xu Yan [50%] | 8h | 320 |
| 1455 | 1.14.2.1.1.1.26 | **[ReqID 632]SMSC Interface** |  | 6d? | 2010-04-20 | 2010-04-27 |  | 2d |  |  | PS | 96h | 1,920 |
| 1456 | 1.14.2.1.1.1.26.1 | [ReqID 635]Ericsson SMSC |  | 2d? | 2010-04-20 | 2010-04-21 |  | 2d | 0d |  |  | 16h |  |
| 1457 | 1.14.2.1.1.1.26.2 | [ReqID 633]Lucent Alcatel SMSC |  | 2d? | 2010-04-22 | 2010-04-23 | 1456 | 2d | 0d |  |  | 16h |  |
| 1458 | 1.14.2.1.1.1.26.3 | [ReqID 634]Sprint SMSC |  | 2d? | 2010-04-26 | 2010-04-27 | 1457 | 2d |  |  |  | 16h |  |
| 1459 | 1.14.2.1.2 | Sanity Result Compare (QA&DEV) |  | 3d | 2010-04-20 | 2010-04-22 |  | 5d |  |  | Li Ming | 24h | 960 |
| 1460 | 1.14.2.1.3 | QA Report - MAT Cycle 9 | milestone | 0d | 2010-04-29 | 2010-04-29 | 1423 | 0d |  |  | Li Ming; Liu Ying; Xu Yan |  |  |
| 1461 | 1.14.2.2 | **DEV** |  | 8d | 2010-04-20 | 2010-04-29 |  | 0d |  |  |  | 1005.29h | 40,211.45 |
| 1462 | 1.14.2.2.1 | Bug Fixing |  | 8d | 2010-04-20 | 2010-04-29 |  | 0d |  |  | Zhang Zhi-Yu; Liu Zhi-Qiang; Li Da-Peng; Tang Wen-Hua; Chen Yong-Lin; Xue Jun; Singh Anand; Wang Jia; Zhu Zhen-Xing; Lei Juan; Liao Xue-Feng; Ma Zhi-Hui; Li Jia; Zhong Zi-Long [80%]; Meng De-Jun | 928.49h | 37,139.45 |
| 1463 | 1.14.2.2.2 | **Performance Tuning** |  | 8d | 2010-04-20 | 2010-04-29 |  | 0d |  |  |  | 76.8h | 3,072 |
| 1464 | 1.14.2.2.2.1 | UI |  | 8d | 2010-04-20 | 2010-04-29 |  | 0d |  |  | Zhong Zi-Long [20%] | 12.8h | 512 |
| 1465 | 1.14.2.2.2.2 | E2E |  | 8d | 2010-04-20 | 2010-04-29 |  | 0d |  |  | Shanker Oruganti Uma | 64h | 2,560 |
| 1466 | 1.14.3 | **Build Drop FI #10** |  | 3d | 2010-04-30 | 2010-05-07 | 1421 | 0d |  |  |  | 619.2h | 24,768 |
| 1467 | 1.14.3.1 | **QA** |  | 3d | 2010-04-30 | 2010-05-07 |  | 0d |  |  |  | 264h | 10,560 |
| 1468 | 1.14.3.1.1 | **QA Sanity Cycle 10** |  | 3d | 2010-04-30 | 2010-05-07 |  | 0d |  |  | Gao Hang; Chen Xiu-Qiong; Li Shuang; Sun Lei; Liu Qing-Bo; Li Yue-Hong; Chen Guo-Na; Geng Cheng; Yu Jian-Lan; Dong Ying-Ying; Wu Li-Rong | 264h | 10,560 |
| 1469 | 1.14.3.1.1.1 | Management |  | 1d | 2010-04-30 | 2010-04-30 |  | 0d |  |  |  |  |  |
| 1470 | 1.14.3.1.1.2 | E2E |  | 2d | 2010-05-06 | 2010-05-07 | 1469 | 0d |  |  |  |  |  |
| 1471 | 1.14.3.1.2 | QA Report - Sanity Cycle 10 | milestone | 0d | 2010-05-07 | 2010-05-07 | 1468 | 0d |  |  | Li Ming; Liu Ying; Xu Yan |  |  |
| 1472 | 1.14.3.2 | **DEV** |  | 3d | 2010-04-30 | 2010-05-07 |  | 0d |  |  |  | 355.2h | 14,208 |
| 1473 | 1.14.3.2.1 | Bug Fixing |  | 3d | 2010-04-30 | 2010-05-07 |  | 0d |  |  | Zhang Zhi-Yu; Liu Zhi-Qiang; Li Da-Peng; Tang Wen-Hua; Chen Yong-Lin; Xue Jun; Singh Anand; Wang Jia; Zhu Zhen-Xing; Lei Juan; Liao Xue-Feng; Ma Zhi-Hui; Li Jia; Zhong Zi-Long [80%]; Meng De-Jun | 355.2h | 14,208 |
| 1474 | 1.14.4 | QA Report - Integration Test 1 |  | 1d | 2010-05-10 | 2010-05-10 | 1466 | 0d |  |  | Li Ming; Liu Ying; Xu Yan | 24h | 960 |
| 1475 | 1.14.5 | QA Report Internal/External review |  | 2d? | 2010-05-11 | 2010-05-12 | 1474 | 0d |  |  | QA; DEV; PM; PS; Marketing | 80h | 3,200 |
| 1476 | 1.14.6 | Beta Readiness |  | 2d | 2010-05-13 | 2010-05-14 | 1475 | 0d |  |  |  |  |  |
| 1477 | 1.14.7 | Beta Release | milestone | 0d | 2010-05-14 | 2010-05-14 | 1476 | 0d |  |  |  |  |  |
| 1478 | 1.15 | M: Beta Quality (S1:0, S2:0, S3:50)(Usability issues should be less than 15% of the S3 bugs) | milestone | 0d | 2010-05-14 | 2010-05-14 | 1371 | 0d |  |  |  |  |  |

| ID | WBS | Task | Type | Duration | Start | Finish | Predecessors | Baseline start | Baseline finish | Baseline duration | Baseline 1 start | Baseline 1 finish | Total slack | Free slack | Constraint | Resources | Work | Cost | Baseline cost | Text1 |
| --- | --- | --- | --- | --- | --- | --- | --- | --- | --- | --- | --- | --- | --- | --- | --- | --- | --- | --- | --- | --- |
| 1479 | 1.16 | **UAT (PLACE HOLDER - TO BE CONFIRMED WITH UAT TEAM)** |  | 21d | 2010-05-14 | 2010-06-12 | 1478 |  |  |  |  |  | 71d |  |  | Combs Sean | 744h | 29,760 |  |  |
| 1480 | 1.9.8 | **UAT Execution** |  | 21d | 2010-05-14 | 2010-06-12 |  | 2009-07-21 | 2009-08-17 | 19d | 2005-09-14 | 2005-09-14 | 71d | 0d |  |  | 576h | 23,040 | 6,080 |  |
| 1481 | 1.16.1.1 | Identify UAT Device List | milestone | 0d | 2010-05-14 | 2010-05-14 |  |  |  |  |  |  | 92d |  | start no earlier than 2010-01-15 | Combs Sean; McNeil Edward |  |  |  |  |
| 1482 | 1.16.1.2 | Device Readiness for UAT Testers |  | 21d | 2010-05-17 | 2010-06-12 |  |  |  |  |  |  | 71d |  | start no earlier than 2010-01-18 | UAT Team; Saydag Aylin | 336h | 13,440 |  |  |
| 1483 | 1.16.1.3 | UAT Scripts Development & Review |  | 5d | 2010-05-17 | 2010-05-21 |  |  |  |  |  |  | 87d |  | start no earlier than 2010-03-01 | QA; PS | 80h | 3,200 |  |  |
| 1484 | 1.16.1.4 | UAT Server Setup and UAT Test Env Preparation |  | 5d | 2010-05-17 | 2010-05-21 |  |  |  |  |  |  | 87d |  | start no earlier than 2010-03-01 | PS | 40h | 1,600 |  |  |
| 1485 | 1.16.1.5 | UAT Kickoff Presentation |  | 1d | 2010-05-17 | 2010-05-17 |  | 2009-07-29 | 2009-07-30 | 1d |  |  | 91d |  |  | Combs Sean | 8h | 320 | 320 |  |
| 1486 | 1.16.1.6 | Deploy MMC4.6 Beta Drop onto PS UAT Server |  | 1d | 2010-05-17 | 2010-05-17 |  |  |  |  |  |  | 83d | 0d |  | PS | 8h | 320 |  |  |
| 1487 | 1.9.8.1 | Validate all test accounts: Sales, Mktg, Pre-Sales, Prof. Services |  | 1d | 2010-05-18 | 2010-05-18 | 1486 | 2009-07-30 | 2009-08-03 | 2d |  |  | 83d | 0d |  | PS | 8h | 320 | 640 |  |
| 1488 | 1.16.1.8 | Execute Test Scripts and Record Results |  | 5d | 2010-05-19 | 2010-05-25 | 1487 | 2009-08-07 | 2009-08-14 | 5d |  |  | 83d | 0d |  | QA; UAT Team | 80h | 3,200 | 3,200 |  |
| 1489 | 1 | Perform Regression & End-to-End Testing |  | 1d | 2010-05-26 | 2010-05-26 | 1488 | 2009-08-14 | 2009-08-17 | 1d |  |  | 83d | 0d |  | UAT Team | 8h | 320 |  | A6030 |
| 1490 | 1.9.8.2.2 | UAT Testing Verification - Execution |  | 1d | 2010-05-27 | 2010-05-27 | 1489 | 2009-08-03 | 2009-08-04 | 1d |  |  | 83d | 0d |  | UAT Team | 8h | 320 |  |  |
| 1491 | 1.9.8.2.3 | M: UAT Execution Complete | milestone | 0d | 2010-05-27 | 2010-05-27 | 1490 | 2009-08-05 | 2009-08-05 | 0d |  |  | 83d |  |  |  |  |  |  |  |
| 1492 | 1.9.8.5 | M: UAT Sign-Off | milestone | 0d | 2010-06-12 | 2010-06-12 | 1480 | 2009-08-05 | 2009-08-05 | 0d | 2005-09-14 | 2005-09-14 | 71d |  |  | UAT Team |  |  |  |  |
| 1493 | 1.17 | **Full Integration Test 3** |  | 32d? | 2010-05-14 | 2010-06-30 | 1478 |  |  |  |  |  | 0d |  |  |  | 3796.6h | 145,463.98 |  |  |
| 1494 | 1.17.1 | **Build Drop FI #11** |  | 12d? | 2010-05-14 | 2010-06-01 | 1478 |  |  |  |  |  | 0d |  |  |  | 2619h | 98,359.98 |  |  |
| 1495 | 1.17.1.1 | Build Drop FI #11 - 1 | milestone | 0d | 2010-05-14 | 2010-05-14 |  |  |  |  |  |  | 12d |  |  | Peng Sheng-Kui |  |  |  |  |
| 1496 | 1.17.1.2 | Build Drop FI #11 - 2 | milestone | 0d | 2010-05-21 | 2010-05-21 |  |  |  |  |  |  | 8d |  | start no earlier than 2010-05-21 | Peng Sheng-Kui |  |  |  |  |
| 1497 | 1.17.1.3 | **QA** |  | 12d? | 2010-05-14 | 2010-06-01 |  |  |  |  |  |  | 0d |  |  |  | 1133.71h | 38,948.53 |  |  |
| 1498 | 1.17.1.3.1 | **QA Full Regression Cycle 11** |  | 12d? | 2010-05-14 | 2010-06-01 |  |  |  |  |  |  | 0d |  |  |  | 1109.71h | 37,988.53 |  |  |
| 1499 | 1.17.1.3.1.1 | **Management** |  | 9d | 2010-05-17 | 2010-05-27 |  |  |  |  |  |  | 0d |  |  | Gao Hang; Chen Guo-Na; Geng Cheng | 272h | 8,640 |  |  |
| 1500 | 1.17.1.3.1.1.1 | [ReqID 547]GUI mode Installer |  | 1d | 2010-05-17 | 2010-05-17 |  |  |  |  |  |  | 0d |  |  |  | 6.4h |  |  |  |
| 1501 | 1.17.1.3.1.1.2 | [ReqID 451]Upgrade from previously deployed versions | milestone | 0d | 2010-05-17 | 2010-05-17 | 1500 |  |  |  |  |  | 0d |  |  |  |  |  |  |  |
| 1502 | 1.17.1.3.1.1.3 | [ReqID 546]Improved Error message |  | 0.1d | 2010-05-18 | 2010-05-18 | 1501 |  |  |  |  |  | 0d |  |  |  | 0.8h |  |  |  |
| 1503 | 1.17.1.3.1.1.4 | [ReqID 614]MMC Software Version information |  | 0.1d | 2010-05-18 | 2010-05-18 | 1502 |  |  |  |  |  | 0d |  |  |  | 0.8h |  |  |  |
| 1504 | 1.17.1.3.1.1.5 | [ReqID 628]New UI-HelpDesk |  | 1.5d | 2010-05-18 | 2010-05-19 | 1503 |  |  |  |  |  | 0d |  |  |  | 8h |  |  |  |
| 1505 | 1.17.1.3.1.1.6 | [ReqID 629]New UI-DeviceGroups |  | 1.5d | 2010-05-19 | 2010-05-21 | 1504 |  |  |  |  |  | 0d |  |  |  | 8h |  |  |  |
| 1506 | 1.17.1.3.1.1.7 | [ReqID 630]New UI-System Administration |  | 1.5d | 2010-05-21 | 2010-05-24 | 1505 |  |  |  |  |  | 0d |  |  |  | 8h |  |  |  |
| 1507 | 1.17.1.3.1.1.8 | [ReqID 631]New UI-Reporting |  | 1.3d | 2010-05-24 | 2010-05-25 | 1506 |  |  |  |  |  | 0d |  |  |  | 8h |  |  |  |
| 1508 | 1.17.1.3.1.1.9 | [ReqID 637]New UI-Login/Logout |  | 1d | 2010-05-26 | 2010-05-26 | 1507 |  |  |  |  |  | 0d |  |  |  | 8h |  |  |  |
| 1509 | 1.17.1.3.1.1.10 | [ReqID 765]Common Requirement | milestone | 0d | 2010-05-26 | 2010-05-26 | 1508 |  |  |  |  |  | 0d |  |  |  |  |  |  |  |
| 1510 | 1.17.1.3.1.1.11 | [ReqID 542]Improve Workflow Engine design | milestone | 0d | 2010-05-26 | 2010-05-26 | 1509 |  |  |  |  |  | 0d |  |  |  |  |  |  |  |
| 1511 | 1.17.1.3.1.1.12 | [ReqID 543]DM operation Management | milestone | 0d | 2010-05-26 | 2010-05-26 | 1510 |  |  |  |  |  | 0d |  |  |  |  |  |  |  |
| 1512 | 1.17.1.3.1.1.13 | Others inherited from MMC4.5 |  | 1d | 2010-05-27 | 2010-05-27 | 1511 |  |  |  |  |  | 0d |  |  |  | 8h |  |  |  |
| 1513 | 1.17.1.3.1.2 | Bulk Engine |  | 2d | 2010-05-28 | 2010-05-31 | 1512 |  |  |  |  |  | 0d |  |  | Gao Hang; Geng Cheng; Chen Guo-Na | 48h | 1,920 |  |  |
| 1514 | 1.17.1.3.1.3 | MMA Device Testing |  | 6.86d | 2010-05-14 | 2010-06-01 |  |  |  |  |  |  | 0d |  |  | Dong Ying-Ying; Li Yue-Hong; Liu Qing-Bo; Yu Jian-Lan | 109.71h | 4,388.53 |  |  |
| 1515 | 1.17.1.3.1.4 | MotoV9 Testing |  | 1d | 2010-06-01 | 2010-06-01 | 1513 |  |  |  |  |  | 0d |  |  | Chen Guo-Na; Gao Hang; Geng Cheng | 24h | 960 |  |  |
| 1516 | 1.17.1.3.1.5 | Symbian Device Testing |  | 8d | 2010-05-17 | 2010-05-26 |  |  |  |  |  |  | 0d |  |  | Li Shuang; Chen Xiu-Qiong | 128h | 5,120 |  |  |
| 1517 | 1.17.1.3.1.6 | Windows Mobile Native Device Testing |  | 3d | 2010-05-17 | 2010-05-19 |  |  |  |  |  |  | 0d |  |  | Sun Lei; Wu Li-Rong | 48h | 1,920 |  |  |

| ID | WBS | Task | Type | Duration | Start | Finish | Predecessors | Total slack | Free slack | Resources | Work | Cost |
| --- | --- | --- | --- | --- | --- | --- | --- | --- | --- | --- | --- | --- |
| 1518 | 1.17.1.3.1.7 | **Sony Ericsson Device Testing** |  | 2d | 2010-05-27 | 2010-05-28 | 1516 | 0d |  | Li Shuang; Chen Xiu-Qiong | 40h | 1,280 |
| 1519 | 1.17.1.3.1.7.1 | [ReqID 767]Ericsson Enhancement requirements |  | 1d | 2010-05-27 | 2010-05-27 |  | 0d |  |  | 4h |  |
| 1520 | 1.17.1.3.1.7.2 | Sony Ericsson devices parameters setting |  | 1d | 2010-05-28 | 2010-05-28 | 1519 | 0d |  |  | 4h |  |
| 1521 | 1.17.1.3.1.8 | [ReqID 491]Support of OMA-DM LAWMO Specification |  | 2d | 2010-05-20 | 2010-05-21 | 1517 | 0d |  | Sun Lei; Wu Li-Rong | 32h | 1,280 |
| 1522 | 1.17.1.3.1.9 | CDMA Device Testing |  | 4d | 2010-05-24 | 2010-05-27 | 1521 | 0d |  | Sun Lei; Wu Li-Rong | 64h | 2,560 |
| 1523 | 1.17.1.3.1.10 | [ReqID 265]RIM BlackBerry Support |  | 3d | 2010-05-28 | 2010-06-01 | 1522 | 0d |  | Wu Li-Rong; Sun Lei | 48h | 1,920 |
| 1524 | 1.17.1.3.1.11 | [ReqID 542]Improve Workflow Engine design |  | 2d | 2010-05-31 | 2010-06-01 | 1518 | 0d |  | Chen Xiu-Qiong; Li Shuang | 32h | 1,280 |
| 1525 | 1.17.1.3.1.12 | **Webservice API manual testing** |  | 5d | 2010-05-17 | 2010-05-21 |  | 0d |  | Xu Yan [50%] | 44h | 800 |
| 1526 | 1.17.1.3.1.12.1 | [ReqID 447]Add Integration |  | 1d | 2010-05-17 | 2010-05-17 |  | 0d |  |  | 8h |  |
| 1527 | 1.17.1.3.1.12.2 | [ReqID 636]New WS API Testing |  | 1d | 2010-05-18 | 2010-05-18 | 1526 | 0d |  |  |  |  |
| 1528 | 1.17.1.3.1.12.3 | Others Inherited from MMC4.5 |  | 3d | 2010-05-19 | 2010-05-21 | 1527 | 0d |  |  | 16h |  |
| 1529 | 1.17.1.3.1.13 | [ReqID 1105]New UI Performance |  | 5d | 2010-05-24 | 2010-05-28 | 1528 | 0d |  | Xu Yan [50%] | 20h | 800 |
| 1530 | 1.17.1.3.1.14 | [ReqID 317]E2E Performance testing |  | 2d | 2010-05-31 | 2010-06-01 | 1529 | 0d |  | Xu Yan [50%] | 8h | 320 |
| 1531 | 1.17.1.3.1.15 | Stability testing |  | 12d | 2010-05-17 | 2010-06-01 |  | 0d |  | Xu Yan [50%] | 48h | 1,920 |
| 1532 | 1.17.1.3.1.16 | **[ReqID 632]SMSC Interface** |  | 9d? | 2010-05-17 | 2010-05-27 |  | 3d |  | PS | 144h | 2,880 |
| 1533 | 1.17.1.3.1.16.1 | [ReqID 635]Ericsson SMSC |  | 3d? | 2010-05-17 | 2010-05-19 |  | 3d | 0d |  | 24h |  |
| 1534 | 1.17.1.3.1.16.2 | [ReqID 633]Lucent Alcatel SMSC |  | 3d? | 2010-05-20 | 2010-05-24 | 1533 | 3d | 0d |  | 24h |  |
| 1535 | 1.17.1.3.1.16.3 | [ReqID 634]Sprint SMSC |  | 3d? | 2010-05-25 | 2010-05-27 | 1534 | 3d |  |  | 24h |  |
| 1536 | 1.17.1.3.2 | Sanity Result Compare (QA&DEV) |  | 3d | 2010-05-17 | 2010-05-19 |  | 9d |  | Li Ming | 24h | 960 |
| 1537 | 1.17.1.3.3 | QA Report - Full Regression Cycle 11 | milestone | 0d | 2010-06-01 | 2010-06-01 | 1498 | 0d |  | Li Ming; Liu Ying; Xu Yan |  |  |
| 1538 | 1.17.1.4 | **DEV** |  | 12d | 2010-05-17 | 2010-06-01 |  | 0d |  |  | 1485.29h | 59,411.45 |
| 1539 | 1.17.1.4.1 | Bug Fixing |  | 12d | 2010-05-17 | 2010-06-01 |  | 0d |  | Zhang Zhi-Yu; Liu Zhi-Qiang; Li Da-Peng; Tang Wen-Hua; Chen Yong-Lin; Xue Jun; Singh Anand; Wang Jia; Zhu Zhen-Xing; Lei Juan; Liao Xue-Feng; Ma Zhi-Hui; Li Jia; Zhong Zi-Long [80%]; Meng De-Jun | 1370.09h | 54,803.45 |
| 1540 | 1.17.1.4.2 | **Performance Tuning** |  | 12d | 2010-05-17 | 2010-06-01 |  | 0d |  |  | 115.2h | 4,608 |
| 1541 | 1.17.1.4.2.1 | UI |  | 12d | 2010-05-17 | 2010-06-01 |  | 0d |  | Zhong Zi-Long [20%] | 19.2h | 768 |
| 1542 | 1.17.1.4.2.2 | E2E |  | 12d | 2010-05-17 | 2010-06-01 |  | 0d |  | Shanker Oruganti Uma | 96h | 3,840 |

| ID | WBS | Task | Type | Duration | Start | Finish | Predecessors | Total slack | Free slack | Constraint | Resources | Work | Cost |
| --- | --- | --- | --- | --- | --- | --- | --- | --- | --- | --- | --- | --- | --- |
| 1543 | 1.17.2 | **Build Drop FI #12** |  | 4d | 2010-06-02 | 2010-06-07 | 1494 | 0d |  |  |  | 825.6h | 33,024 |
| 1544 | 1.17.2.1 | **QA** |  | 4d | 2010-06-02 | 2010-06-07 |  | 0d |  |  |  | 352h | 14,080 |
| 1545 | 1.17.2.1.1 | **QA Sanity + Ad-hoc Cycle 12** |  | 4d | 2010-06-02 | 2010-06-07 |  | 0d |  |  |  | 352h | 14,080 |
| 1546 | 1.17.2.1.1.1 | Sanity Testing |  | 4d | 2010-06-02 | 2010-06-07 |  | 0d |  |  | Gao Hang; Chen Xiu-Qiong; Li Shuang; Sun Lei; Liu Qing-Bo; Li Yue-Hong; Chen Guo-Na; Geng Cheng; Yu Jian-Lan; Dong Ying-Ying; Wu Li-Rong | 352h | 14,080 |
| 1547 | 1.17.2.1.2 | QA Report - Sanity + Ad-hoc Cycle 12 | milestone | 0d | 2010-06-07 | 2010-06-07 | 1545 | 0d |  |  | Li Ming; Xu Yan; Liu Ying |  |  |
| 1548 | 1.17.2.2 | **DEV** |  | 4d | 2010-06-02 | 2010-06-07 |  | 0d |  |  |  | 473.6h | 18,944 |
| 1549 | 1.17.2.2.1 | Bug Fixing |  | 4d | 2010-06-02 | 2010-06-07 |  | 0d |  |  | Zhang Zhi-Yu; Liu Zhi-Qiang; Li Da-Peng; Tang Wen-Hua; Chen Yong-Lin; Xue Jun; Singh Anand; Wang Jia; Zhu Zhen-Xing; Lei Juan; Liao Xue-Feng; Ma Zhi-Hui; Li Jia; Zhong Zi-Long [80%]; Meng De-Jun | 473.6h | 18,944 |
| 1550 | 1.17.3 | **Build Drop FI #13** |  | 3d | 2010-06-08 | 2010-06-10 | 1543 | 0d |  |  |  | 264h | 10,560 |
| 1551 | 1.17.3.1 | **QA** |  | 3d | 2010-06-08 | 2010-06-10 |  | 0d |  |  |  | 264h | 10,560 |
| 1552 | 1.17.3.1.1 | **QA Sanity Cycle 13** |  | 3d | 2010-06-08 | 2010-06-10 |  | 0d |  |  | Gao Hang; Chen Xiu-Qiong; Li Shuang; Sun Lei; Liu Qing-Bo; Li Yue-Hong; Chen Guo-Na; Geng Cheng; Yu Jian-Lan; Dong Ying-Ying; Wu Li-Rong | 264h | 10,560 |
| 1553 | 1.17.3.1.1.1 | Management |  | 1d | 2010-06-08 | 2010-06-08 |  | 0d |  |  |  |  |  |
| 1554 | 1.17.3.1.1.2 | E2E |  | 2d | 2010-06-09 | 2010-06-10 | 1553 | 0d |  |  |  |  |  |
| 1555 | 1.17.3.1.2 | QA Report - Sanity Cycle 13 | milestone | 0d | 2010-06-10 | 2010-06-10 | 1552 | 0d |  |  | Li Ming; Liu Ying; Xu Yan |  |  |
| 1556 | 1.17.3.2 | **DEV** |  | 2d | 2010-06-08 | 2010-06-09 |  | 1d |  |  |  |  |  |
| 1557 | 1.17.3.2.1 | Code Freeze, No Code Checkin |  | 2d | 2010-06-08 | 2010-06-09 |  | 1d |  |  |  |  |  |
| 1558 | 1.17.4 | QA Report - Full Integration Test 3 |  | 2d | 2010-06-11 | 2010-06-12 | 1550 | 0d |  |  | Li Ming; Liu Ying; Xu Yan | 48h | 1,920 |
| 1559 | 1.17.5 | QA Report Internal/External review |  | 1d? | 2010-06-13 | 2010-06-13 | 1558 | 0d |  |  | QA; DEV; PM; PS; Marketing | 40h | 1,600 |
| 1560 | 1.17.6 | Product Readiness - GA |  | 10d | 2010-06-17 | 2010-06-30 | 1559, 1550 | 0d |  |  |  |  |  |
| 1561 | 1.17.7 | M: GA Quality (S1:0, S2:0, S3:30) | milestone | 0d | 2010-06-30 | 2010-06-30 | 1560 | 0d |  |  |  |  |  |
| 1562 | 1.18 | Final Release - GA (S1:0, S2:0, S3:30)(Usability issues should be less than 15% of the S3 bugs) | milestone | 0d | 2010-06-30 | 2010-06-30 | 1493 | 0d |  |  |  |  |  |
| 1563 | 1.19 | **Post-GA Plan - PLACE HOLDER** |  | 128d | 2010-03-22 | 2010-09-21 |  | 0d |  |  |  | 2192h | 87,680 |
| 1564 | 1.19.1 | Report Database (Offline Database) |  | 60d | 2010-07-01 | 2010-09-21 | 1562 | 0d |  |  |  |  |  |
| 1565 | 1.19.2 | **Migration: MMC4.5.3 -> MMC4.6** |  | 43d | 2010-03-22 | 2010-05-25 |  | 85d |  |  |  | 2192h | 87,680 |
| 1566 | 1.19.2.1 | **Data Upgrade (DEV)** |  | 28d | 2010-03-22 | 2010-04-29 |  | 85d | 0d |  |  | 1008h | 40,320 |
| 1567 | 1.19.2.1.1 | Dev Start | milestone | 0d | 2010-03-22 | 2010-03-22 |  | 85d | 0d | start no earlier than 2010-03-22 |  |  |  |
| 1568 | 1.19.2.1.2 | Current data research |  | 2d | 2010-03-22 | 2010-03-23 | 1567 | 85d | 0d | finish no earlier than 2009-11-27 | DBA; Lei Juan | 32h | 1,280 |

| ID | WBS | Task | Duration | Start | Finish | Predecessors | Total slack | Free slack | Constraint | Resources | Work | Cost |
| --- | --- | --- | --- | --- | --- | --- | --- | --- | --- | --- | --- | --- |
| 1569 | 1.19.2.1.3 | **Design** | 3d | 2010-03-24 | 2010-03-26 |  | 85d |  |  |  | 32h | 1,280 |
| 1570 | 1.19.2.1.3.1 | system design | 2d | 2010-03-24 | 2010-03-25 | 1568 | 85d | 0d | start no earlier than 2009-11-30 | DBA; Lei Juan | 32h | 1,280 |
| 1571 | 1.19.2.1.3.2 | Interface with Installler | 1d | 2010-03-26 | 2010-03-26 | 1570 | 85d | 0d |  |  |  |  |
| 1572 | 1.19.2.1.4 | **DB** | 8d | 2010-03-29 | 2010-04-08 |  | 85d |  |  |  | 320h | 12,800 |
| 1573 | 1.19.2.1.4.1 | **Old data check** | 3d | 2010-03-29 | 2010-03-31 |  | 100d |  |  |  | 24h | 960 |
| 1574 | 1.19.2.1.4.1.1 | Old value legal?(eg: unique constrain) | 1d | 2010-03-29 | 2010-03-29 | 1571 | 100d | 0d | start no earlier than 2009-12-03 | Meng De-Jun | 8h | 320 |
| 1575 | 1.19.2.1.4.1.2 | No Application in Test life cycle | 0.5d | 2010-03-30 | 2010-03-30 | 1574 | 100d | 0d |  | Meng De-Jun | 4h | 160 |
| 1576 | 1.19.2.1.4.1.3 | No Active single/bulk/recurring task | 0.5d | 2010-03-30 | 2010-03-30 | 1575 | 100d | 0d | start no earlier than 2009-12-04 | Meng De-Jun | 4h | 160 |
| 1577 | 1.19.2.1.4.1.4 | New mandatory name exist? (platform) | 1d | 2010-03-31 | 2010-03-31 | 1576 | 100d | 0d | start no earlier than 2009-12-05 | Meng De-Jun | 8h | 320 |
| 1578 | 1.19.2.1.4.2 | Role Permission | 4d | 2010-04-01 | 2010-04-07 | 1577 | 100d | 0d | start no earlier than 2009-12-08 | Meng De-Jun | 32h | 1,280 |
| 1579 | 1.19.2.1.4.3 | **Workflow** | 2d | 2010-03-29 | 2010-03-30 |  | 106d |  |  |  | 16h | 640 |
| 1580 | 1.19.2.1.4.3.1 | System default workflow | 1d | 2010-03-29 | 2010-03-29 | 1571 | 106d | 0d | start no earlier than 2009-12-03 | Zhong Zi-Long | 8h | 320 |
| 1581 | 1.19.2.1.4.3.2 | Custom old workflow transistion | 1d | 2010-03-30 | 2010-03-30 | 1580 | 106d |  | finish no earlier than 2009-12-03 | Zhong Zi-Long | 8h | 320 |
| 1582 | 1.19.2.1.4.4 | **History task data update** | 2d | 2010-03-29 | 2010-03-30 |  | 85d |  |  |  | 16h | 640 |
| 1583 | 1.19.2.1.4.4.1 | Operation definition | 2d | 2010-03-29 | 2010-03-30 | 1571 | 85d | 0d | start no earlier than 2009-12-03 | Julia | 16h | 640 |
| 1584 | 1.19.2.1.4.5 | **SQL Patch** | 6d | 2010-03-31 | 2010-04-08 |  | 85d |  |  |  | 96h | 3,840 |
| 1585 | 1.19.2.1.4.5.1 | Device Status | 0.5d | 2010-03-31 | 2010-03-31 | 1583 | 85d | 0d | start no earlier than 2009-12-07 | Lei Juan; Zhong Zi-Long | 8h | 320 |
| 1586 | 1.19.2.1.4.5.2 | Clean orphan device instance | 0.5d | 2010-03-31 | 2010-03-31 | 1585 | 85d | 0d | start no earlier than 2009-12-07 | Zhong Zi-Long; Lei Juan | 8h | 320 |
| 1587 | 1.19.2.1.4.5.3 | Dev patches | 1d | 2010-04-01 | 2010-04-01 | 1586 | 85d | 0d | start no earlier than 2009-12-07 | Zhong Zi-Long; Lei Juan | 16h | 640 |
| 1588 | 1.19.2.1.4.5.4 | Import Mapping files patches | 2d | 2010-04-02 | 2010-04-06 | 1587 | 85d | 0d | start no earlier than 2009-12-07 | Zhong Zi-Long; Lei Juan | 32h | 1,280 |
| 1589 | 1.19.2.1.4.5.5 | Verfiy every tables and prepare other SQL script | 2d | 2010-04-07 | 2010-04-08 | 1588 | 85d | 0d | start no earlier than 2009-12-11 | Zhong Zi-Long; Lei Juan | 32h | 1,280 |
| 1590 | 1.19.2.1.4.6 | **Installer** | 8d | 2010-03-29 | 2010-04-08 |  | 96d | 0d |  |  | 64h | 2,560 |
| 1591 | 1.19.2.1.4.6.1 | Installer upgrade design & refactor DB installer & Pre upgrade summary | 4d | 2010-03-29 | 2010-04-01 | 1571 | 96d | 0d | start no earlier than 2009-12-03 | Liao Qin-Qin | 32h | 1,280 |
| 1592 | 1.19.2.1.4.6.2 | Installer Page one(Map Platform) | 2d | 2010-04-02 | 2010-04-06 | 1591 | 96d | 0d |  | Liao Qin-Qin | 16h | 640 |
| 1593 | 1.19.2.1.4.6.3 | Installer Page two(Verify) | 2d | 2010-04-07 | 2010-04-08 | 1592 | 96d |  | start no earlier than 2009-12-09 | Liao Qin-Qin | 16h | 640 |
| 1594 | 1.19.2.1.4.7 | Guide & Inspection | 7d | 2010-03-29 | 2010-04-07 | 1571 | 101d |  |  | DBA | 56h | 2,240 |
| 1595 | 1.19.2.1.4.8 | Upgrade guide & Script Verification | 1d | 2010-04-08 | 2010-04-08 | 1578 | 100d |  | finish no earlier than 2009-12-14 | Meng De-Jun; DBA | 16h | 640 |
| 1596 | 1.19.2.1.5 | Installer Page Three(Capability) | 4d | 2010-04-09 | 2010-04-14 | 1590 | 96d |  | finish no earlier than 2009-12-25 | Liao Qin-Qin | 32h | 1,280 |

Notes:
- 1589: 1. subscriber_class_param clean up; / 2. new global policy group; / 3. existing local policy group direct to new global one; / 4. NO care provisiong setting

| ID | WBS | Task | Type | Duration | Start | Finish | Predecessors | Total slack | Free slack | Constraint | Resources | Work | Cost |
| --- | --- | --- | --- | --- | --- | --- | --- | --- | --- | --- | --- | --- | --- |
| 1597 | 1.19.2.1.6 | **PolicyGroup** |  | 19d | 2010-03-26 | 2010-04-22 |  | 90d |  |  |  | 392h | 15,680 |
| 1598 | 1.19.2.1.6.1 | Global/Local Policy Groups |  | 10d | 2010-04-09 | 2010-04-22 | 1589 | 85d | 0d | start no earlier than 2009-12-22 | Zhong Zi-Long | 80h | 3,200 |
| 1599 | 1.19.2.1.6.2 | **Generic Parameter Mapping** |  | 7d | 2010-03-26 | 2010-04-06 | 1570 | 102d |  |  |  | 152h | 6,080 |
| 1600 | 1.19.2.1.6.2.1 | MMA |  | 3d | 2010-03-26 | 2010-03-30 |  | 102d | 0d |  | Zhao Wen-Xiu | 24h | 960 |
| 1601 | 1.19.2.1.6.2.2 | Symbian S60 |  | 3d | 2010-03-26 | 2010-03-30 |  | 106d |  |  | Gong Zhi | 24h | 960 |
| 1602 | 1.19.2.1.6.2.3 | Nokia S40 |  | 1d | 2010-03-26 | 2010-03-26 |  | 104d | 0d |  | Zhang Peng-Fei | 8h | 320 |
| 1603 | 1.19.2.1.6.2.4 | Sony Ericsson |  | 3d | 2010-03-26 | 2010-03-30 |  | 105d | 0d |  | Liu Yu | 24h | 960 |
| 1604 | 1.19.2.1.6.2.5 | CDMA |  | 1d | 2010-03-31 | 2010-03-31 | 1600 | 102d | 0d |  | Zhao Wen-Xiu | 8h | 320 |
| 1605 | 1.19.2.1.6.2.6 | Symbian UIQ |  | 3d | 2010-03-29 | 2010-03-31 | 1602 | 104d | 0d |  | Zhang Peng-Fei | 24h | 960 |
| 1606 | 1.19.2.1.6.2.7 | Windows Native DM |  | 3d | 2010-04-01 | 2010-04-06 | 1604 | 102d |  | start no earlier than 2009-12-03 | Zhao Wen-Xiu | 24h | 960 |
| 1607 | 1.19.2.1.6.2.8 | P2K |  | 1d | 2010-03-31 | 2010-03-31 | 1603 | 105d |  |  | Liu Yu | 8h | 320 |
| 1608 | 1.19.2.1.6.2.9 | BlackBerry |  | 1d | 2010-04-01 | 2010-04-01 | 1605 | 104d |  |  | Zhang Peng-Fei | 8h | 320 |
| 1609 | 1.19.2.1.6.3 | Upgrade group settings with old custom data |  | 10d | 2010-04-09 | 2010-04-22 | 1589 | 85d | 0d | start no earlier than 2009-12-22 | Lei Juan | 80h | 3,200 |
| 1610 | 1.19.2.1.6.4 | Guide & Inspectation |  | 10d | 2010-04-09 | 2010-04-22 | 1589 | 85d | 0d |  | DBA | 80h | 3,200 |
| 1611 | 1.19.2.1.7 | **Integration** |  | 5d | 2010-04-23 | 2010-04-29 |  | 85d |  |  |  | 200h | 8,000 |
| 1612 | 1.19.2.1.7.1 | Integration & Test |  | 5d | 2010-04-23 | 2010-04-29 | 1598, 1610 | 85d |  | start no earlier than 2010-01-11 | Liao Qin-Qin; Zhong Zi-Long; Lei Juan; Meng De-Jun | 160h | 6,400 |
| 1613 | 1.19.2.1.7.2 | Upgrade guide & Script Verification |  | 5d | 2010-04-23 | 2010-04-29 | 1598, 1609 | 85d |  | start no earlier than 2009-12-15 | DBA | 40h | 1,600 |
| 1614 | 1.19.2.2 | **QA Upgrade Testing** |  | 15d | 2010-04-29 | 2010-05-25 | 1566 | 85d |  |  |  | 1184h | 47,360 |
| 1615 | 1.19.2.2.1 | M: QA Testing Environment Preparation (MMC 4.5.3 with data) | milestone | 0d | 2010-04-29 | 2010-04-29 |  | 85d | 0d |  | Wang Ji-Zhong; Chen Xiu-Qiong; Gao Hang; Li Shuang; Sun Lei; Liu Qing-Bo; Chen Guo-Na; Geng Cheng; Li Yue-Hong; Yu Jian-Lan |  |  |
| 1616 | 1.19.2.2.2 | **QA Cycle 1 MAT** |  | 6d | 2010-04-29 | 2010-05-12 | 1615 | 85d | 0d |  |  | 472h | 18,880 |
| 1617 | 1.19.2.2.2.1 | Mgmt - Installer(Upgrader) |  | 4d | 2010-04-30 | 2010-05-10 |  | 87d |  |  | Geng Cheng [50%] | 16h | 640 |
| 1618 | 1.19.2.2.2.2 | **Mgmt - Old data check** |  | 5d | 2010-04-30 | 2010-05-11 |  | 85d |  |  | Li Yue-Hong; Yu Jian-Lan | 80h | 3,200 |
| 1619 | 1.19.2.2.2.2.1 | System Administration |  | 1d | 2010-04-30 | 2010-04-30 |  | 85d | 0d |  |  |  |  |
| 1620 | 1.19.2.2.2.2.2 | Help Desk |  | 1d | 2010-05-06 | 2010-05-06 | 1619 | 85d | 0d |  |  |  |  |
| 1621 | 1.19.2.2.2.2.3 | Device Groups |  | 2d | 2010-05-07 | 2010-05-10 | 1620 | 85d | 0d |  |  |  |  |
| 1622 | 1.19.2.2.2.2.4 | Reporting |  | 1d | 2010-05-11 | 2010-05-11 | 1621 | 85d | 0d |  |  |  |  |
| 1623 | 1.19.2.2.2.3 | Mgmt - Role Permission mapping check |  | 1d | 2010-05-12 | 2010-05-12 | 1622 | 85d |  |  | Li Yue-Hong; Yu Jian-Lan | 16h | 640 |

| ID | WBS | Task | Type | Duration | Start | Finish | Predecessors | Total slack | Free slack | Resources | Work | Cost |
| --- | --- | --- | --- | --- | --- | --- | --- | --- | --- | --- | --- | --- |
| 1624 | 1.19.2.2.2.4 | **E2E - Old data E2E support** |  | 6d | 2010-04-30 | 2010-05-12 |  | 85d |  | Li Shuang; Sun Lei; Liu Qing-Bo; Chen Guo-Na | 192h | 7,680 |
| 1625 | 1.19.2.2.2.4.1 | WM MMA devices (HP iPaq 510/910) |  | 3d | 2010-04-30 | 2010-05-07 |  | 85d | 0d |  |  |  |
| 1626 | 1.19.2.2.2.4.2 | Symbian devices (Nokia N95) |  | 1d | 2010-05-10 | 2010-05-10 | 1625 | 85d | 0d |  |  |  |
| 1627 | 1.19.2.2.2.4.3 | CDMA devices (Simulator) |  | 1d | 2010-05-11 | 2010-05-11 | 1626 | 85d | 0d |  |  |  |
| 1628 | 1.19.2.2.2.4.4 | P2K (Moto V9) |  | 1d | 2010-05-12 | 2010-05-12 | 1627 | 85d |  |  |  |  |
| 1629 | 1.19.2.2.2.5 | **E2E - New data E2E support** |  | 6d | 2010-04-30 | 2010-05-12 |  | 85d |  | Wang Ji-Zhong; Chen Xiu-Qiong; Gao Hang; Geng Cheng [50%] | 168h | 6,720 |
| 1630 | 1.19.2.2.2.5.1 | WM MMA devices (HP Obsidian) |  | 3d | 2010-04-30 | 2010-05-07 |  | 85d | 0d |  |  |  |
| 1631 | 1.19.2.2.2.5.2 | Symbian devices (Nokia 5800/E75) |  | 1d | 2010-05-10 | 2010-05-10 | 1630 | 85d | 0d |  |  |  |
| 1632 | 1.19.2.2.2.5.3 | Sony Ericsson devices (SE C510) |  | 1d | 2010-05-11 | 2010-05-11 | 1631 | 85d | 0d |  |  |  |
| 1633 | 1.19.2.2.2.5.4 | WM NativeDM devices (HTC Diamond 2) |  | 1d | 2010-05-12 | 2010-05-12 | 1632 | 85d |  |  |  |  |
| 1634 | 1.19.2.2.2.6 | QA Report - Cycle 1 | milestone | 0d | 2010-04-29 | 2010-04-29 |  | 91d |  | Li Ming |  |  |
| 1635 | 1.19.2.2.2.7 | QA Exit Criterion - (S1:0?, S2:0?, S3:30?)(Usability issues should be less than 15% of the S3 bugs) | milestone | 0d | 2010-04-29 | 2010-04-29 |  | 91d |  |  |  |  |
| 1636 | 1.19.2.2.3 | **QA Cycle 2 MAT** |  | 6d | 2010-05-12 | 2010-05-20 | 1616 | 85d | 0d |  | 472h | 18,880 |
| 1637 | 1.19.2.2.3.1 | Mgmt - Installer(Upgrader) |  | 4d | 2010-05-13 | 2010-05-18 |  | 87d |  | Geng Cheng [50%] | 16h | 640 |
| 1638 | 1.19.2.2.3.2 | **Mgmt - Old data check** |  | 5d | 2010-05-13 | 2010-05-19 |  | 85d |  | Li Yue-Hong; Yu Jian-Lan | 80h | 3,200 |
| 1639 | 1.19.2.2.3.2.1 | System Administration |  | 1d | 2010-05-13 | 2010-05-13 |  | 85d | 0d |  |  |  |
| 1640 | 1.19.2.2.3.2.2 | Help Desk |  | 1d | 2010-05-14 | 2010-05-14 | 1639 | 85d | 0d |  |  |  |
| 1641 | 1.19.2.2.3.2.3 | Device Groups |  | 2d | 2010-05-17 | 2010-05-18 | 1640 | 85d | 0d |  |  |  |
| 1642 | 1.19.2.2.3.2.4 | Reporting |  | 1d | 2010-05-19 | 2010-05-19 | 1641 | 85d | 0d |  |  |  |
| 1643 | 1.19.2.2.3.3 | Mgmt - Role Permission mapping check |  | 1d | 2010-05-20 | 2010-05-20 | 1642 | 85d |  | Li Yue-Hong; Yu Jian-Lan | 16h | 640 |
| 1644 | 1.19.2.2.3.4 | **E2E - Old data E2E support** |  | 6d | 2010-05-13 | 2010-05-20 |  | 85d |  | Li Shuang; Sun Lei; Liu Qing-Bo; Chen Guo-Na | 192h | 7,680 |
| 1645 | 1.19.2.2.3.4.1 | WM MMA devices (HP iPaq 510/910) |  | 3d | 2010-05-13 | 2010-05-17 |  | 85d | 0d |  |  |  |
| 1646 | 1.19.2.2.3.4.2 | Symbian devices (Nokia N95) |  | 1d | 2010-05-18 | 2010-05-18 | 1645 | 85d | 0d |  |  |  |
| 1647 | 1.19.2.2.3.4.3 | CDMA devices (Simulator) |  | 1d | 2010-05-19 | 2010-05-19 | 1646 | 85d | 0d |  |  |  |
| 1648 | 1.19.2.2.3.4.4 | P2K (Moto V9) |  | 1d | 2010-05-20 | 2010-05-20 | 1647 | 85d |  |  |  |  |

| ID | WBS | Task | Type | Duration | Start | Finish | Predecessors | Total slack | Free slack | Resources | Work | Cost |
| --- | --- | --- | --- | --- | --- | --- | --- | --- | --- | --- | --- | --- |
| 1649 | 1.19.2.2.3.5 | **E2E - New data E2E support** |  | 6d | 2010-05-13 | 2010-05-20 |  | 85d |  | Wang Ji-Zhong; Chen Xiu-Qiong; Gao Hang; Geng Cheng [50%] | 168h | 6,720 |
| 1650 | 1.19.2.2.3.5.1 | WM MMA devices (HP Obsidian) |  | 3d | 2010-05-13 | 2010-05-17 |  | 85d | 0d |  |  |  |
| 1651 | 1.19.2.2.3.5.2 | Symbian devices (Nokia 5800/E75) |  | 1d | 2010-05-18 | 2010-05-18 | 1650 | 85d | 0d |  |  |  |
| 1652 | 1.19.2.2.3.5.3 | Sony Ericsson devices (SE C510) |  | 1d | 2010-05-19 | 2010-05-19 | 1651 | 85d | 0d |  |  |  |
| 1653 | 1.19.2.2.3.5.4 | WM NativeDM devices (HTC Diamond 2) |  | 1d | 2010-05-20 | 2010-05-20 | 1652 | 85d |  |  |  |  |
| 1654 | 1.19.2.2.3.6 | QA Report - Cycle 2 | milestone | 0d | 2010-05-12 | 2010-05-12 |  | 91d |  | Li Ming |  |  |
| 1655 | 1.19.2.2.3.7 | QA Exit Criterion - (S1:0?, S2:0?, S3:30?)(Usability issues should be less than 15% of the S3 bugs) | milestone | 0d | 2010-05-12 | 2010-05-12 |  | 91d |  |  |  |  |
| 1656 | 1.19.2.2.4 | **QA Cycle 3 Sanity** |  | 3d | 2010-05-21 | 2010-05-25 | 1636 | 85d |  | Wang Ji-Zhong; Chen Xiu-Qiong; Gao Hang; Li Shuang; Sun Lei; Liu Qing-Bo; Chen Guo-Na; Geng Cheng; Li Yue-Hong; Yu Jian-Lan | 240h | 9,600 |
| 1657 | 1.19.2.2.4.1 | Sanity Testing |  | 3d | 2010-05-21 | 2010-05-25 |  | 85d | 0d |  |  |  |
| 1658 | 1.19.2.2.4.2 | QA Report - Cycle 3 | milestone | 0d | 2010-05-25 | 2010-05-25 | 1657 | 85d | 0d | Li Ming |  |  |
| 1659 | 1.19.2.2.4.3 | QA Exit Criterion - (S1:0?, S2:0?, S3:30?)(Usability issues should be less than 15% of the S3 bugs) | milestone | 0d | 2010-05-25 | 2010-05-25 | 1658 | 85d |  |  |  |  |
